# 26_083 DECATHLON CAMPUS - Planning EXE Phase 1 - EIFFAGE + SPRINKLAGE

Schedule from MS Project XML, 2026-11-02 to 2027-02-12, status date 2026-11-02.
Planning détaillé Phase 1 (2026) - Lot EIFFAGE (gros œuvre, VRD, CM, bardage) et Lot Sprinklage
Decathlon Campus - Villeneuve d'Ascq

## Calendars

- Standard (lun-ven, jours fériés FR): Mon-Fri 08:00-12:00, 13:00-17:00; Sat-Sun off. Exceptions (off unless hours are given): 2026-11-11 (Armistice 1918), 2026-12-25 (Noël), 2027-01-01 (Jour de l'an).

## Schedule

| ID | WBS | Task | Type | Duration | Start | Finish | Predecessors | Lot |
| --- | --- | --- | --- | --- | --- | --- | --- | --- |
| 1 | 1 | **1. DÉMARRAGE** |  | 1d | 2026-11-02 | 2026-11-02 |  |  |
| 2 | 1.1 | DÉMARRAGE DES TRAVAUX EIFFAGE (OS) - date modifiable via Informations sur le projet | milestone | 0d | 2026-11-02 | 2026-11-02 |  | EIFFAGE |
| 3 | 2 | **2. INSTALLATION DE CHANTIER** |  | 5d | 2026-11-02 | 2026-11-06 |  |  |
| 4 | 2.1 | [EIFFAGE] Constat d'huissier avant travaux (site, voiries, végétation) |  | 1d | 2026-11-02 | 2026-11-02 | 2 | EIFFAGE |
| 5 | 2.2 | [SPK] Clôture de chantier + base vie commune + armoire de chantier (SPK) - préalable aux interventions EIFFAGE |  | 2d | 2026-11-02 | 2026-11-03 | 2 | SPK |
| 6 | 2.3 | [EIFFAGE] Pistes d'accès engins + plateforme de circulation sur géotextile classe 5 |  | 3d | 2026-11-04 | 2026-11-06 | 5, 4 | EIFFAGE |
| 7 | 2.4 | [EIFFAGE] Dépose et stockage des bordures béton (réemploi en fin de chantier) |  | 1d | 2026-11-04 | 2026-11-04 | 5 | EIFFAGE |
| 8 | 3 | **3. PHASAGE - DÉVOIEMENTS ET MISE HORS SERVICE SOURCE B2** |  | 7d | 2026-11-04 | 2026-11-13 |  |  |
| 9 | 3.1 | [EIFFAGE] Piquetage/marquage et reconnaissance des réseaux existants dans l'emprise (DN100 AEP, DN150 incendie, EU/EV/EP/électricité/fibre) |  | 1d | 2026-11-04 | 2026-11-04 | 5 | EIFFAGE |
| 10 | 3.2 | [EIFFAGE] Dévoiement réseau incendie DN150 + alimentation AEP/arrosage DN100 hors emprise radier (essais, DOE) |  | 6d | 2026-11-05 | 2026-11-13 | 9 | EIFFAGE |
| 11 | 3.3 | [EIFFAGE] Dévoiement EU / EV / EP / électricité / fibre / arrosage si nécessaire (relevé NCA) |  | 2d | 2026-11-05 | 2026-11-06 | 9 | EIFFAGE |
| 12 | 3.4 | [SPK] Raccordements provisoires + mesures compensatoires avant coupure de la B2 (gardiennage MOA : préavis 5 semaines) |  | 3d | 2026-11-04 | 2026-11-06 | 5 | SPK |
| 13 | 3.5 | [SPK] Consignation + VIDANGE cuve source B2 (début de l'indisponibilité de la B2) |  | 2d | 2026-11-09 | 2026-11-10 | 12 | SPK |
| 14 | 4 | **4. DÉPOSES ET DÉMOLITIONS - SOURCE B2** |  | 13d | 2026-11-09 | 2026-11-26 |  |  |
| 15 | 4.1 | [EIFFAGE] Dépose brise-vue bois + charpente métallique support + grille d'accès/porte grillagée (évacuation) |  | 3d | 2026-11-09 | 2026-11-12 | 5, 6, 4 | EIFFAGE |
| 16 | 4.2 | [SPK] Dépose et évacuation de la cuve B2 existante (SPK) - EIFFAGE démolit le radier ensuite |  | 4d | 2026-11-13 | 2026-11-18 | 13, 15 | SPK |
| 17 | 4.3 | [SPK] Dépose du GMPD B2 + tuyauteries (SPK) - avant dépose des pièces de scellement EIFFAGE |  | 2d | 2026-11-12 | 2026-11-13 | 13 | SPK |
| 18 | 4.4 | [SPK] Dépose des réseaux existants local GE (SPK) - avant démolition dalle EIFFAGE |  | 1d | 2026-11-12 | 2026-11-12 | 13 | SPK |
| 19 | 4.5 | [EIFFAGE] Dépose des réseaux existants cuve B2 → local B2 → local A/GE (terrassement, évacuation, remblaiement) |  | 3d | 2026-11-19 | 2026-11-23 | 16, 13 | EIFFAGE |
| 20 | 4.6 | [EIFFAGE] Démolition du radier existant + évacuation des gravats (maîtrise poussières) |  | 4d | 2026-11-19 | 2026-11-24 | 16, 10 | EIFFAGE |
| 21 | 4.7 | [EIFFAGE] Étêtage des fondations existantes à -1,00 m du niveau plateforme + évacuation |  | 2d | 2026-11-20 | 2026-11-23 | 20SS+1d | EIFFAGE |
| 22 | 4.8 | [EIFFAGE] Relevé géomètre + plan de récolement des ouvrages enterrés, adaptation des fondations |  | 1d | 2026-11-24 | 2026-11-24 | 21 | EIFFAGE |
| 23 | 4.9 | [EIFFAGE] (OPTION 5.4.4) Purge des fondations profondes existantes (-80 cm sous niveau final) + remblai sablo-graveleux |  | 2d | 2026-11-25 | 2026-11-26 | 22 | EIFFAGE |
| 24 | 4.10 | [EIFFAGE] Dépose des pièces de scellement existantes local B2 + reprise des percements (DN300, DN200, DN150, échappement) |  | 2d | 2026-11-16 | 2026-11-17 | 17 | EIFFAGE |
| 25 | 4.11 | [EIFFAGE] Démolition contrôlée réservation dalle basse et soubassement local GE (sciage, mise à nu des armatures) |  | 2d | 2026-11-13 | 2026-11-16 | 18 | EIFFAGE |
| 26 | 4.12 | [EIFFAGE] Dépose pièce de scellement existante local GE + création du percement DN200 |  | 1d | 2026-11-17 | 2026-11-17 | 25 | EIFFAGE |

Notes:
- 2: Source / hypothèse : Modifier la date de début du projet : tout le planning se décale.
- 4: Source / hypothèse : DPGF EIFFAGE 5.1.1 ; CCTP EIFFAGE 5.1.1 / 3.5.
- 5: Source / hypothèse : Limites de prestations 1 : clôture, base vie, armoire = SPK. CCTP EIFFAGE 5.1.3, 5.1.9.
- 6: Source / hypothèse : DPGF EIFFAGE 5.3.3 ; Limites de prestations 1 (si nécessaire).
- 7: Source / hypothèse : DPGF EIFFAGE 5.3.4.
- 9: Source / hypothèse : CCTP EIFFAGE 5.6.2 ; Limites de prestations 1.
- 10: Source / hypothèse : DPGF EIFFAGE 5.6.2 ; Limites de prestations 1. Continuité du réseau incendie à maintenir (coupure ponctuelle validée MOA).
- 11: Source / hypothèse : Limites de prestations 1 (si nécessaire).
- 12: Source / hypothèse : Limites de prestations 2 ; DPGF SPK 3.1.4 ; CCTP SPK 3.1.4. Durée estimée.
- 13: Source / hypothèse : Limites de prestations 1/2. Décalage 25 jours ouvrés = 5 semaines de préavis gardiennage.
- 15: Source / hypothèse : DPGF EIFFAGE 5.4.1 ; Limites de prestations 4 / Travaux réserves d'eau B2. Fait avant la vidange pour réduire l'indisponibilité.
- 16: Source / hypothèse : DPGF SPK 3.5 ; CCTP EIFFAGE 5.4.2 (par lot SPK). Durée estimée (cuve acier 405 m³).
- 17: Source / hypothèse : DPGF SPK 3.5 (Source B2 - GMPD).
- 18: Source / hypothèse : Limites de prestations Travaux local GE.
- 19: Source / hypothèse : DPGF EIFFAGE 5.6.3 ; Limites de prestations 1 (dépose réseaux depuis cuve B2 jusqu'au local source A et B2 = EIFFAGE).
- 20: Source / hypothèse : DPGF EIFFAGE 5.4.3 (ens.). Durée estimée.
- 21: Source / hypothèse : Limites de prestations 4.
- 22: Source / hypothèse : Limites de prestations 4 ; CCTP EIFFAGE 5.4.4.
- 23: Source / hypothèse : DPGF EIFFAGE 5.4.4 OPTIONNEL : mode de fondation existant inconnu. Mettre la durée à 0 si l'option n'est pas retenue.
- 24: Source / hypothèse : DPGF EIFFAGE 5.8.2 ; Limites de prestations Travaux source B2.
- 25: Source / hypothèse : DPGF EIFFAGE 5.8.5 ; Limites de prestations Travaux local GE.
- 26: Source / hypothèse : Limites de prestations Travaux local GE.

| ID | WBS | Task | Duration | Start | Finish | Predecessors | Lot |
| --- | --- | --- | --- | --- | --- | --- | --- |
| 27 | 5 | **5. FONDATIONS ET RADIER - CUVE B2** | 36d | 2026-11-16 | 2027-01-06 |  |  |
| 28 | 5.1 | [EIFFAGE] Plateforme de travail pour pieux (portance EV2 > 50 MPa, géotextile) | 2d | 2026-11-27 | 2026-11-30 | 22, 23 | EIFFAGE |
| 29 | 5.2 | [EIFFAGE] Épuisement des eaux / rabattement de nappe (nappe ~ 27,4 NGF) pendant les fondations | 18d | 2026-11-27 | 2026-12-22 | 28SS, 44FF | EIFFAGE |
| 30 | 5.3 | [EIFFAGE] Pieux à tarière creuse (amenée/repli du matériel, forage, armatures, béton) - ~20 à 25 u. à confirmer PEO | 5d | 2026-12-01 | 2026-12-07 | 28 | EIFFAGE |
| 31 | 5.4 | [EIFFAGE] Stockage sur polyane et évacuation des terres et boues de forage + nettoyage voies | 3d | 2026-12-02 | 2026-12-04 | 30SS+1d | EIFFAGE |
| 32 | 5.5 | [EIFFAGE] Essais et contrôle des pieux (DTU 13.2 / NF P94-262) | 2d | 2026-12-08 | 2026-12-09 | 30 | EIFFAGE |
| 33 | 5.6 | [EIFFAGE] Recépage des pieux | 1d | 2026-12-08 | 2026-12-08 | 30 | EIFFAGE |
| 34 | 5.7 | [EIFFAGE] Terrassement fouille radier + substitution remblais de portance + fond de forme (débord 1 m) | 2d | 2026-12-09 | 2026-12-10 | 33 | EIFFAGE |
| 35 | 5.8 | [EIFFAGE] Puisard de trop-plein de la cuve (terrassement, béton de propreté, grille circulable) | 2d | 2026-12-11 | 2026-12-14 | 34 | EIFFAGE |
| 36 | 5.9 | [EIFFAGE] Béton de propreté (e >= 5 cm) sous radier | 1d | 2026-12-11 | 2026-12-11 | 34 | EIFFAGE |
| 37 | 5.10 | [EIFFAGE] Boucle de terre fond de fouille (câble nu 25 mm2, R <= 3 ohms) + attentes de terre cuve | 1d | 2026-12-14 | 2026-12-14 | 36 | EIFFAGE |
| 38 | 5.11 | [EIFFAGE] Pose massifs, platines et boîtes de réservation de pre-scellement (poteaux brise-vue) | 1d | 2026-12-14 | 2026-12-14 | 36 | EIFFAGE |
| 39 | 5.12 | [EIFFAGE] Couche de forme + sablon d'égalisation + film polyéthylène | 1d | 2026-12-14 | 2026-12-14 | 36 | EIFFAGE |
| 40 | 5.13 | [SPK] Livraison sur site : pièces de scellement + tuyauterie d'aspiration DN300 (fournitures SPK pour EIFFAGE) | 1d | 2026-11-16 | 2026-11-16 | 17 | SPK |
| 41 | 5.14 | [EIFFAGE] Pose et incorporation de la tuyauterie d'aspiration DN300 sous radier (fournie SPK) + validation implantation SPK/EIFFAGE | 1d | 2026-12-15 | 2026-12-15 | 39, 40 | EIFFAGE + SPK |
| 42 | 5.15 | [EIFFAGE] Drain périphérique / gestion des eaux autour du radier (si G2PRO l'impose) | 1d | 2026-12-15 | 2026-12-15 | 39 | EIFFAGE |
| 43 | 5.16 | [EIFFAGE] Ferraillage radier (TS + HA), attentes pieux, réservations, fourreaux, coffrage de rives et bêches périphériques | 4d | 2026-12-16 | 2026-12-21 | 41, 38, 37, 42 | EIFFAGE |
| 44 | 5.17 | [EIFFAGE] Coulage du radier béton C25/30 XC2 XF1 (parement soigné, circulations brossées antidérapantes) | 1d | 2026-12-22 | 2026-12-22 | 43 | EIFFAGE |
| 45 | 5.18 | [EIFFAGE] Durcissement du radier avant chargement de la cuve (délai à valider BET / bureau de contrôle) | 9d | 2026-12-23 | 2027-01-06 | 44 | EIFFAGE |
| 46 | 6 | **6. LOCAL B2, LOCAL GE ET LOCAL SPRINKLEUR - SCELLEMENTS** | 24d | 2026-11-04 | 2026-12-08 |  |  |
| 47 | 6.1 | [EIFFAGE] Pose nouvelles pièces de scellement local B2 (DN300, DN200, DN150, échappement), reprise mortier, étanchéité, calfeutrement | 2d | 2026-11-18 | 2026-11-19 | 24, 40 | EIFFAGE |
| 48 | 6.2 | [EIFFAGE] Pose nouvelle pièce de scellement refoulement DN200 local GE + calfeutrement | 1d | 2026-11-18 | 2026-11-18 | 26, 40 | EIFFAGE |
| 49 | 6.3 | [SPK] Pose du nouveau GMPD + tuyauteries DN300/DN200 dans le local B2 (après scellements EIFFAGE) | 6d | 2026-11-20 | 2026-11-27 | 47, 17 | SPK |
| 50 | 6.4 | [EIFFAGE] Restauration couche de forme, dalle portée, soubassement et cuvelage local GE + durcisseur de dalle | 3d | 2026-12-04 | 2026-12-08 | 48, 60 | EIFFAGE |
| 51 | 6.5 | [EIFFAGE] Percement des voiles béton façade Nord : ventilation haute et basse + redressement des tableaux | 2d | 2026-11-04 | 2026-11-05 | 5 | EIFFAGE |
| 52 | 6.6 | [SPK] Fourniture et pose des grilles de ventilation (après percement EIFFAGE) | 1d | 2026-11-06 | 2026-11-06 | 51 | SPK |

Notes:
- 28: Source / hypothèse : Limites de prestations 4 ; DPGF EIFFAGE 5.3.3.
- 29: Source / hypothèse : DPGF EIFFAGE 5.3.7 ; CCTP EIFFAGE 4.7.2 ; Limites de prestations 3. Hamac plateforme → coulage radier.
- 30: Source / hypothèse : DPGF EIFFAGE 5.5.1 (u) ; CCTP EIFFAGE 5.5.1 ; G2PRO Fondasol. Hypothèse ~5 pieux/jour.
- 31: Source / hypothèse : DPGF EIFFAGE 5.5.2 / 5.3.8.
- 32: Source / hypothèse : CCTP EIFFAGE 5.5.1.
- 33: Source / hypothèse : CCTP EIFFAGE 5.5.1.
- 34: Source / hypothèse : DPGF EIFFAGE 5.3.5 / 5.3.6 (m³).
- 35: Source / hypothèse : DPGF EIFFAGE 5.6.6 ; CCTP EIFFAGE 5.6.6.
- 36: Source / hypothèse : DPGF EIFFAGE 5.5.3.
- 37: Source / hypothèse : DPGF EIFFAGE 5.3.9 ; Limites de prestations 3 (boucle de terre du radier = EIFFAGE).
- 38: Source / hypothèse : DPGF EIFFAGE 5.5.4.
- 39: Source / hypothèse : CCTP EIFFAGE 5.5.5.
- 40: Source / hypothèse : Limites de prestations 4 (source B2, local GE) : fourniture SPK.
- 41: Source / hypothèse : Limites de prestations 4 : EIFFAGE réalise, SPK accompagne (P) et valide l'implantation avant coulée.
- 42: Source / hypothèse : Limites de prestations 4 (conditionnel).
- 43: Source / hypothèse : DPGF EIFFAGE 5.5.5 (m³). Durée estimée (radier ~ Ø 14 m).
- 44: Source / hypothèse : DPGF EIFFAGE 5.5.5 ; CCTP EIFFAGE 4.4.
- 45: Source / hypothèse : Hypothèse 9 jours ouvrés avant chargement de la cuve : à valider BET / bureau de contrôle (28 j si exigé).
- 47: Source / hypothèse : DPGF EIFFAGE 5.8.3 ; Limites de prestations Travaux source B2.
- 48: Source / hypothèse : Limites de prestations Travaux local GE.
- 49: Source / hypothèse : DPGF SPK 3.5 (Source B2). Durée estimée.
- 50: Source / hypothèse : DPGF EIFFAGE 5.8.5 ; Limites de prestations Travaux local GE.
- 51: Source / hypothèse : DPGF EIFFAGE 5.8.4 (m²) ; Limites de prestations Travaux local sprinkleur source A.
- 52: Source / hypothèse : Limites de prestations 4.

| ID | WBS | Task | Duration | Start | Finish | Predecessors | Lot |
| --- | --- | --- | --- | --- | --- | --- | --- |
| 53 | 7 | **7. TRANCHÉES COMMUNES ET RÉSEAUX ENTERRÉS** | 42d | 2026-11-24 | 2027-01-22 |  |  |
| 54 | 7.1 | [EIFFAGE] Ouverture tranchée commune (~ 25 ml estimés) | 2d | 2026-12-23 | 2026-12-24 | 44, 19, 10 | EIFFAGE |
| 55 | 7.2 | [EIFFAGE] Fourreaux électriques 2 x Ø90 (local B2 / réserve d'eau) + chambre de tirage | 1d | 2026-12-28 | 2026-12-28 | 54 | EIFFAGE |
| 56 | 7.3 | [SPK] Pose aspiration DN300 + remplissage/retour essai DN150 + épreuves (tranchée 1) - avant remblaiement EIFFAGE | 4d | 2026-12-28 | 2026-12-31 | 54, 41, 47 | SPK |
| 57 | 7.4 | [EIFFAGE] Grillage avertisseur + remblaiement et compactage tranchée 1 (95 % OPM) | 2d | 2027-01-04 | 2027-01-05 | 56, 55 | EIFFAGE |
| 58 | 7.5 | [EIFFAGE] Ouverture tranchée commune (~ 60 ml estimés, sciage voirie lourde + espace vert) | 3d | 2026-11-24 | 2026-11-26 | 19, 10 | EIFFAGE |
| 59 | 7.6 | [EIFFAGE] Fourreaux électriques 2 x Ø90 (local GE / local B2) + chambre de tirage | 1d | 2026-11-27 | 2026-11-27 | 58 | EIFFAGE |
| 60 | 7.7 | [SPK] Pose refoulement DN200 jusqu'au local GE + épreuves (tranchée 2) - avant remblaiement EIFFAGE | 5d | 2026-11-27 | 2026-12-03 | 58, 47, 48 | SPK |
| 61 | 7.8 | [EIFFAGE] Grillage avertisseur + remblaiement et compactage tranchée 2 | 2d | 2026-12-04 | 2026-12-07 | 60, 59 | EIFFAGE |
| 62 | 7.9 | [EIFFAGE] Tranchée + réseau de collecte extérieur EU PVC DN200 (puisard/vidange → regard existant), regard 500x500 | 3d | 2026-12-15 | 2026-12-17 | 35 | EIFFAGE |
| 63 | 7.10 | [SPK] Réseau EU àérien trop-plein/vidange, sortie à 1,00 m du nu cuve (SPK) - raccordé ensuite par EIFFAGE | 2d | 2027-01-19 | 2027-01-20 | 69 | SPK |
| 64 | 7.11 | [EIFFAGE] Raccordement sur réseau EU existant (branchement), boîte de branchement, reprise des sorties EU à 1,00 m | 1d | 2027-01-21 | 2027-01-21 | 62, 63 | EIFFAGE |
| 65 | 7.12 | [EIFFAGE] Remblaiement et compactage tranchée EU | 1d | 2027-01-22 | 2027-01-22 | 64 | EIFFAGE |
| 66 | 7.13 | [SPK] Tirage des câbles TGBT / reports d'alarme dans les fourreaux EIFFAGE | 3d | 2026-12-29 | 2026-12-31 | 55, 59 | SPK |
| 67 | 8 | **8. CUVE B2 620 m³ (SPK) - INTERFACES** | 59d | 2026-11-09 | 2027-02-02 |  |  |
| 68 | 8.1 | [SPK] Livraison de la cuve sur site | 2d | 2026-12-23 | 2026-12-24 | 44 | SPK |
| 69 | 8.2 | [SPK] Implantation et montage de la cuve boulonnée Ø 12,48 m x H 5,74 m sur le radier EIFFAGE | 8d | 2027-01-07 | 2027-01-18 | 45, 68 | SPK |
| 70 | 8.3 | [SPK] Poche PVC, toit autoportant, échelle, équipements de la cuve | 5d | 2027-01-19 | 2027-01-25 | 69 | SPK |
| 71 | 8.4 | [EIFFAGE] Joint ciment périphérique autour de la cornière de fixation de la cuve | 1d | 2027-01-19 | 2027-01-19 | 69 | EIFFAGE |
| 72 | 8.5 | [SPK] Remplissage de la cuve (<= 36 h) + test d'étanchéité | 3d | 2027-01-26 | 2027-01-28 | 70, 71, 64 | SPK |
| 73 | 8.6 | [SPK] Essais + REMISE EN SERVICE de la source B2 (fin de l'indisponibilité de la B2) | 3d | 2027-01-29 | 2027-02-02 | 72, 49, 56, 60 | SPK |
| 74 | 8.7 | [SPK/MOA] Mesures compensatoires + gardiennage pendant l'indisponibilité de la source B2 | 59d | 2026-11-09 | 2027-02-02 | 13SS, 73FF | SPK |
| 75 | 9 | **9. BRISE-VUE : CHARPENTE, BARDAGE BOIS, PORTE** | 10d | 2027-01-26 | 2027-02-08 |  |  |
| 76 | 9.1 | [EIFFAGE] Montage charpente métallique brise-vue (poteaux, pannes, contreventement) + scellement définitif des ancrages | 4d | 2027-01-26 | 2027-01-29 | 70, 57 | EIFFAGE |
| 77 | 9.2 | [EIFFAGE] Sous-construction du bardage (profils oméga acier galvanisé sur poteaux) | 3d | 2027-01-28 | 2027-02-01 | 76SS+2d | EIFFAGE |
| 78 | 9.3 | [EIFFAGE] Lames de bardage bois douglas à claire-voie (espacement 20 mm), coupes à 45°, saturateur | 6d | 2027-02-01 | 2027-02-08 | 77SS+2d | EIFFAGE |
| 79 | 9.4 | [EIFFAGE] Pose porte d'accès cuve B2 (ferme-porte, barre anti-panique, serrure compatible site) | 1d | 2027-02-02 | 2027-02-02 | 77 | EIFFAGE |

Notes:
- 54: Source / hypothèse : DPGF EIFFAGE 5.6.1 (ml) ; Limites de prestations 5. Longueur estimée : à relever sur plan.
- 55: Source / hypothèse : DPGF EIFFAGE 5.6.4 / 5.6.5 ; Limites de prestations 5 (Électricité).
- 56: Source / hypothèse : Limites de prestations 5 : tableau mentionne remplissage DN200 / retour essai DN150 (CCTP : DN150).
- 57: Source / hypothèse : Limites de prestations 5 : remblaiement EIFFAGE après pose SPK.
- 58: Source / hypothèse : DPGF EIFFAGE 5.6.1 / 5.3.2 ; Limites de prestations 5. Longueur estimée.
- 59: Source / hypothèse : DPGF EIFFAGE 5.6.4 / 5.6.5.
- 60: Source / hypothèse : Limites de prestations 5 (Liaison local B2 ↔ local GE).
- 61: Source / hypothèse : Limites de prestations 5.
- 62: Source / hypothèse : DPGF EIFFAGE 5.6.7 (ml) ; Limites de prestations 5.
- 63: Source / hypothèse : Limites de prestations 5 (Vidange - Eaux usées).
- 64: Source / hypothèse : Limites de prestations 5.
- 65: Source / hypothèse : Limites de prestations 5.
- 66: Source / hypothèse : Limites de prestations 5 (Électricité).
- 68: Source / hypothèse : CCTP SPK 3.5.4 b.
- 69: Source / hypothèse : DPGF SPK 3.5 (Réserve d'eau). Durée estimée.
- 71: Source / hypothèse : DPGF EIFFAGE 5.8.1 (ml) ; Limites de prestations 4.
- 72: Source / hypothèse : CCTP SPK 3.5.4 b. (remplissage en 36 h maximum). Évacuation EU du trop-plein nécessaire.
- 73: Source / hypothèse : Jalon de fin d'indisponibilité de la source B2.
- 74: Source / hypothèse : Limites de prestations 2 ; DPGF SPK 3.1.4 / 3.1.5. Hamac : durée = vidange → remise en service B2.
- 76: Source / hypothèse : DPGF EIFFAGE 5.7.1 ; Limites de prestations 4. CCTP EIFFAGE 1 : cuve et réseaux avant brise-vue.
- 77: Source / hypothèse : DPGF EIFFAGE 5.9.1 (m²). Durée estimée.
- 78: Source / hypothèse : DPGF EIFFAGE 5.9.2 (m²). Hypothèse ~40 m²/jour.
- 79: Source / hypothèse : DPGF EIFFAGE 5.9.3.

| ID | WBS | Task | Type | Duration | Start | Finish | Predecessors | Lot |
| --- | --- | --- | --- | --- | --- | --- | --- | --- |
| 80 | 10 | **10. VOIRIES ET ESPACES VERTS - REMISE EN ÉTAT** |  | 42d | 2026-12-08 | 2027-02-05 |  |  |
| 81 | 10.1 | [EIFFAGE] Remise en place des bordures béton (joints résistants UV et hydrocarbures) |  | 1d | 2026-12-08 | 2026-12-08 | 61, 7 | EIFFAGE |
| 82 | 10.2 | [EIFFAGE] Réfection voie technique : reprofilage GNT 30 cm, géotextile cl.4, enrobé noir 5 cm au droit des réseaux |  | 3d | 2027-01-06 | 2027-01-08 | 81, 57 | EIFFAGE |
| 83 | 10.3 | [EIFFAGE] Dépose des pistes d'accès chantier + évacuation + reprofilage |  | 1d | 2027-02-01 | 2027-02-01 | 76, 65, 50, 57 | EIFFAGE |
| 84 | 10.4 | [EIFFAGE] Mouvements de terres, nivellement espaces verts + apport terre végétale 0,30 m mini |  | 2d | 2027-02-02 | 2027-02-03 | 83 | EIFFAGE |
| 85 | 10.5 | [EIFFAGE] Préparation avant engazonnement (nettoyage, rotavator 0,20 m, amendements, réglage) |  | 1d | 2027-02-04 | 2027-02-04 | 84 | EIFFAGE |
| 86 | 10.6 | [EIFFAGE] Engazonnement (semis 3 kg/are, roulage, ratissage) - plantations gazon |  | 1d | 2027-02-05 | 2027-02-05 | 85 | EIFFAGE |
| 87 | 10.7 | [EIFFAGE] Réfection des cheminements de chantier |  | 1d | 2027-02-02 | 2027-02-02 | 83 | EIFFAGE |
| 88 | 10.8 | [EIFFAGE] Curage + contrôle caméra des réseaux EU en fin de travaux |  | 1d | 2027-02-02 | 2027-02-02 | 65, 83 | EIFFAGE |
| 89 | 11 | **11. FIN DE CHANTIER EIFFAGE** |  | 4d | 2027-02-09 | 2027-02-12 |  |  |
| 90 | 11.1 | [EIFFAGE] Constat d'huissier contradictoire de fin de travaux |  | 1d | 2027-02-09 | 2027-02-09 | 86, 87, 82, 88, 78, 79 | EIFFAGE |
| 91 | 11.2 | [EIFFAGE] DOE lot EIFFAGE : récolement ouvrages enterrés, PV essais béton/pieux, fiches techniques |  | 3d | 2027-02-10 | 2027-02-12 | 90, 32 | EIFFAGE |
| 92 | 11.3 | FIN DES TRAVAUX EIFFAGE | milestone | 0d | 2027-02-12 | 2027-02-12 | 91 | EIFFAGE |
| 93 | 12 | **12. PRESTATIONS TRANSVERSES EIFFAGE (hamacs)** |  | 69d | 2026-11-02 | 2027-02-09 |  |  |
| 94 | 12.1 | [EIFFAGE] Gestion des portails / accès de chantier (ouverture, fermeture, surveillance) |  | 69d | 2026-11-02 | 2027-02-09 | 5SS, 90FF | EIFFAGE |
| 95 | 12.2 | [EIFFAGE] Entretien et nettoyage des abords, accès et voies (permanent) |  | 69d | 2026-11-02 | 2027-02-09 | 5SS, 90FF | EIFFAGE |
| 96 | 12.3 | [EIFFAGE] Homme trafic (voie pompier, arrivées/départs camions) - phases démolition à remise en état |  | 58d | 2026-11-09 | 2027-02-01 | 15SS, 83FF | EIFFAGE |
| 97 | 12.4 | [EIFFAGE] Bennes de chantier + évacuation gravats (part du lot) |  | 58d | 2026-11-09 | 2027-02-01 | 15SS, 83FF | EIFFAGE |

Notes:
- 81: Source / hypothèse : DPGF EIFFAGE 5.10.3 (ml).
- 82: Source / hypothèse : DPGF EIFFAGE 5.10.4 (m²) ; Limites de prestations 6.
- 83: Source / hypothèse : CCTP EIFFAGE 5.3.3.
- 84: Source / hypothèse : Limites de prestations 6.
- 85: Source / hypothèse : DPGF EIFFAGE 5.10.1.
- 86: Source / hypothèse : DPGF EIFFAGE 5.10.2 (m²). Contrôle à 1 mois / tonte à 15 j hors planning.
- 87: Source / hypothèse : Limites de prestations 6.
- 88: Source / hypothèse : Limites de prestations 5.
- 90: Source / hypothèse : DPGF EIFFAGE 5.1.1 ; CCTP EIFFAGE 5.1.1.
- 91: Source / hypothèse : Limites : DOE chacun pour son lot ; CCTP EIFFAGE 2.3.7.
- 94: Source / hypothèse : Limites de prestations 1 : EIFFAGE phase 1 ; CCTP EIFFAGE 5.1.3.
- 95: Source / hypothèse : DPGF EIFFAGE 5.1.11 ; CCTP EIFFAGE 5.1.11.
- 96: Source / hypothèse : DPGF EIFFAGE 5.1.12 ; Limites de prestations 2 (chacun pour son lot).
- 97: Source / hypothèse : DPGF EIFFAGE 5.1.10.
