# 26_083 DECATHLON CAMPUS - Planning EXE Phase 1 - EIFFAGE + SPRINKLAGE

Schedule from MS Project XML, 2026-10-26 to 2027-06-17, status date 2026-11-02.
Planning détaillé Phase 1 (2026) - Lot EIFFAGE (gros œuvre, VRD, CM, bardage) et Lot Sprinklage
Decathlon Campus - Villeneuve d'Ascq

## Calendars

- Standard (lun-ven, jours fériés FR): Mon-Fri 08:00-12:00, 13:00-17:00; Sat-Sun off. Exceptions (off unless hours are given): 2026-11-11 (Armistice 1918), 2026-12-25 (Noël), 2027-01-01 (Jour de l'an), 2027-01-03 09:00-12:00, 14:00-18:00, 2027-03-29 (Lundi de Pâques), 2027-05-06 (Ascension), 2027-05-17 (Lundi de Pentecôte).

## Schedule

| ID | WBS | Task | Duration | Start | Finish | Predecessors | Total slack | Free slack | Constraint | Lot |
| --- | --- | --- | --- | --- | --- | --- | --- | --- | --- | --- |
| 1 | 1 | **0. ATSI - PRISE EN CHARGE, ÉTUDES ET ACHATS (avant démarrage du chantier)** | 39d | 2026-10-26 | 2026-12-18 |  |  |  |  |  |
| 2 | 1.1 | [ATSI] Prise en charge : vérification concordance pièce marché / pièce A.O | 5d | 2026-10-26 | 2026-10-30 |  |  |  | start no earlier than 2026-10-26 | SPK |
| 3 | 1.2 | [ATSI] Prise en charge : déclaration de l'affaire au service sécurité | 5d | 2026-11-02 | 2026-11-06 |  |  |  | start no earlier than 2026-11-02 | SPK |
| 4 | 1.3 | [ATSI] Prise en charge : vérification des données sur site | 4d | 2026-11-09 | 2026-11-13 |  |  |  | start no earlier than 2026-11-09 | SPK |
| 5 | 1.4 | [ATSI] Prise en charge : calculs de détermination des pompes / réserves | 4d | 2026-11-09 | 2026-11-13 |  |  |  | start no earlier than 2026-11-09 | SPK |
| 6 | 1.5 | [ATSI] Études : plan de risques / plan de zones | 5d | 2026-11-16 | 2026-11-20 |  |  |  | start no earlier than 2026-11-16 | SPK |
| 7 | 1.6 | [ATSI] Études : schémas de principe | 5d | 2026-11-16 | 2026-11-20 |  |  |  | start no earlier than 2026-11-16 | SPK |
| 8 | 1.7 | [ATSI] Études : élaboration PPSPS / PDP | 5d | 2026-11-16 | 2026-11-20 |  |  |  | start no earlier than 2026-11-16 | SPK |
| 9 | 1.8 | [ATSI] Études : visite d'inspection Commune (ATSI / sous-traitant) | 9d | 2026-11-09 | 2026-11-20 |  |  |  | start no earlier than 2026-11-09 | SPK |
| 10 | 1.9 | [ATSI] Études : relevé sur site | 19d | 2026-11-09 | 2026-12-04 |  |  |  | start no earlier than 2026-11-09 | SPK |
| 11 | 1.10 | [ATSI] Études : plans de protection | 10d | 2026-11-23 | 2026-12-04 |  |  |  | start no earlier than 2026-11-23 | SPK |
| 12 | 1.11 | [ATSI] Études : plans d'ensemble | 10d | 2026-11-23 | 2026-12-04 |  |  |  | start no earlier than 2026-11-23 | SPK |
| 13 | 1.12 | [ATSI] Études : validation de l'étude / assureur | 5d | 2026-12-07 | 2026-12-11 |  |  |  | start no earlier than 2026-12-07 | SPK |
| 14 | 1.13 | [ATSI] Études : fiches techniques | 5d | 2026-12-07 | 2026-12-11 |  |  |  | start no earlier than 2026-12-07 | SPK |
| 15 | 1.14 | [ATSI] Études : isos / nomenclatures | 5d | 2026-12-07 | 2026-12-11 |  |  |  | start no earlier than 2026-12-07 | SPK |
| 16 | 1.15 | [ATSI] Études : notes de calcul de vérification | 5d | 2026-12-07 | 2026-12-11 |  |  |  | start no earlier than 2026-12-07 | SPK |
| 17 | 1.16 | [ATSI] Achats (consultation / ordre / livraison) : sources d'eau | 5d | 2026-12-14 | 2026-12-18 |  |  |  | start no earlier than 2026-12-14 | SPK |
| 18 | 1.17 | [ATSI] Achats (consultation / ordre / livraison) : tubes / supportage | 5d | 2026-12-14 | 2026-12-18 |  |  |  | start no earlier than 2026-12-14 | SPK |
| 19 | 1.18 | [ATSI] Achats (consultation / ordre / livraison) : accessoires de montage | 5d | 2026-12-14 | 2026-12-18 |  |  |  | start no earlier than 2026-12-14 | SPK |
| 20 | 2 | **1. INSTALLATION DE CHANTIER** | 5d | 2026-11-02 | 2026-11-06 |  |  |  |  |  |
| 21 | 2.1 | [EIFFAGE] Constat d'huissier avant travaux (site, voiries, végétation) | 1d | 2026-11-02 | 2026-11-02 |  |  |  | start no earlier than 2026-11-02 | EIFFAGE |
| 22 | 2.1 | [EIFFAGE] Armoire élec + alimentation eau chantier (pour les travaux d'EIFFAGE) | 1d | 2026-11-03 | 2026-11-03 |  | 67.88d |  | start no earlier than 2026-11-03 | EIFFAGE |
| 23 | 2.3 | [EIFFAGE] Pistes d'accès engins / plateforme de circulation | 3d | 2026-11-04 | 2026-11-06 | 21, 22 | 67.88d |  |  | EIFFAGE |
| 24 | 2.4 | [EIFFAGE] Dépose et stockage des bordures béton (réemploi en fin de chantier) | 1d | 2026-11-03 | 2026-11-03 | 21 | 65.88d | 30d |  | EIFFAGE |

Notes:
- 1: Lignes du planning ATSI du 15/06/2026 (ind. A) : semaines respectées. La ligne « récolement et DOE (vérification TQC) » n'a pas de barre dans le planning ATSI : non reprise.
- 2: Source / hypothèse : Planning ATSI (ind. A, reçu le 20/10/2026), semaine S44 (26/10/2026 au 30/10/2026), 5 jours ouvrés. Début au plus tôt = semaine d'ATSI ; décalé si une liaison l'impose.
- 3: Source / hypothèse : Planning ATSI (ind. A, reçu le 20/10/2026), semaine S45 (02/11/2026 au 06/11/2026), 5 jours ouvrés. Début au plus tôt = semaine d'ATSI ; décalé si une liaison l'impose.
- 4: Source / hypothèse : Planning ATSI (ind. A, reçu le 20/10/2026), semaine S46 (09/11/2026 au 13/11/2026), 4 jours ouvrés. Début au plus tôt = semaine d'ATSI ; décalé si une liaison l'impose.
- 5: Source / hypothèse : Planning ATSI (ind. A, reçu le 20/10/2026), semaine S46 (09/11/2026 au 13/11/2026), 4 jours ouvrés. Début au plus tôt = semaine d'ATSI ; décalé si une liaison l'impose.
- 6: Source / hypothèse : Planning ATSI (ind. A, reçu le 20/10/2026), semaine S47 (16/11/2026 au 20/11/2026), 5 jours ouvrés. Début au plus tôt = semaine d'ATSI ; décalé si une liaison l'impose.
- 7: Source / hypothèse : Planning ATSI (ind. A, reçu le 20/10/2026), semaine S47 (16/11/2026 au 20/11/2026), 5 jours ouvrés. Début au plus tôt = semaine d'ATSI ; décalé si une liaison l'impose.
- 8: Source / hypothèse : Planning ATSI (ind. A, reçu le 20/10/2026), semaine S47 (16/11/2026 au 20/11/2026), 5 jours ouvrés. Début au plus tôt = semaine d'ATSI ; décalé si une liaison l'impose.
- 9: Source / hypothèse : Planning ATSI (ind. A, reçu le 20/10/2026), semaines S46 à S47 (09/11/2026 au 20/11/2026), 9 jours ouvrés. Début au plus tôt = semaine d'ATSI ; décalé si une liaison l'impose.
- 10: Source / hypothèse : Planning ATSI (ind. A, reçu le 20/10/2026), semaines S46 à S49 (09/11/2026 au 04/12/2026), 19 jours ouvrés. Début au plus tôt = semaine d'ATSI ; décalé si une liaison l'impose.
- 11: Source / hypothèse : Planning ATSI (ind. A, reçu le 20/10/2026), semaines S48 à S49 (23/11/2026 au 04/12/2026), 10 jours ouvrés. Début au plus tôt = semaine d'ATSI ; décalé si une liaison l'impose.
- 12: Source / hypothèse : Planning ATSI (ind. A, reçu le 20/10/2026), semaines S48 à S49 (23/11/2026 au 04/12/2026), 10 jours ouvrés. Début au plus tôt = semaine d'ATSI ; décalé si une liaison l'impose.
- 13: Source / hypothèse : Planning ATSI (ind. A, reçu le 20/10/2026), semaine S50 (07/12/2026 au 11/12/2026), 5 jours ouvrés. Début au plus tôt = semaine d'ATSI ; décalé si une liaison l'impose.
- 14: Source / hypothèse : Planning ATSI (ind. A, reçu le 20/10/2026), semaine S50 (07/12/2026 au 11/12/2026), 5 jours ouvrés. Début au plus tôt = semaine d'ATSI ; décalé si une liaison l'impose.
- 15: Source / hypothèse : Planning ATSI (ind. A, reçu le 20/10/2026), semaine S50 (07/12/2026 au 11/12/2026), 5 jours ouvrés. Début au plus tôt = semaine d'ATSI ; décalé si une liaison l'impose.
- 16: Source / hypothèse : Planning ATSI (ind. A, reçu le 20/10/2026), semaine S50 (07/12/2026 au 11/12/2026), 5 jours ouvrés. Début au plus tôt = semaine d'ATSI ; décalé si une liaison l'impose.
- 17: Source / hypothèse : Planning ATSI (ind. A, reçu le 20/10/2026), semaine S51 (14/12/2026 au 18/12/2026), 5 jours ouvrés. Début au plus tôt = semaine d'ATSI ; décalé si une liaison l'impose.
- 18: Source / hypothèse : Planning ATSI (ind. A, reçu le 20/10/2026), semaine S51 (14/12/2026 au 18/12/2026), 5 jours ouvrés. Début au plus tôt = semaine d'ATSI ; décalé si une liaison l'impose.
- 19: Source / hypothèse : Planning ATSI (ind. A, reçu le 20/10/2026), semaine S51 (14/12/2026 au 18/12/2026), 5 jours ouvrés. Début au plus tôt = semaine d'ATSI ; décalé si une liaison l'impose.
- 21: Source / hypothèse : DPGF EIFFAGE 5.1.1 ; CCTP EIFFAGE 5.1.1 / 3.5.
- 22: Source / hypothèse : DPGF EIFFAGE 5.1.1 ; CCTP EIFFAGE 5.1.1 / 3.5.
- 23: Source / hypothèse : DPGF EIFFAGE 5.3.3 ; Limites de prestations 1 (si nécessaire).
- 24: Source / hypothèse : DPGF EIFFAGE 5.3.4.

| ID | WBS | Task | Duration | Start | Finish | Predecessors | Total slack | Constraint | Lot |
| --- | --- | --- | --- | --- | --- | --- | --- | --- | --- |
| 25 | 2 | **2. ATSI - MONTAGE (planning ATSI : semaines respectées, début au plus tôt)** | 148d | 2026-11-03 | 2027-06-04 |  |  |  |  |
| 26 | 6.5 | [EIFFAGE] Percement des voiles béton façade Nord : ventilation haute et basse + redressement des tableaux | 2d | 2026-11-03 | 2026-11-04 | 21 |  |  | EIFFAGE |
| 27 | 2.2 | [ATSI] Électricité et alarmes (phase 1) | 5d | 2027-01-18 | 2027-01-22 |  |  | start no earlier than 2027-01-18 | SPK |
| 28 | 2.3 | [ATSI] Local sprinkler source A et postes | 15d | 2027-01-25 | 2027-02-12 | 26 |  | start no earlier than 2027-01-25 | SPK |
| 29 | 2.4 | [ATSI] Local sprinkler source B2 | 5d | 2027-01-25 | 2027-01-29 |  |  | start no earlier than 2027-01-25 | SPK |
| 30 | 2.5 | [ATSI] Source A et pompe jockey | 10d | 2027-02-01 | 2027-02-12 |  |  | start no earlier than 2027-02-01 | SPK |
| 31 | 2.6 | [ATSI] Source B1 | 15d | 2027-02-15 | 2027-03-05 | 30 |  | start no earlier than 2027-02-15 | SPK |
| 32 | 2.7 | [ATSI] Source B2 (consignation, vidange, déposes cuve et GMPD) | 10d | 2027-03-08 | 2027-03-19 | 30, 39 |  | start no earlier than 2027-03-08 | SPK |
| 33 | 2.8 | [ATSI] Réseau enterré (réseaux des tranchées, cuve sur le radier EIFFAGE) | 19d | 2027-04-30 | 2027-05-28 | 65, 73, 79, 74 |  | start no earlier than 2027-03-22 | SPK |
| 34 | 2.9 | [ATSI] Divers travaux système d'essai, nourrice pressostatique | 5d | 2027-04-12 | 2027-04-16 | 32 |  | start no earlier than 2027-04-12 | SPK |
| 35 | 2.10 | [ATSI] Postes de contrôle existants et by-pass | 5d | 2027-04-19 | 2027-04-23 | 32 |  | start no earlier than 2027-04-19 | SPK |
| 36 | 2.11 | [ATSI] Électricité et alarmes (phase 2) | 5d | 2027-05-31 | 2027-06-04 | 33 |  | start no earlier than 2027-04-19 | SPK |
| 37 | 3 | **3. PHASAGE - DÉVOIEMENTS ET MISE HORS SERVICE SOURCE B2** | 8d | 2026-11-05 | 2026-11-17 |  |  |  |  |
| 38 | 3.1 | [EIFFAGE] Piquetage/marquage et reconnaissance des réseaux existants dans l'emprise | 1d | 2026-11-05 | 2026-11-05 | 26 |  |  | EIFFAGE |
| 39 | 3.2 | [EIFFAGE] Tranchée commune / Dévoiement réseau incendie DN150 + alimentation AEP/arrosage DN100 + Dévoiement EU / EV / EP / électricité / fibre / arrosage si nécessaire (relevé NCA) | 7d | 2026-11-06 | 2026-11-17 | 38 |  |  | EIFFAGE |
| 40 | 4 | **4. DÉPOSES ET DÉMOLITIONS - SOURCE B2** | 11d | 2027-03-10 | 2027-03-24 |  |  |  |  |
| 41 | 4.5 | [EIFFAGE] Dépose des réseaux existants cuve B2 → local B2 → local A/GE (terrassement, évacuation, remblaiement) | 3d | 2027-03-10 | 2027-03-12 | 39, 32SS+2d |  |  | EIFFAGE |
| 42 | 4.1 | [EIFFAGE] Fermeture provisoire tranchée | 1d | 2027-03-15 | 2027-03-15 | 41 |  |  | EIFFAGE |
| 43 | 4.1 | [EIFFAGE] Dépose brise-vue bois + charpente métallique support + grille d'accès/porte grillagée (évacuation) | 3d | 2027-03-16 | 2027-03-18 | 42 |  |  | EIFFAGE |
| 44 | 4.6 | [EIFFAGE] Démolition du radier existant + évacuation des gravats (PRÉVOIR ARROSSAGE POUR LIMITER LES POUSSIÈRES) | 4d | 2027-03-19 | 2027-03-24 | 43, 39, 32SS+6d |  |  | EIFFAGE |
| 45 | 4.7 | [EIFFAGE] Étêtage des fondations existantes à -1,00 m du niveau plateforme + évacuation | 2d | 2027-03-22 | 2027-03-23 | 44SS+1d |  |  | EIFFAGE |
| 46 | 4.8 | [EIFFAGE] Relevé géomètre + plan de récolement des ouvrages enterrés, adaptation des fondations | 1d | 2027-03-24 | 2027-03-24 | 45 |  |  | EIFFAGE |
| 47 | 4.10 | [EIFFAGE] Dépose des pièces de scellement existantes local B2 + reprise des percements | 2d | 2027-03-12 | 2027-03-15 | 32SS+4d | 43d |  | EIFFAGE |
| 48 | 4.11 | [EIFFAGE] Démolition dalle basse et soubassement local GE (sciage, mise à nu des armatures) | 2d | 2027-03-16 | 2027-03-17 | 47, 31 | 42d |  | EIFFAGE |
| 49 | 4.12 | [EIFFAGE] Dépose pièce de scellement existante local GE + création du percement DN200 | 1d | 2027-03-18 | 2027-03-18 | 48 | 42d |  | EIFFAGE |

Notes:
- 25: Les tâches ATSI de ce chapitre sont celles du planning ATSI du 15/06/2026 (ind. A). Chaque ligne ATSI est une tâche unique, à la durée du planning ATSI. Les tâches EIFFAGE liées à ATSI sont reliées au début ou à la fin de ces lignes (voir les liaisons dans le fichier).
- 26: Source / hypothèse : DPGF EIFFAGE 5.8.4 (m²) ; Limites de prestations Travaux local sprinkleur source A.
- 27: Source / hypothèse : Planning ATSI (ind. A, reçu le 20/10/2026), semaine S3 (18/01/2027 au 22/01/2027), 5 jours ouvrés. Début au plus tôt = semaine d'ATSI ; décalé si une liaison l'impose.
- 28: Source / hypothèse : Planning ATSI (ind. A, reçu le 20/10/2026), semaines S4 à S6 (25/01/2027 au 12/02/2027), 15 jours ouvrés. Début au plus tôt = semaine d'ATSI ; décalé si une liaison l'impose. Après le percement des voiles par EIFFAGE (ventilation).
- 29: Source / hypothèse : Planning ATSI (ind. A, reçu le 20/10/2026), semaine S4 (25/01/2027 au 29/01/2027), 5 jours ouvrés. Début au plus tôt = semaine d'ATSI ; décalé si une liaison l'impose.
- 30: Source / hypothèse : Planning ATSI (ind. A, reçu le 20/10/2026), semaines S5 à S6 (01/02/2027 au 12/02/2027), 10 jours ouvrés. Début au plus tôt = semaine d'ATSI ; décalé si une liaison l'impose.
- 31: Source / hypothèse : Planning ATSI (ind. A, reçu le 20/10/2026), semaines S7 à S9 (15/02/2027 au 05/03/2027), 15 jours ouvrés. Début au plus tôt = semaine d'ATSI ; décalé si une liaison l'impose.
- 32: Source / hypothèse : Planning ATSI (ind. A, reçu le 20/10/2026), semaines S10 à S11 (08/03/2027 au 19/03/2027), 10 jours ouvrés. Début au plus tôt = semaine d'ATSI ; décalé si une liaison l'impose. Après la remise en service de la source A (GN13) et le dévoiement incendie EIFFAGE.
- 33: Source / hypothèse : Planning ATSI (ind. A, reçu le 20/10/2026), semaines S12 à S15 (22/03/2027 au 16/04/2027), 19 jours ouvrés. Début au plus tôt = semaine d'ATSI ; décalé si une liaison l'impose. Après le durcissement du radier et l'ouverture des tranchées (fourreaux posés) par EIFFAGE.
- 34: Source / hypothèse : Planning ATSI (ind. A, reçu le 20/10/2026), semaine S15 (12/04/2027 au 16/04/2027), 5 jours ouvrés. Début au plus tôt = semaine d'ATSI ; décalé si une liaison l'impose.
- 35: Source / hypothèse : Planning ATSI (ind. A, reçu le 20/10/2026), semaine S16 (19/04/2027 au 23/04/2027), 5 jours ouvrés. Début au plus tôt = semaine d'ATSI ; décalé si une liaison l'impose.
- 36: Source / hypothèse : Planning ATSI (ind. A, reçu le 20/10/2026), semaine S16 (19/04/2027 au 23/04/2027), 5 jours ouvrés. Début au plus tôt = semaine d'ATSI ; décalé si une liaison l'impose.
- 38: Source / hypothèse : CCTP EIFFAGE 5.6.2 ; Limites de prestations 1.
- 39: Source / hypothèse : DPGF EIFFAGE 5.6.2 ; Limites de prestations 1. Continuité du réseau incendie à maintenir (coupure ponctuelle validée MOA).
- 41: Source / hypothèse : DPGF EIFFAGE 5.6.3 ; Limites de prestations 1 (dépose réseaux depuis cuve B2 jusqu'au local source A et B2 = EIFFAGE).
- 42: Source / hypothèse : DPGF EIFFAGE 5.4.1 ; Limites de prestations 4 / Travaux réserves d'eau B2. Fait avant la vidange pour réduire l'indisponibilité.
- 43: Source / hypothèse : DPGF EIFFAGE 5.4.1 ; Limites de prestations 4 / Travaux réserves d'eau B2. Fait avant la vidange pour réduire l'indisponibilité.
- 44: Source / hypothèse : DPGF EIFFAGE 5.4.3 (ens.). Durée estimée.
- 45: Source / hypothèse : Limites de prestations 4.
- 46: Source / hypothèse : Limites de prestations 4 ; CCTP EIFFAGE 5.4.4.
- 47: Source / hypothèse : DPGF EIFFAGE 5.8.2 ; Limites de prestations Travaux source B2.
- 48: Source / hypothèse : DPGF EIFFAGE 5.8.5 ; Limites de prestations Travaux local GE.
- 49: Source / hypothèse : Limites de prestations Travaux local GE.

| ID | WBS | Task | Duration | Start | Finish | Predecessors | Total slack | Constraint | Lot |
| --- | --- | --- | --- | --- | --- | --- | --- | --- | --- |
| 50 | 5 | **5. FONDATIONS ET RADIER - CUVE B2** | 23d | 2027-03-25 | 2027-04-27 |  | 13d |  |  |
| 51 | 5.1 | [EIFFAGE] Plateforme de travail pour pieux (portance EV2 > 50 Mpa) | 2d | 2027-03-25 | 2027-03-26 | 46 |  |  | EIFFAGE |
| 52 | 5.3 | [EIFFAGE] Pieux à tarière creuse (amenée/repli du matériel, forage, armatures, béton) | 5d | 2027-03-30 | 2027-04-05 | 51 |  |  | EIFFAGE |
| 53 | 5.4 | [EIFFAGE] Stockage sur polyane et évacuation des terres et boues de forage + nettoyage voies | 3d | 2027-03-31 | 2027-04-02 | 52SS+1d | 42d |  | EIFFAGE |
| 54 | 5.5 | [EIFFAGE] Essais et contrôle des pieux | 2d | 2027-04-06 | 2027-04-07 | 52 | 39d |  | EIFFAGE |
| 55 | 5.6 | [EIFFAGE] Recépage des pieux | 1d | 2027-04-06 | 2027-04-06 | 52 |  |  | EIFFAGE |
| 56 | 5.7 | [EIFFAGE] Terrassement fouille radier + substitution remblais de portance + fond de forme (débord 1 m) | 2d | 2027-04-07 | 2027-04-08 | 55 |  |  | EIFFAGE |
| 57 | 5.8 | [EIFFAGE] Puisard de trop-plein de la cuve (EMPLACEMENT À VALIDER PAR SPK) | 2d | 2027-04-09 | 2027-04-12 | 56 | 18d |  | EIFFAGE |
| 58 | 5.9 | [EIFFAGE] Béton de propreté | 1d | 2027-04-09 | 2027-04-09 | 56 |  |  | EIFFAGE |
| 59 | 5.10 | [EIFFAGE] Boucle de terre fond de fouille (câble nu 25 mm2, R <= 3 ohms) + attentes de terre cuve | 1d | 2027-04-12 | 2027-04-12 | 58 | 1d |  | EIFFAGE |
| 60 | 5.11 | [EIFFAGE] Pose massifs, platines et boîtes de réservation de pre-scellement (poteaux brise-vue) | 1d | 2027-04-12 | 2027-04-12 | 58 | 1d |  | EIFFAGE |
| 61 | 5.12 | [EIFFAGE] Couche de forme + sablon d'égalisation + film polyéthylène | 1d | 2027-04-12 | 2027-04-12 | 58 |  |  | EIFFAGE |
| 62 | 5.14 | [EIFFAGE] Pose + incorpo tuyauterie d'aspiration DN300 sous radier (fournie par ATSI) + validation implantation ATSI | 1d | 2027-04-13 | 2027-04-13 | 61, 17 |  | start no earlier than 2026-11-05 | EIFFAGE + SPK |
| 63 | 5.16 | [EIFFAGE] Ferraillage radier, attentes pieux, réservations, fourreaux, coffrage de rives et bêches périphériques | 4d | 2027-04-14 | 2027-04-19 | 62, 60, 59 |  |  | EIFFAGE |
| 64 | 5.17 | [EIFFAGE] Coulage du radier | 1d | 2027-04-20 | 2027-04-20 | 63 |  |  | EIFFAGE |
| 65 | 5.18 | [EIFFAGE] Durcissement du radier avant chargement de la cuve (délai à valider BET / bureau de contrôle) | 5d | 2027-04-21 | 2027-04-27 | 64 |  | finish no earlier than 2027-01-03 | EIFFAGE |
| 66 | 6 | **6. LOCAL B2, LOCAL GE ET LOCAL SPRINKLEUR - SCELLEMENTS** | 54d | 2027-03-16 | 2027-06-02 |  | 3d |  |  |
| 67 | 6.1 | [EIFFAGE] Pose nouvelles pièces de scellement local B2 (DN300, DN200, DN150, échappement), étanchéité | 2d | 2027-03-16 | 2027-03-17 | 47, 17 | 45d |  | EIFFAGE |
| 68 | 6.2 | [EIFFAGE] Pose nouvelle pièce de scellement refoulement DN200 local GE + calfeutrement | 1d | 2027-03-19 | 2027-03-19 | 49, 17 | 42d |  | EIFFAGE |
| 69 | 6.2 | [EIFFAGE] Reprise étanchéité / cuvelage soubassement | 1d | 2027-03-22 | 2027-03-22 | 68 | 42d |  | EIFFAGE |
| 70 | 6.4 | [EIFFAGE] Restauration couche de forme, dalle portée, soubassement et cuvelage local GE + durcisseur de dalle | 3d | 2027-05-31 | 2027-06-02 | 68, 69, 33 | 1d |  | EIFFAGE |
| 71 | 7 | **7. TRANCHÉES COMMUNES ET RÉSEAUX ENTERRÉS** | 30d | 2027-04-21 | 2027-06-03 |  | 3d |  |  |
| 72 | 7.1 | [EIFFAGE] Ré-ouverture tranchée commune (local B2 / Source B2) | 3d | 2027-04-21 | 2027-04-23 | 64, 41, 39 | 2d |  | EIFFAGE |
| 73 | 7.2 | [EIFFAGE] Fourreaux électriques 2 x Ø90 (local B2 / réserve d'eau) + chambre de tirage | 1d | 2027-04-26 | 2027-04-26 | 72 | 2d | start no earlier than 2026-12-28 | EIFFAGE |
| 74 | 7.9 | [EIFFAGE] Tranchée + réseau de collecte extérieur EU PVC DN200 (puisard/vidange → regard existant), regard 500x500 | 2d | 2027-04-26 | 2027-04-27 | 72 | 7d |  | EIFFAGE |
| 75 | 7.11 | [EIFFAGE] Raccordement sur réseau EU existant (branchement), boîte de branchement, reprise des sorties EU à 1,00 m | 1d | 2027-05-31 | 2027-05-31 | 74, 33 |  |  | EIFFAGE |
| 76 | 7.12 | [EIFFAGE] Remblaiement et compactage tranchée EU | 1d | 2027-06-01 | 2027-06-01 | 75 |  |  | EIFFAGE |
| 77 | 7.4 | [EIFFAGE] Grillage avertisseur + remblaiement et compactage tranchée 1 | 2d | 2027-06-02 | 2027-06-03 | 73, 76, 33 |  |  | EIFFAGE |
| 78 | 7.5 | [EIFFAGE] Ré-ouverture de la tranchée bouchée provisoirement (local B2 / local GE) | 2d | 2027-04-27 | 2027-04-28 | 73 |  |  | EIFFAGE |
| 79 | 7.6 | [EIFFAGE] Fourreaux électriques 2 x Ø90 (local GE / local B2) + chambre de tirage | 1d | 2027-04-29 | 2027-04-29 | 78 | 4d |  | EIFFAGE |
| 80 | 7.8 | [EIFFAGE] Grillage avertisseur + remblaiement et compactage tranchée 2 | 2d | 2027-05-31 | 2027-06-01 | 79, 33 |  |  | EIFFAGE |

Notes:
- 51: Source / hypothèse : Limites de prestations 4 ; DPGF EIFFAGE 5.3.3.
- 52: Source / hypothèse : DPGF EIFFAGE 5.5.1 (u) ; CCTP EIFFAGE 5.5.1 ; G2PRO Fondasol. Hypothèse ~5 pieux/jour.
- 53: Source / hypothèse : DPGF EIFFAGE 5.5.2 / 5.3.8.
- 54: Source / hypothèse : CCTP EIFFAGE 5.5.1.
- 55: Source / hypothèse : CCTP EIFFAGE 5.5.1.
- 56: Source / hypothèse : DPGF EIFFAGE 5.3.5 / 5.3.6 (m³).
- 57: Source / hypothèse : DPGF EIFFAGE 5.6.6 ; CCTP EIFFAGE 5.6.6.
- 58: Source / hypothèse : DPGF EIFFAGE 5.5.3.
- 59: Source / hypothèse : DPGF EIFFAGE 5.3.9 ; Limites de prestations 3 (boucle de terre du radier = EIFFAGE).
- 60: Source / hypothèse : DPGF EIFFAGE 5.5.4.
- 61: Source / hypothèse : CCTP EIFFAGE 5.5.5.
- 62: Source / hypothèse : Limites de prestations 4 : EIFFAGE réalise, SPK accompagne (P) et valide l'implantation avant coulée.
- 63: Source / hypothèse : DPGF EIFFAGE 5.5.5 (m³). Durée estimée (radier ~ Ø 14 m).
- 64: Source / hypothèse : DPGF EIFFAGE 5.5.5 ; CCTP EIFFAGE 4.4.
- 65: Source / hypothèse : Hypothèse 9 jours ouvrés avant chargement de la cuve : à valider BET / bureau de contrôle (28 j si exigé).
- 67: Source / hypothèse : DPGF EIFFAGE 5.8.3 ; Limites de prestations Travaux source B2.
- 68: Source / hypothèse : Limites de prestations Travaux local GE.
- 69: Source / hypothèse : Limites de prestations Travaux local GE.
- 70: Source / hypothèse : DPGF EIFFAGE 5.8.5 ; Limites de prestations Travaux local GE.
- 72: Source / hypothèse : DPGF EIFFAGE 5.6.1 (ml) ; Limites de prestations 5. Longueur estimée : à relever sur plan.
- 73: Source / hypothèse : DPGF EIFFAGE 5.6.4 / 5.6.5 ; Limites de prestations 5 (Électricité).
- 74: Source / hypothèse : DPGF EIFFAGE 5.6.7 (ml) ; Limites de prestations 5.
- 75: Source / hypothèse : Limites de prestations 5.
- 76: Source / hypothèse : Limites de prestations 5.
- 77: Source / hypothèse : Limites de prestations 5 : remblaiement EIFFAGE après pose SPK.
- 78: Source / hypothèse : DPGF EIFFAGE 5.6.1 / 5.3.2 ; Limites de prestations 5. Longueur estimée.
- 79: Source / hypothèse : DPGF EIFFAGE 5.6.4 / 5.6.5.
- 80: Source / hypothèse : Limites de prestations 5.

| ID | WBS | Task | Type | Duration | Start | Finish | Predecessors | Total slack | Constraint | Lot |
| --- | --- | --- | --- | --- | --- | --- | --- | --- | --- | --- |
| 81 | 9 | **8. BRISE-VUE : CHARPENTE, BARDAGE BOIS, PORTE** |  | 10d | 2027-05-31 | 2027-06-11 |  |  |  |  |
| 82 | 9.1 | [EIFFAGE] Montage charpente métallique brise-vue (poteaux, pannes, contreventement) |  | 4d | 2027-05-31 | 2027-06-03 | 33 | 0.88d |  | EIFFAGE |
| 83 | 9.2 | [EIFFAGE] Sous-construction du bardage (profils oméga acier galvanisé sur poteaux) |  | 3d | 2027-06-02 | 2027-06-04 | 82SS+2d | 0.88d |  | EIFFAGE |
| 84 | 9.3 | [EIFFAGE] Lames de bardage bois douglas |  | 6d | 2027-06-04 | 2027-06-11 | 83SS+2d | 0.88d |  | EIFFAGE |
| 85 | 9.4 | [EIFFAGE] Pose porte d'accès cuve B2 (ferme-porte, barre anti-panique, serrure compatible site) |  | 1d | 2027-06-07 | 2027-06-07 | 83 | 1.88d |  | EIFFAGE |
| 86 | 10 | **9. VOIRIES ET ESPACES VERTS - REMISE EN ÉTAT** |  | 7d | 2027-06-02 | 2027-06-10 |  |  |  |  |
| 87 | 10.1 | [EIFFAGE] Remise en place des bordures béton (joints résistants UV et hydrocarbures) |  | 1d | 2027-06-02 | 2027-06-02 | 80, 24 |  |  | EIFFAGE |
| 88 | 10.2 | [EIFFAGE] Réfection voie technique |  | 3d | 2027-06-04 | 2027-06-08 | 87, 77 |  |  | EIFFAGE |
| 89 | 10.3 | [EIFFAGE] Dépose des pistes d'accès chantier + évacuation + reprofilage |  | 1d | 2027-06-04 | 2027-06-04 | 82, 76, 70, 77 | 1d |  | EIFFAGE |
| 90 | 10.4 | [EIFFAGE] Mouvements de terres, nivellement espaces verts + apport terre végétale 0,30 m mini |  | 2d | 2027-06-08 | 2027-06-09 | 85 | 2d |  | EIFFAGE |
| 91 | 10.6 | [EIFFAGE] Engazonnement |  | 1d | 2027-06-10 | 2027-06-10 | 90 | 2d |  | EIFFAGE |
| 92 | 10.7 | [EIFFAGE] Réfection des cheminements de chantier + nettoyage piste cyclable |  | 1d | 2027-06-07 | 2027-06-07 | 89 | 1d |  | EIFFAGE |
| 93 | 10.8 | [EIFFAGE] Curage + contrôle caméra des réseaux EU en fin de travaux |  | 1d | 2027-06-07 | 2027-06-07 | 76, 89 | 1d |  | EIFFAGE |
| 94 | 11.3 | FIN DES TRAVAUX EIFFAGE | milestone | 0d | 2027-06-10 | 2027-06-10 | 91 | 2d |  | EIFFAGE |
| 95 | 11 | **10. ATSI - ESSAIS ET RÉCEPTION** |  | 9d | 2027-06-07 | 2027-06-17 |  |  |  |  |
| 96 | 11.1 | [ATSI] Essais : essais d'étanchéité des réseaux |  | 5d | 2027-06-07 | 2027-06-11 | 33, 35, 36 |  | start no earlier than 2027-04-26 | SPK |
| 97 | 11.2 | [ATSI] Essais : rinçage des réseaux (par bâtiments) |  | 5d | 2027-06-07 | 2027-06-11 | 33, 35, 36 |  | start no earlier than 2027-04-26 | SPK |
| 98 | 11.3 | [ATSI] Essais : essais des alarmes (avec le sous-traitant) |  | 5d | 2027-06-07 | 2027-06-11 | 33, 35, 36 |  | start no earlier than 2027-04-26 | SPK |
| 99 | 11.4 | [ATSI] Réception : prévisite et opérations préalables à la réception |  | 4d | 2027-06-14 | 2027-06-17 | 96, 97, 98 |  | start no earlier than 2027-05-03 | SPK |
| 100 | 11.5 | [ATSI] Réception : réception client / organisme vérificateur |  | 4d | 2027-06-14 | 2027-06-17 | 96, 97, 98 |  | start no earlier than 2027-05-03 | SPK |
| 101 | 11.6 | [ATSI] Réception : revue de fin d'affaire |  | 4d | 2027-06-14 | 2027-06-17 | 96, 97, 98 |  | start no earlier than 2027-05-03 | SPK |

Notes:
- 82: Source / hypothèse : DPGF EIFFAGE 5.7.1 ; Limites de prestations 4. CCTP EIFFAGE 1 : cuve et réseaux avant brise-vue.
- 83: Source / hypothèse : DPGF EIFFAGE 5.9.1 (m²). Durée estimée.
- 84: Source / hypothèse : DPGF EIFFAGE 5.9.2 (m²). Hypothèse ~40 m²/jour.
- 85: Source / hypothèse : DPGF EIFFAGE 5.9.3.
- 87: Source / hypothèse : DPGF EIFFAGE 5.10.3 (ml).
- 88: Source / hypothèse : DPGF EIFFAGE 5.10.4 (m²) ; Limites de prestations 6.
- 89: Source / hypothèse : CCTP EIFFAGE 5.3.3.
- 90: Source / hypothèse : Limites de prestations 6.
- 91: Source / hypothèse : DPGF EIFFAGE 5.10.2 (m²). Contrôle à 1 mois / tonte à 15 j hors planning.
- 92: Source / hypothèse : Limites de prestations 6.
- 93: Source / hypothèse : Limites de prestations 5.
- 96: Source / hypothèse : Planning ATSI (ind. A, reçu le 20/10/2026), semaine S17 (26/04/2027 au 30/04/2027), 5 jours ouvrés. Début au plus tôt = semaine d'ATSI ; décalé si une liaison l'impose.
- 97: Source / hypothèse : Planning ATSI (ind. A, reçu le 20/10/2026), semaine S17 (26/04/2027 au 30/04/2027), 5 jours ouvrés. Début au plus tôt = semaine d'ATSI ; décalé si une liaison l'impose.
- 98: Source / hypothèse : Planning ATSI (ind. A, reçu le 20/10/2026), semaine S17 (26/04/2027 au 30/04/2027), 5 jours ouvrés. Début au plus tôt = semaine d'ATSI ; décalé si une liaison l'impose.
- 99: Source / hypothèse : Planning ATSI (ind. A, reçu le 20/10/2026), semaine S18 (03/05/2027 au 07/05/2027), 4 jours ouvrés. Début au plus tôt = semaine d'ATSI ; décalé si une liaison l'impose.
- 100: Source / hypothèse : Planning ATSI (ind. A, reçu le 20/10/2026), semaine S18 (03/05/2027 au 07/05/2027), 4 jours ouvrés. Début au plus tôt = semaine d'ATSI ; décalé si une liaison l'impose.
- 101: Source / hypothèse : Planning ATSI (ind. A, reçu le 20/10/2026), semaine S18 (03/05/2027 au 07/05/2027), 4 jours ouvrés. Début au plus tôt = semaine d'ATSI ; décalé si une liaison l'impose.
