# 26_083 DECATHLON CAMPUS - Planning EXE Phase 1 - EIFFAGE + SPRINKLAGE

Schedule from MS Project XML, 2026-11-02 to 2027-02-11, status date 2026-11-02.
Planning détaillé Phase 1 (2026) - Lot EIFFAGE (gros œuvre, VRD, CM, bardage) et Lot Sprinklage
Decathlon Campus - Villeneuve d'Ascq

## Calendars

- Standard (lun-ven, jours fériés FR): Mon-Fri 08:00-12:00, 13:00-17:00; Sat-Sun off. Exceptions (off unless hours are given): 2026-11-11 (Armistice 1918), 2026-12-25 (Noël), 2027-01-01 (Jour de l'an), 2027-01-03 09:00-12:00, 14:00-18:00.

## Schedule

| ID | WBS | Task | Duration | Start | Finish | Predecessors | Total slack | Free slack | Constraint | Lot |
| --- | --- | --- | --- | --- | --- | --- | --- | --- | --- | --- |
| 1 | 2 | **1. INSTALLATION DE CHANTIER** | 5d | 2026-11-02 | 2026-11-06 |  | 1.88d |  |  |  |
| 2 | 2.1 | [EIFFAGE] Constat d'huissier avant travaux (site, voiries, végétation) | 1d | 2026-11-02 | 2026-11-02 |  | 64.88d | 1d |  | EIFFAGE |
| 3 | 2.2 | [ATSI] Clôture chantier + base vie commune | 2d | 2026-11-02 | 2026-11-03 |  | 1.88d |  |  | SPK |
| 4 | 2.1 | [EIFFAGE] Armoire élec + alimentation eau chantier (pour les travaux d'EIFFAGE) | 1d | 2026-11-03 | 2026-11-03 |  | 63.88d |  | start no earlier than 2026-11-03 | EIFFAGE |
| 5 | 2.3 | [EIFFAGE] Pistes d'accès engins / plateforme de circulation | 3d | 2026-11-04 | 2026-11-06 | 2, 4 | 63.88d |  |  | EIFFAGE |
| 6 | 2.4 | [EIFFAGE] Dépose et stockage des bordures béton (réemploi en fin de chantier) | 1d | 2026-11-04 | 2026-11-04 | 3 | 61.88d | 24d |  | EIFFAGE |
| 7 | 2 | **2. SOURCE A + POSTES DE CONTRÔLE - REMISE EN SERVICE AVANT CONSIGNATION DE LA B2 (ATSI)** | 11d | 2026-11-03 | 2026-11-18 |  |  |  |  |  |
| 8 | 2.1 | [ATSI] Consignation source A + mesures compensatoires / raccordement provisoire (la B2 reste en service) | 1d | 2026-11-03 | 2026-11-03 | 3SS+1d |  |  |  | SPK |
| 9 | 2.2 | [ATSI] Remplacement de l'électropompe source A (inclus nourrice pressostatique des sources) | 3d | 2026-11-04 | 2026-11-06 | 8 |  |  |  | SPK |
| 10 | 2.3 | [ATSI] Remplacement de la pompe jockey + alimentation d'aspiration sur eau de ville | 2d | 2026-11-04 | 2026-11-05 | 8 |  |  |  | SPK |
| 11 | 2.4 | [ATSI] Remplacement de l'armoire pompe jockey et source A + disjoncteur + câbles CR1 depuis le TGBT | 3d | 2026-11-04 | 2026-11-06 | 8 |  |  |  | SPK |
| 12 | 2.5 | [ATSI] Réserve source A (30 m³) : remplissage manuel, plaque descriptive, contact de niveau + report d'alarme | 1d | 2026-11-04 | 2026-11-04 | 8 |  |  |  | SPK |
| 13 | 2.6 | [ATSI] Reprise des tuyauteries d'aspiration et de refoulement source A + vannes reportées en alarme | 2d | 2026-11-09 | 2026-11-10 | 9 |  |  |  | SPK |
| 14 | 2.7 | [ATSI] Nouvelle canne d'essai source A (vannes reportées en alarme) | 1d | 2026-11-12 | 2026-11-12 | 13 |  |  |  | SPK |
| 15 | 2.8 | [ATSI] Travaux des postes de contrôle : entretien triennal des 7 postes (un seul poste hors service à la fois) | 5d | 2026-11-04 | 2026-11-10 | 8 |  |  |  | SPK |
| 16 | 2.9 | [ATSI] Postes de contrôle : bypass sur les 7 postes + vannes reportées en alarme | 3d | 2026-11-12 | 2026-11-16 | 15 |  |  |  | SPK |
| 17 | 2.10 | [ATSI] Postes de contrôle : contrôle visuel d'écoulement, gongs remplacés par une nourrice commune, manomètre et pressostat du PC6 | 2d | 2026-11-12 | 2026-11-13 | 15 |  |  |  | SPK |
| 18 | 2.11 | [ATSI] Postes de contrôle : numérotation des vannes de barrage/test/vidange + schémas à jour sur colonnes montantes | 2d | 2026-11-17 | 2026-11-18 | 16, 17 |  |  |  | SPK |
| 19 | 2.12 | [ATSI] MISE EN SERVICE ET ESSAI SOURCE A + levée des mesures compensatoires - AVANT consignation de la B2 | 1d | 2026-11-13 | 2026-11-13 | 9, 10, 11, 12, 13, 14 |  |  |  | SPK |
| 20 | 3 | **3. PHASAGE - DÉVOIEMENTS ET MISE HORS SERVICE SOURCE B2** | 9d | 2026-11-04 | 2026-11-17 |  | 1.88d |  |  |  |
| 21 | 3.1 | [EIFFAGE] Piquetage/marquage et reconnaissance des réseaux existants dans l'emprise (DN100 AEP, DN150 incendie, EU/EV/EP/électricité/fibre) | 1d | 2026-11-04 | 2026-11-04 | 3 | 1.88d |  |  | EIFFAGE |
| 22 | 3.2 | [EIFFAGE] Tranchée commune / Dévoiement réseau incendie DN150 + alimentation AEP/arrosage DN100 hors emprise radier | 6d | 2026-11-05 | 2026-11-13 | 21 | 6.88d | 5d |  | EIFFAGE |
| 23 | 3.3 | [EIFFAGE] Dévoiement EU / EV / EP / électricité / fibre / arrosage si nécessaire (relevé NCA) | 2d | 2026-11-05 | 2026-11-06 | 21 | 1.88d |  |  | EIFFAGE |
| 24 | 3.5 | [ATSI] Consignation + VIDANGE cuve source B2 | 2d | 2026-11-16 | 2026-11-17 | 23, 19 | 1.88d |  |  | SPK |

Notes:
- 2: Source / hypothèse : DPGF EIFFAGE 5.1.1 ; CCTP EIFFAGE 5.1.1 / 3.5.
- 3: Source / hypothèse : Limites de prestations 1 : clôture, base vie, armoire = SPK. CCTP EIFFAGE 5.1.3, 5.1.9.
- 4: Source / hypothèse : DPGF EIFFAGE 5.1.1 ; CCTP EIFFAGE 5.1.1 / 3.5.
- 5: Source / hypothèse : DPGF EIFFAGE 5.3.3 ; Limites de prestations 1 (si nécessaire).
- 6: Source / hypothèse : DPGF EIFFAGE 5.3.4.
- 8: Source / hypothèse : Ordre repris du calendrier prévisionnel (lot SPK) - n° 29 Consignation source A ; CCTP SPK 3.1.4 ; tableau de limites 2.
- 9: Source / hypothèse : Ordre repris du calendrier prévisionnel (lot SPK) - n° 30 ; DPGF SPK 3.5 (Source A). Durée estimée.
- 10: Source / hypothèse : Ordre repris du calendrier prévisionnel (lot SPK) - n° 30 ; DPGF SPK 3.5 (Pompe jockey). Durée estimée.
- 11: Source / hypothèse : DPGF SPK 3.5 (Source A). Durée estimée.
- 12: Source / hypothèse : DPGF SPK 3.5 (Réserve d'eau). Durée estimée.
- 13: Source / hypothèse : DPGF SPK 3.5 (Source A). Durée estimée.
- 14: Source / hypothèse : DPGF SPK 3.5 (Systèmes d'essai).
- 15: Source / hypothèse : Ordre repris du calendrier prévisionnel (lot SPK) - n° 31 Travaux postes de contrôle (10 jours au total) ; DPGF SPK 3.6.1. Réseau en eau chaque fin de semaine.
- 16: Source / hypothèse : DPGF SPK 3.6.2.
- 17: Source / hypothèse : DPGF SPK 3.6.1.
- 18: Source / hypothèse : DPGF SPK 3.6.1 ; CCTP SPK 3.6.1.
- 19: Source / hypothèse : Ordre repris du calendrier prévisionnel (lot SPK) - n° 32 Mise en service et essai source A. Les postes de contrôle (a8 à a11) tournent en parallèle sans conditionner la vidange de la B2.
- 21: Source / hypothèse : CCTP EIFFAGE 5.6.2 ; Limites de prestations 1.
- 22: Source / hypothèse : DPGF EIFFAGE 5.6.2 ; Limites de prestations 1. Continuité du réseau incendie à maintenir (coupure ponctuelle validée MOA).
- 23: Source / hypothèse : Limites de prestations 1 (si nécessaire).
- 24: Source / hypothèse : Limites de prestations 1/2. Décalage 25 jours ouvrés = 5 semaines de préavis gardiennage.

| ID | WBS | Task | Duration | Start | Finish | Predecessors | Total slack | Free slack | Constraint | Lot |
| --- | --- | --- | --- | --- | --- | --- | --- | --- | --- | --- |
| 25 | 4 | **4. DÉPOSES ET DÉMOLITIONS - SOURCE B2** | 11d | 2026-11-18 | 2026-12-02 |  | 1.88d |  |  |  |
| 26 | 4.1 | [EIFFAGE] Dépose brise-vue bois + charpente métallique support + grille d'accès/porte grillagée (évacuation) | 3d | 2026-11-18 | 2026-11-20 | 24 | 1.88d |  |  | EIFFAGE |
| 27 | 4.2 | [ATSI] Dépose et évacuation de la cuve B2 existante | 4d | 2026-11-23 | 2026-11-26 | 24, 26 | 1.88d |  |  | SPK |
| 28 | 4.3 | [ATSI] Dépose du GMPD B2 + tuyauteries SPK - avant dépose des pièces de scellement EIFFAGE | 2d | 2026-11-18 | 2026-11-19 | 24 | 21.88d |  |  | SPK |
| 29 | 4.4 | [ATSI] Dépose des réseaux existants local GE - avant démolition dalle EIFFAGE | 1d | 2026-11-18 | 2026-11-18 | 24 | 44.88d |  |  | SPK |
| 30 | 4.5 | [ATSI] Dépose de la source B1 (électropompe + équipements/canalisations, consignation électrique, câbles neutralisés) | 2d | 2026-11-20 | 2026-11-23 | 28 |  |  |  | SPK |
| 31 | 4.6 | [ATSI] Dépose de la nourrice pressostatique (anciennes jockey, A, B1) + câbles | 1d | 2026-11-24 | 2026-11-24 | 30 |  |  |  | SPK |
| 32 | 4.5 | [EIFFAGE] Dépose des réseaux existants cuve B2 → local B2 → local A/GE (terrassement, évacuation, remblaiement) | 3d | 2026-11-27 | 2026-12-01 | 27, 24 | 37.88d |  |  | EIFFAGE |
| 33 | 4.6 | [EIFFAGE] Démolition du radier existant + évacuation des gravats (PRÉVOIR ARROSSAGE POUR LIMITER LES POUSSIÈRES) | 4d | 2026-11-27 | 2026-12-02 | 27, 22 | 1.88d |  |  | EIFFAGE |
| 34 | 4.7 | [EIFFAGE] Étêtage des fondations existantes à -1,00 m du niveau plateforme + évacuation | 2d | 2026-11-30 | 2026-12-01 | 33SS+1d | 1.88d |  |  | EIFFAGE |
| 35 | 4.8 | [EIFFAGE] Relevé géomètre + plan de récolement des ouvrages enterrés, adaptation des fondations | 1d | 2026-12-02 | 2026-12-02 | 34 | 1.88d |  |  | EIFFAGE |
| 36 | 4.10 | [EIFFAGE] Dépose des pièces de scellement existantes local B2 + reprise des percements (DN300, DN200, DN150, échappement) | 2d | 2026-11-20 | 2026-11-23 | 28 | 44.88d |  |  | EIFFAGE |
| 37 | 4.11 | [EIFFAGE] Démolition dalle basse et soubassement local GE (sciage, mise à nu des armatures) | 2d | 2026-11-19 | 2026-11-20 | 29 | 44.88d |  |  | EIFFAGE |
| 38 | 4.12 | [EIFFAGE] Dépose pièce de scellement existante local GE + création du percement DN200 | 1d | 2026-11-23 | 2026-11-23 | 37 | 44.88d |  |  | EIFFAGE |
| 39 | 5 | **5. FONDATIONS ET RADIER - CUVE B2** | 32d | 2026-11-20 | 2027-01-06 |  | 10.88d |  |  |  |
| 40 | 5.1 | [EIFFAGE] Plateforme de travail pour pieux (portance EV2 > 50 Mpa) | 2d | 2026-12-03 | 2026-12-04 | 35 | 1.88d |  |  | EIFFAGE |
| 41 | 5.3 | [EIFFAGE] Pieux à tarière creuse (amenée/repli du matériel, forage, armatures, béton) | 5d | 2026-12-07 | 2026-12-11 | 40 | 1.88d |  |  | EIFFAGE |
| 42 | 5.4 | [EIFFAGE] Stockage sur polyane et évacuation des terres et boues de forage + nettoyage voies | 3d | 2026-12-08 | 2026-12-10 | 41SS+1d | 44.88d |  |  | EIFFAGE |
| 43 | 5.5 | [EIFFAGE] Essais et contrôle des pieux | 2d | 2026-12-14 | 2026-12-15 | 41 | 41.88d |  |  | EIFFAGE |
| 44 | 5.6 | [EIFFAGE] Recépage des pieux | 1d | 2026-12-14 | 2026-12-14 | 41 | 1.88d |  |  | EIFFAGE |
| 45 | 5.7 | [EIFFAGE] Terrassement fouille radier + substitution remblais de portance + fond de forme (débord 1 m) | 2d | 2026-12-15 | 2026-12-16 | 44 | 1.88d |  |  | EIFFAGE |
| 46 | 5.8 | [EIFFAGE] Puisard de trop-plein de la cuve (EMPLACEMENT À VALIDER PAR SPK) | 2d | 2026-12-17 | 2026-12-18 | 45 | 21.88d |  |  | EIFFAGE |
| 47 | 5.9 | [EIFFAGE] Béton de propreté | 1d | 2026-12-17 | 2026-12-17 | 45 | 1.88d |  |  | EIFFAGE |
| 48 | 5.10 | [EIFFAGE] Boucle de terre fond de fouille (câble nu 25 mm2, R <= 3 ohms) + attentes de terre cuve | 1d | 2026-12-18 | 2026-12-18 | 47 | 2.88d | 1d |  | EIFFAGE |
| 49 | 5.11 | [EIFFAGE] Pose massifs, platines et boîtes de réservation de pre-scellement (poteaux brise-vue) | 1d | 2026-12-18 | 2026-12-18 | 47 | 2.88d | 1d |  | EIFFAGE |
| 50 | 5.12 | [EIFFAGE] Couche de forme + sablon d'égalisation + film polyéthylène | 1d | 2026-12-18 | 2026-12-18 | 47 | 1.88d |  |  | EIFFAGE |
| 51 | 5.13 | [ATSI] Livraison sur site : pièces de scellement + tuyauterie d'aspiration DN300 (fournitures SPK pour EIFFAGE) | 1d | 2026-11-20 | 2026-11-20 | 28 | 21.88d | 1d |  | SPK |
| 52 | 5.14 | [EIFFAGE] Pose et incorporation de la tuyauterie d'aspiration DN300 sous radier (fournie par ATSI) + validation implantation ATSI | 1d | 2026-12-21 | 2026-12-21 | 50, 51 | 1.88d |  | start no earlier than 2026-11-05 | EIFFAGE + SPK |
| 53 | 5.16 | [EIFFAGE] Ferraillage radier, attentes pieux, réservations, fourreaux, coffrage de rives et bêches périphériques | 4d | 2026-12-22 | 2026-12-28 | 52, 49, 48 | 1.88d |  |  | EIFFAGE |
| 54 | 5.17 | [EIFFAGE] Coulage du radier | 1d | 2026-12-29 | 2026-12-29 | 53 | 1.88d |  |  | EIFFAGE |
| 55 | 5.18 | [EIFFAGE] Durcissement du radier avant chargement de la cuve (délai à valider BET / bureau de contrôle) | 5d | 2026-12-30 | 2027-01-06 | 54 | 0.12d |  | finish no earlier than 2027-01-03 | EIFFAGE |

Notes:
- 26: Source / hypothèse : DPGF EIFFAGE 5.4.1 ; Limites de prestations 4 / Travaux réserves d'eau B2. Fait avant la vidange pour réduire l'indisponibilité.
- 27: Source / hypothèse : DPGF SPK 3.5 ; CCTP EIFFAGE 5.4.2 (par lot SPK). Durée estimée (cuve acier 405 m³).
- 28: Source / hypothèse : DPGF SPK 3.5 (Source B2 - GMPD).
- 29: Source / hypothèse : Limites de prestations Travaux local GE.
- 30: Source / hypothèse : Ordre repris du calendrier prévisionnel (lot SPK) - n° 36 Dépose source B1 (après n° 35 dépose source B2) ; DPGF SPK 3.5 (Source B1).
- 31: Source / hypothèse : DPGF SPK 3.5 (Nourrices pressostatiques).
- 32: Source / hypothèse : DPGF EIFFAGE 5.6.3 ; Limites de prestations 1 (dépose réseaux depuis cuve B2 jusqu'au local source A et B2 = EIFFAGE).
- 33: Source / hypothèse : DPGF EIFFAGE 5.4.3 (ens.). Durée estimée.
- 34: Source / hypothèse : Limites de prestations 4.
- 35: Source / hypothèse : Limites de prestations 4 ; CCTP EIFFAGE 5.4.4.
- 36: Source / hypothèse : DPGF EIFFAGE 5.8.2 ; Limites de prestations Travaux source B2.
- 37: Source / hypothèse : DPGF EIFFAGE 5.8.5 ; Limites de prestations Travaux local GE.
- 38: Source / hypothèse : Limites de prestations Travaux local GE.
- 40: Source / hypothèse : Limites de prestations 4 ; DPGF EIFFAGE 5.3.3.
- 41: Source / hypothèse : DPGF EIFFAGE 5.5.1 (u) ; CCTP EIFFAGE 5.5.1 ; G2PRO Fondasol. Hypothèse ~5 pieux/jour.
- 42: Source / hypothèse : DPGF EIFFAGE 5.5.2 / 5.3.8.
- 43: Source / hypothèse : CCTP EIFFAGE 5.5.1.
- 44: Source / hypothèse : CCTP EIFFAGE 5.5.1.
- 45: Source / hypothèse : DPGF EIFFAGE 5.3.5 / 5.3.6 (m³).
- 46: Source / hypothèse : DPGF EIFFAGE 5.6.6 ; CCTP EIFFAGE 5.6.6.
- 47: Source / hypothèse : DPGF EIFFAGE 5.5.3.
- 48: Source / hypothèse : DPGF EIFFAGE 5.3.9 ; Limites de prestations 3 (boucle de terre du radier = EIFFAGE).
- 49: Source / hypothèse : DPGF EIFFAGE 5.5.4.
- 50: Source / hypothèse : CCTP EIFFAGE 5.5.5.
- 51: Source / hypothèse : Limites de prestations 4 (source B2, local GE) : fourniture SPK.
- 52: Source / hypothèse : Limites de prestations 4 : EIFFAGE réalise, SPK accompagne (P) et valide l'implantation avant coulée.
- 53: Source / hypothèse : DPGF EIFFAGE 5.5.5 (m³). Durée estimée (radier ~ Ø 14 m).
- 54: Source / hypothèse : DPGF EIFFAGE 5.5.5 ; CCTP EIFFAGE 4.4.
- 55: Source / hypothèse : Hypothèse 9 jours ouvrés avant chargement de la cuve : à valider BET / bureau de contrôle (28 j si exigé).

| ID | WBS | Task | Duration | Start | Finish | Predecessors | Total slack | Free slack | Constraint | Lot |
| --- | --- | --- | --- | --- | --- | --- | --- | --- | --- | --- |
| 56 | 6 | **6. LOCAL B2, LOCAL GE ET LOCAL SPRINKLEUR - SCELLEMENTS** | 17d | 2026-11-24 | 2026-12-16 |  | 37.88d |  |  |  |
| 57 | 6.1 | [EIFFAGE] Pose nouvelles pièces de scellement local B2 (DN300, DN200, DN150, échappement), reprise mortier, étanchéité, calfeutrement | 2d | 2026-11-24 | 2026-11-25 | 36, 51 | 44.88d |  |  | EIFFAGE |
| 58 | 6.2 | [EIFFAGE] Pose nouvelle pièce de scellement refoulement DN200 local GE + calfeutrement | 1d | 2026-11-24 | 2026-11-24 | 38, 51 | 44.88d |  |  | EIFFAGE |
| 59 | 6.2 | [EIFFAGE] Reprise étanchéité / cuvelage soubassement | 1d | 2026-11-25 | 2026-11-25 | 58 | 44.88d | 7d |  | EIFFAGE |
| 60 | 6.3 | [ATSI] Pose du nouveau GMPD + tuyauteries DN300/DN200 dans le local B2 (après scellements EIFFAGE) | 6d | 2026-11-26 | 2026-12-03 | 57, 28 | 46.88d | 39.88d |  | SPK |
| 61 | 6.5 | [ATSI] Réservoir fuel double peau 500 L + pistolet de remplissage (local B2) | 1d | 2026-12-04 | 2026-12-04 | 60 |  |  |  | SPK |
| 62 | 6.6 | [ATSI] Armoire de commande/démarrage du GMPD + câblage + raccordement à l'armoire générale | 3d | 2026-12-04 | 2026-12-08 | 60 |  |  |  | SPK |
| 63 | 6.7 | [ATSI] Nourrice pressostatique source B2 + pressostats | 1d | 2026-12-04 | 2026-12-04 | 60 |  |  |  | SPK |
| 64 | 6.8 | [ATSI] Tuyauterie de la canne d'essai DN150 (refoulement GMPD → pièce de scellement) + étalonnage du débitmètre | 2d | 2026-12-04 | 2026-12-07 | 60 |  |  |  | SPK |
| 65 | 6.9 | [ATSI] Ventilation mécanique + clapet coupe-feu (sortie existante réutilisée) + calfeutrement coupe-feu des passages | 2d | 2026-11-26 | 2026-11-27 | 57 |  |  |  | SPK |
| 66 | 6.10 | [ATSI] Sonde de température + thermostat reportés en alarme, BAES, protection sprinkleur de l'entrée, affichages du local B2 | 2d | 2026-11-30 | 2026-12-01 | 65 |  |  |  | SPK |
| 67 | 6.4 | [EIFFAGE] Restauration couche de forme, dalle portée, soubassement et cuvelage local GE + durcisseur de dalle | 3d | 2026-12-14 | 2026-12-16 | 58, 84, 59 | 38.88d | 34.88d |  | EIFFAGE |
| 68 | 6 | **LOCAL SPRINKLER SOURCE A & POSTES** | 16d | 2026-11-04 | 2026-11-26 |  | 49.88d |  |  |  |
| 69 | 6.5 | [EIFFAGE] Percement des voiles béton façade Nord : ventilation haute et basse + redressement des tableaux | 2d | 2026-11-04 | 2026-11-05 | 3 | 49.88d |  |  | EIFFAGE |
| 70 | 6.6 | [ATSI] Fourniture et pose des grilles de ventilation (après percement EIFFAGE) | 1d | 2026-11-06 | 2026-11-06 | 69 | 49.88d |  |  | SPK |
| 71 | 6.6 | [ATSI] Flocage toiture (CF1h) | 1d | 2026-11-09 | 2026-11-09 | 70 | 49.88d |  |  | SPK |
| 72 | 9.6 | [SPK] Armoire de répartition équipements annexes + disjoncteur depuis TGBT | 2d | 2026-11-10 | 2026-11-12 | 71 | 49.88d |  |  | SPK |
| 73 | 9.4 | [SPK] Remplacement protection sprinkleur local A + postes | 4d | 2026-11-13 | 2026-11-18 | 72 | 49.88d |  |  | SPK |
| 74 | 9.5 | [SPK] Protection sprinkler local eau glacée | 2d | 2026-11-19 | 2026-11-20 | 73 | 49.88d |  |  | SPK |
| 75 | 9.5 | [SPK] Sonde de température reportée en alarme + contacts anti-intrusion (portes local sprinkleur, atelier, TGBT) | 2d | 2026-11-23 | 2026-11-24 | 74 | 49.88d |  |  | SPK |
| 76 | 9.7 | [SPK] Affichages d'exploitation, étiquetage, BAPI, reprise peinture des canalisations du local | 2d | 2026-11-25 | 2026-11-26 | 75 | 49.88d |  |  | SPK |
| 77 | 7 | **7. TRANCHÉES COMMUNES ET RÉSEAUX ENTERRÉS** | 35d | 2026-12-02 | 2027-01-21 |  | 12d |  |  |  |
| 78 | 7.1 | [EIFFAGE] Ouverture tranchée commune (~ 25 ml estimés) | 2d | 2026-12-30 | 2026-12-31 | 54, 32, 22 | 19.88d |  |  | EIFFAGE |
| 79 | 7.2 | [EIFFAGE] Fourreaux électriques 2 x Ø90 (local B2 / réserve d'eau) + chambre de tirage | 1d | 2027-01-04 | 2027-01-04 | 78 | 19.88d |  | start no earlier than 2026-12-28 | EIFFAGE |
| 80 | 7.3 | [ATSI] Pose aspiration DN300 + remplissage/retour essai DN150 + épreuves (tranchée 1) - avant remblaiement EIFFAGE | 4d | 2027-01-05 | 2027-01-08 | 79 | 19.88d |  | finish no earlier than 2026-12-29 | SPK |
| 81 | 7.4 | [EIFFAGE] Grillage avertisseur + remblaiement et compactage tranchée 1 | 2d | 2027-01-11 | 2027-01-12 | 80, 79 | 19.88d |  |  | EIFFAGE |
| 82 | 7.5 | [EIFFAGE] Ouverture tranchée commune (~ 60 ml estimés, sciage voirie lourde + espace vert) | 3d | 2026-12-02 | 2026-12-04 | 32, 22 | 36.88d |  |  | EIFFAGE |
| 83 | 7.6 | [EIFFAGE] Fourreaux électriques 2 x Ø90 (local GE / local B2) + chambre de tirage | 1d | 2026-12-07 | 2026-12-07 | 82 | 40.88d | 4d |  | EIFFAGE |
| 84 | 7.7 | [ATSI] Pose refoulement DN200 jusqu'au local GE + épreuves (tranchée 2) - avant remblaiement EIFFAGE | 5d | 2026-12-07 | 2026-12-11 | 82, 57, 58, 59 | 36.88d |  |  | SPK |
| 85 | 7.8 | [ATSI] Remplacement du réseau aérien DN200 de l'arrivée enterrée jusqu'à la nourrice des postes (local A) | 3d | 2026-12-14 | 2026-12-16 | 84 |  |  |  | SPK |
| 86 | 7.9 | [ATSI] Tirage des câbles TGBT → pénétration et reports d'alarme dans les fourreaux d'EIFFAGE | 3d | 2027-01-05 | 2027-01-07 | 79, 83 |  |  |  | SPK |
| 87 | 7.8 | [EIFFAGE] Grillage avertisseur + remblaiement et compactage tranchée 2 | 2d | 2026-12-14 | 2026-12-15 | 84, 83 | 36.88d |  |  | EIFFAGE |
| 88 | 7.9 | [EIFFAGE] Tranchée + réseau de collecte extérieur EU PVC DN200 (puisard/vidange → regard existant), regard 500x500 | 3d | 2026-12-21 | 2026-12-23 | 46 | 20.88d | 18.88d |  | EIFFAGE |
| 89 | 7.10 | [ATSI] Réseau EU àérien trop-plein/vidange, sortie à 1,00 m du nu cuve SPK - raccordé ensuite par EIFFAGE | 2d | 2027-01-18 | 2027-01-19 | 94 | 2d |  |  | SPK |
| 90 | 7.11 | [EIFFAGE] Raccordement sur réseau EU existant (branchement), boîte de branchement, reprise des sorties EU à 1,00 m | 1d | 2027-01-20 | 2027-01-20 | 88, 89 | 2d |  |  | EIFFAGE |
| 91 | 7.12 | [EIFFAGE] Remblaiement et compactage tranchée EU | 1d | 2027-01-21 | 2027-01-21 | 90 | 12d | 8d |  | EIFFAGE |

Notes:
- 57: Source / hypothèse : DPGF EIFFAGE 5.8.3 ; Limites de prestations Travaux source B2.
- 58: Source / hypothèse : Limites de prestations Travaux local GE.
- 59: Source / hypothèse : Limites de prestations Travaux local GE.
- 60: Source / hypothèse : DPGF SPK 3.5 (Source B2). Durée estimée.
- 61: Source / hypothèse : Ordre repris du calendrier prévisionnel (lot SPK) - n° 37 Travaux local source B2 (GMPD et équipements associés) ; DPGF SPK 3.5.
- 62: Source / hypothèse : DPGF SPK 3.17 ; CCTP SPK 3.5.4. Durée estimée.
- 63: Source / hypothèse : DPGF SPK 3.5 (Nourrices pressostatiques).
- 64: Source / hypothèse : DPGF SPK 3.5 (Systèmes d'essai).
- 65: Source / hypothèse : DPGF SPK 3.4.1 ; tableau de limites 4 (calfeutrement coupe-feu = SPK).
- 66: Source / hypothèse : DPGF SPK 3.4.1.
- 67: Source / hypothèse : DPGF EIFFAGE 5.8.5 ; Limites de prestations Travaux local GE.
- 69: Source / hypothèse : DPGF EIFFAGE 5.8.4 (m²) ; Limites de prestations Travaux local sprinkleur source A.
- 70: Source / hypothèse : Limites de prestations 4.
- 71: Source / hypothèse : Limites de prestations 4.
- 72: Source / hypothèse : DPGF SPK 3.4.1. / Durée recalée EXE (15 semaines) : renfort d'équipes / travail en parallèle.
- 73: Source / hypothèse : DPGF SPK 3.4.1 ; CCTP SPK 3.6.1. / Durée recalée EXE (15 semaines) : renfort d'équipes / travail en parallèle.
- 74: Source / hypothèse : DPGF SPK 3.4.1. / Durée recalée EXE (15 semaines) : renfort d'équipes / travail en parallèle.
- 75: Source / hypothèse : DPGF SPK 3.4.1. / Durée recalée EXE (15 semaines) : renfort d'équipes / travail en parallèle.
- 76: Source / hypothèse : DPGF SPK 3.4.1. / Durée recalée EXE (15 semaines) : renfort d'équipes / travail en parallèle.
- 78: Source / hypothèse : DPGF EIFFAGE 5.6.1 (ml) ; Limites de prestations 5. Longueur estimée : à relever sur plan.
- 79: Source / hypothèse : DPGF EIFFAGE 5.6.4 / 5.6.5 ; Limites de prestations 5 (Électricité).
- 80: Source / hypothèse : Limites de prestations 5 : tableau mentionne remplissage DN200 / retour essai DN150 (CCTP : DN150).
- 81: Source / hypothèse : Limites de prestations 5 : remblaiement EIFFAGE après pose SPK.
- 82: Source / hypothèse : DPGF EIFFAGE 5.6.1 / 5.3.2 ; Limites de prestations 5. Longueur estimée.
- 83: Source / hypothèse : DPGF EIFFAGE 5.6.4 / 5.6.5.
- 84: Source / hypothèse : Limites de prestations 5 (Liaison local B2 ↔ local GE).
- 85: Source / hypothèse : Ordre repris du calendrier prévisionnel (lot SPK) - n° 39 Pose réseaux enterrés SPK ; DPGF SPK 3.5 (Réseaux enterrés).
- 86: Source / hypothèse : Tableau de limites 5 (Électricité) ; DPGF SPK 3.17.
- 87: Source / hypothèse : Limites de prestations 5.
- 88: Source / hypothèse : DPGF EIFFAGE 5.6.7 (ml) ; Limites de prestations 5.
- 89: Source / hypothèse : Limites de prestations 5 (Vidange - Eaux usées).
- 90: Source / hypothèse : Limites de prestations 5.
- 91: Source / hypothèse : Limites de prestations 5.

| ID | WBS | Task | Type | Duration | Start | Finish | Predecessors | Total slack | Free slack | Constraint | Lot |
| --- | --- | --- | --- | --- | --- | --- | --- | --- | --- | --- | --- |
| 92 | 8 | **8. CUVE B2 620 m³ (SPK) - INTERFACES** |  | 23d | 2026-12-30 | 2027-02-01 |  | 4.88d |  |  |  |
| 93 | 8.1 | [ATSI] Livraison de la cuve sur site |  | 2d | 2026-12-30 | 2026-12-31 | 54 | 4.88d |  |  | SPK |
| 94 | 8.2 | [ATSI] Implantation et montage de la cuve boulonnée |  | 7d | 2027-01-07 | 2027-01-15 | 55, 93 |  |  | start no earlier than 2027-01-04 | SPK |
| 95 | 8.3 | [ATSI] Clapet anti-pollution type EA sur l'arrivée eau de ville DN65 + vers EU + vanne de contre-barrage |  | 1d | 2027-01-18 | 2027-01-18 | 94 |  |  |  | SPK |
| 96 | 8.3 | [ATSI] Poche PVC, toit autoportant, échelle, équipements de la cuve |  | 5d | 2027-01-18 | 2027-01-22 | 94 |  |  |  | SPK |
| 97 | 8.4 | [EIFFAGE] Joint ciment/Silicone périphérique autour de la cornière de fixation de la cuve |  | 1d | 2027-01-18 | 2027-01-18 | 94 | 4d |  |  | EIFFAGE |
| 98 | 8.5 | [ATSI] Remplissage de la cuve (<= 36 h) + test d'étanchéité |  | 3d | 2027-01-25 | 2027-01-27 | 96, 97, 90, 95 |  |  |  | SPK |
| 99 | 8.6 | [ATSI] Essais + REMISE EN SERVICE de la source B2 (fin de l'indisponibilité de la B2) |  | 3d | 2027-01-28 | 2027-02-01 | 98, 60, 80, 84, 62, 63, 64, 66, 85 | 7d |  |  | SPK |
| 100 | 9 | **9. BRISE-VUE : CHARPENTE, BARDAGE BOIS, PORTE** |  | 10d | 2027-01-28 | 2027-02-10 |  |  |  |  |  |
| 101 | 9.1 | [EIFFAGE] Montage charpente métallique brise-vue (poteaux, pannes, contreventement) |  | 4d | 2027-01-28 | 2027-02-02 | 98 |  |  |  | EIFFAGE |
| 102 | 9.2 | [EIFFAGE] Sous-construction du bardage (profils oméga acier galvanisé sur poteaux) |  | 3d | 2027-02-01 | 2027-02-03 | 101SS+2d |  |  |  | EIFFAGE |
| 103 | 9.3 | [EIFFAGE] Lames de bardage bois douglas |  | 6d | 2027-02-03 | 2027-02-10 | 102SS+2d |  |  |  | EIFFAGE |
| 104 | 9.4 | [EIFFAGE] Pose porte d'accès cuve B2 (ferme-porte, barre anti-panique, serrure compatible site) |  | 1d | 2027-02-04 | 2027-02-04 | 102 |  |  |  | EIFFAGE |
| 105 | 10 | **10. VOIRIES ET ESPACES VERTS - REMISE EN ÉTAT** |  | 39d | 2026-12-16 | 2027-02-10 |  |  |  |  |  |
| 106 | 10.1 | [EIFFAGE] Remise en place des bordures béton (joints résistants UV et hydrocarbures) |  | 1d | 2026-12-16 | 2026-12-16 | 87, 6 | 36.88d | 17d |  | EIFFAGE |
| 107 | 10.2 | [EIFFAGE] Réfection voie technique |  | 3d | 2027-01-13 | 2027-01-15 | 106, 81 | 19.88d |  |  | EIFFAGE |
| 108 | 10.3 | [EIFFAGE] Dépose des pistes d'accès chantier + évacuation + reprofilage |  | 1d | 2027-02-03 | 2027-02-03 | 101, 91, 67, 81 | 4d |  |  | EIFFAGE |
| 109 | 10.4 | [EIFFAGE] Mouvements de terres, nivellement espaces verts + apport terre végétale 0,30 m mini |  | 2d | 2027-02-05 | 2027-02-08 | 104 |  |  |  | EIFFAGE |
| 110 | 10.5 | [EIFFAGE] Préparation avant engazonnement |  | 1d | 2027-02-09 | 2027-02-09 | 109 |  |  |  | EIFFAGE |
| 111 | 10.6 | [EIFFAGE] Engazonnement |  | 1d | 2027-02-10 | 2027-02-10 | 110 |  |  |  | EIFFAGE |
| 112 | 10.7 | [EIFFAGE] Réfection des cheminements de chantier + nettoyage piste cyclable |  | 1d | 2027-02-04 | 2027-02-04 | 108 | 4d |  |  | EIFFAGE |
| 113 | 10.8 | [EIFFAGE] Curage + contrôle caméra des réseaux EU en fin de travaux |  | 1d | 2027-02-04 | 2027-02-04 | 91, 108 | 4d |  |  | EIFFAGE |
| 114 | 11.2 | [EIFFAGE] DOE | milestone | 0d | 2027-02-10 | 2027-02-10 | 111, 112, 107, 113, 103, 104 |  |  |  | EIFFAGE |
| 115 | 11.3 | FIN DES TRAVAUX EIFFAGE | milestone | 0d | 2027-02-10 | 2027-02-10 | 111 |  |  |  | EIFFAGE |

Notes:
- 93: Source / hypothèse : CCTP SPK 3.5.4 b.
- 94: Source / hypothèse : DPGF SPK 3.5 (Réserve d'eau). Durée estimée.
- 95: Source / hypothèse : DPGF SPK 3.5 (Systèmes d'essai). Nécessaire au remplissage de la cuve.
- 97: Source / hypothèse : DPGF EIFFAGE 5.8.1 (ml) ; Limites de prestations 4.
- 98: Source / hypothèse : CCTP SPK 3.5.4 b. (remplissage en 36 h maximum). Évacuation EU du trop-plein nécessaire.
- 99: Source / hypothèse : Jalon de fin d'indisponibilité de la source B2.
- 101: Source / hypothèse : DPGF EIFFAGE 5.7.1 ; Limites de prestations 4. CCTP EIFFAGE 1 : cuve et réseaux avant brise-vue.
- 102: Source / hypothèse : DPGF EIFFAGE 5.9.1 (m²). Durée estimée.
- 103: Source / hypothèse : DPGF EIFFAGE 5.9.2 (m²). Hypothèse ~40 m²/jour.
- 104: Source / hypothèse : DPGF EIFFAGE 5.9.3.
- 106: Source / hypothèse : DPGF EIFFAGE 5.10.3 (ml).
- 107: Source / hypothèse : DPGF EIFFAGE 5.10.4 (m²) ; Limites de prestations 6.
- 108: Source / hypothèse : CCTP EIFFAGE 5.3.3.
- 109: Source / hypothèse : Limites de prestations 6.
- 110: Source / hypothèse : DPGF EIFFAGE 5.10.1.
- 111: Source / hypothèse : DPGF EIFFAGE 5.10.2 (m²). Contrôle à 1 mois / tonte à 15 j hors planning.
- 112: Source / hypothèse : Limites de prestations 6.
- 113: Source / hypothèse : Limites de prestations 5.
- 114: Source / hypothèse : Limites : DOE chacun pour son lot ; CCTP EIFFAGE 2.3.7.

| ID | WBS | Task | Duration | Start | Finish | Predecessors | Lot |
| --- | --- | --- | --- | --- | --- | --- | --- |
| 116 | 12 | **11. ÉLECTRICITÉ, ALARMES, MISE À LA TERRE ET PEINTURE (ATSI)** | 51d | 2026-11-13 | 2027-01-26 |  |  |
| 117 | 12.1 | [ATSI] Armoire électrique du local source + câblage des équipements sprinkleurs + raccordement du tableau d'alarme | 5d | 2026-11-13 | 2026-11-19 | 72 | SPK |
| 118 | 12.2 | [ATSI] Tresses de mise à la terre des équipements + nourrice des postes (raccord à la boucle de terre du radier EIFFAGE) | 2d | 2027-01-25 | 2027-01-26 | 48, 96 | SPK |
| 119 | 12.3 | [ATSI] Report des alarmes créées + vérification de toutes les alarmes | 3d | 2026-12-02 | 2026-12-04 | 117, 66, 75 | SPK |
| 120 | 12.4 | [ATSI] Peinture des réseaux apparents (raccords mécaniques compris) | 3d | 2026-12-17 | 2026-12-21 | 13, 73, 85 | SPK |
| 121 | 13 | **12. ESSAIS, MISE EN SERVICE ET DOE (ATSI)** | 47d | 2026-12-07 | 2027-02-11 |  |  |
| 122 | 13.1 | [ATSI] Réglage des seuils de démarrage des sources (NF EN 12845) + essais des sources conservées | 2d | 2027-02-02 | 2027-02-03 | 99 | SPK |
| 123 | 13.2 | [ATSI] Identification du matériel et des réseaux (pochoir) + étiquetage | 2d | 2026-12-22 | 2026-12-23 | 120 | SPK |
| 124 | 13.3 | [ATSI] Vérifications, tests et contrôles des postes de contrôle, alarmes et points F | 3d | 2026-12-07 | 2026-12-09 | 18, 119 | SPK |
| 125 | 13.4 | [ATSI] Levée des remarques du dernier rapport semestriel Q1 (+ remarques complémentaires) | 3d | 2026-12-10 | 2026-12-14 | 124 | SPK |
| 126 | 13.5 | [ATSI] Mise en service, séance de formation et d'instruction + pièces de rechange | 2d | 2027-02-04 | 2027-02-05 | 122, 123, 124 | SPK |
| 127 | 13.6 | [ATSI] DOE du lot sprinklage (plans de récolement, notices, PV d'essais) | 4d | 2027-02-08 | 2027-02-11 | 125, 126 | SPK |
| 128 | 13.7 | [ATSI] Nettoyage + repli de la base vie et de la clôture ATSI | 2d | 2027-02-08 | 2027-02-09 | 126 | SPK |

Notes:
- 117: Source / hypothèse : DPGF SPK 3.17. Durée estimée.
- 118: Source / hypothèse : DPGF SPK 3.17 ; tableau de limites 3.
- 119: Source / hypothèse : DPGF SPK 3.16.
- 120: Source / hypothèse : DPGF SPK 3.18.
- 122: Source / hypothèse : Ordre repris du calendrier prévisionnel (lot SPK) - n° 40 Mise en service et essai source B2 ; DPGF SPK 3.5 et 3.22.
- 123: Source / hypothèse : DPGF SPK 3.22 ; CCTP SPK 3.19.
- 124: Source / hypothèse : DPGF SPK 3.22.
- 125: Source / hypothèse : DPGF SPK 3.11. Durée estimée.
- 126: Source / hypothèse : DPGF SPK 3.22.
- 127: Source / hypothèse : DPGF SPK 3.1.2 ; tableau de limites 3 (DOE chacun pour son lot).
- 128: Source / hypothèse : Tableau de limites 1 et 2.
