# 26_083 DECATHLON CAMPUS - Planning EXE Phase 1 - EIFFAGE + SPRINKLAGE

Schedule from MS Project XML, 2026-11-02 to 2027-02-11, status date 2026-11-02.
Planning détaillé Phase 1 (2026) - Lot EIFFAGE (gros œuvre, VRD, CM, bardage) et Lot Sprinklage
Decathlon Campus - Villeneuve d'Ascq

## Calendars

- Standard (lun-ven, jours fériés FR): Mon-Fri 08:00-12:00, 13:00-17:00; Sat-Sun off. Exceptions (off unless hours are given): 2026-11-11 (Armistice 1918), 2026-12-25 (Noël), 2027-01-01 (Jour de l'an), 2027-01-03 09:00-12:00, 14:00-18:00.
- : Mon-Fri 09:00-12:00, 14:00-18:00; Sat-Sun off.

## Schedule

| ID | WBS | Task | Duration | Start | Finish | Predecessors | Total slack | Free slack | Constraint | Lot |
| --- | --- | --- | --- | --- | --- | --- | --- | --- | --- | --- |
| 1 | 2 | **1. INSTALLATION DE CHANTIER** | 5d | 2026-11-02 | 2026-11-06 |  |  |  |  |  |
| 2 | 2.1 | [EIFFAGE] Constat d'huissier avant travaux (site, voiries, végétation) | 1d | 2026-11-02 | 2026-11-02 |  | 67d | 1d |  | EIFFAGE |
| 3 | 2.2 | [ATSI] Clôture chantier + base vie commune | 2d | 2026-11-02 | 2026-11-03 |  |  |  |  | SPK |
| 4 | 2.1 | [EIFFAGE] Armoire élec + alimentation eau chantier (pour les travaux d'EIFFAGE) | 1d | 2026-11-03 | 2026-11-03 |  | 66d |  | start no earlier than 2026-11-03 | EIFFAGE |
| 5 | 2.3 | [EIFFAGE] Pistes d'accès engins / plateforme de circulation | 3d | 2026-11-04 | 2026-11-06 | 2, 4 | 66d |  |  | EIFFAGE |
| 6 | 2.4 | [EIFFAGE] Dépose et stockage des bordures béton (réemploi en fin de chantier) | 1d | 2026-11-04 | 2026-11-04 | 3 | 64d | 28d |  | EIFFAGE |
| 7 | 2 | **2. SOURCE A, LOCAL SPRINKLEUR ET POSTES DE CONTRÔLE (ATSI) - SOURCE A REMISE EN SERVICE AVANT CONSIGNATION DE LA B2** | 11d | 2026-11-03 | 2026-11-18 |  |  |  |  |  |
| 8 | 2.1 | [ATSI] Source A : consignation + mesures compensatoires / raccordement provisoire (la B2 reste en service) | 1d | 2026-11-03 | 2026-11-03 | 3SS+1d |  |  |  | SPK |
| 9 | 2.2 | [ATSI] Source A : remplacement de l'électropompe (inclus nourrice pressostatique des sources) | 3d | 2026-11-04 | 2026-11-06 | 8 |  |  |  | SPK |
| 10 | 2.3 | [ATSI] Source A : remplacement de la pompe jockey + alimentation d'aspiration sur eau de ville | 2d | 2026-11-04 | 2026-11-05 | 8 | 4d |  |  | SPK |
| 11 | 2.4 | [ATSI] Source A : remplacement de l'armoire pompe jockey et source A (disjoncteur + câbles CR1 depuis TGBT) | 3d | 2026-11-04 | 2026-11-06 | 8 | 3d |  |  | SPK |
| 12 | 2.5 | [ATSI] Source A : réserve de 30 m³ (remplissage manuel, plaque descriptive, contact de niveau + report d'alarme) | 1d | 2026-11-04 | 2026-11-04 | 8 | 5d |  |  | SPK |
| 13 | 2.6 | [ATSI] Source A : reprise des tuyauteries d'aspiration et de refoulement + vannes reportées en alarme | 2d | 2026-11-09 | 2026-11-10 | 9 |  |  |  | SPK |
| 14 | 2.7 | [ATSI] Source A : nouvelle canne d'essai (vannes reportées en alarme) | 1d | 2026-11-12 | 2026-11-12 | 13 |  |  |  | SPK |
| 15 | 6.5 | [EIFFAGE] Local source A : percement des voiles béton façade Nord (ventilation haute et basse) + redressement des tableaux | 2d | 2026-11-04 | 2026-11-05 | 3 | 42d |  |  | EIFFAGE |
| 16 | 6.6 | [ATSI] Local source A : fourniture et pose des grilles de ventilation (après percement EIFFAGE) | 1d | 2026-11-06 | 2026-11-06 | 15 | 42d |  |  | SPK |
| 17 | 6.6 | [ATSI] Local source A : flocage de la toiture (coupe-feu 1 h) | 1d | 2026-11-04 | 2026-11-04 | 3 | 42d |  |  | SPK |
| 18 | 9.6 | [ATSI] Local source A : armoire de répartition des équipements annexes + disjoncteur depuis le TGBT | 2d | 2026-11-04 | 2026-11-05 | 3 | 42d |  |  | SPK |
| 19 | 9.4 | [ATSI] Local source A : remplacement de la protection sprinkleur du local et des postes (PC n°5 : CPE + vanne d'isolement) | 4d | 2026-11-06 | 2026-11-12 | 18 | 42d |  |  | SPK |
| 20 | 9.5 | [ATSI] Local source A : extension de la protection sprinkleur vers le local eau glacée | 2d | 2026-11-13 | 2026-11-16 | 19 | 42d |  |  | SPK |
| 21 | 9.5 | [ATSI] Local source A : sonde de température reportée en alarme + contacts anti-intrusion (portes local, atelier, TGBT) | 2d | 2026-11-13 | 2026-11-16 | 19 | 42d |  |  | SPK |
| 22 | 9.7 | [ATSI] Local source A : affichages d'exploitation, étiquetage, BAPI, reprise de la peinture des canalisations | 2d | 2026-11-17 | 2026-11-18 | 20, 21 | 53d |  |  | SPK |
| 23 | 2.8 | [ATSI] Postes de contrôle : entretien triennal des 7 postes (un seul poste hors service à la fois) | 5d | 2026-11-04 | 2026-11-10 | 8 | 49d |  |  | SPK |
| 24 | 2.9 | [ATSI] Postes de contrôle : bypass sur les 7 postes + vannes reportées en alarme | 3d | 2026-11-12 | 2026-11-16 | 23 | 49d |  |  | SPK |
| 25 | 2.10 | [ATSI] Postes de contrôle : contrôle visuel d'écoulement, gongs remplacés par une nourrice commune, manomètre et pressostat du PC6 | 2d | 2026-11-12 | 2026-11-13 | 23 | 50d | 1d |  | SPK |
| 26 | 2.11 | [ATSI] Postes de contrôle : numérotation des vannes de barrage/test/vidange + schémas à jour sur colonnes montantes | 2d | 2026-11-17 | 2026-11-18 | 24, 25 | 49d | 12d |  | SPK |
| 27 | 2.12 | [ATSI] Source A : MISE EN SERVICE ET ESSAI + levée des mesures compensatoires - AVANT consignation de la B2 | 1d | 2026-11-13 | 2026-11-13 | 9, 10, 11, 12, 13, 14 |  |  |  | SPK |

Notes:
- 2: Source / hypothèse : DPGF EIFFAGE 5.1.1 ; CCTP EIFFAGE 5.1.1 / 3.5.
- 3: Source / hypothèse : Limites de prestations 1 : clôture, base vie, armoire = SPK. CCTP EIFFAGE 5.1.3, 5.1.9.
- 4: Source / hypothèse : DPGF EIFFAGE 5.1.1 ; CCTP EIFFAGE 5.1.1 / 3.5.
- 5: Source / hypothèse : DPGF EIFFAGE 5.3.3 ; Limites de prestations 1 (si nécessaire).
- 6: Source / hypothèse : DPGF EIFFAGE 5.3.4.
- 7: Partie 2 harmonisée, ordre du calendrier prévisionnel (lot SPK) : consignation source A, travaux source A + pompe jockey, travaux du local source A, travaux des postes de contrôle, mise en service et essai source A, puis consignation de la B2. Seule la remise en service de la source A conditionne la consignation de la B2 : les travaux du local et des postes de contrôle se poursuivent en parallèle.
- 8: Source / hypothèse : Ordre repris du calendrier prévisionnel (lot SPK) - n° 29 Consignation source A ; CCTP SPK 3.1.4 ; tableau de limites 2.
- 9: Source / hypothèse : Ordre repris du calendrier prévisionnel (lot SPK) - n° 30 ; DPGF SPK 3.5 (Source A). Durée estimée.
- 10: Source / hypothèse : Ordre repris du calendrier prévisionnel (lot SPK) - n° 30 ; DPGF SPK 3.5 (Pompe jockey). Durée estimée.
- 11: Source / hypothèse : DPGF SPK 3.5 (Source A). Durée estimée.
- 12: Source / hypothèse : DPGF SPK 3.5 (Réserve d'eau). Durée estimée.
- 13: Source / hypothèse : DPGF SPK 3.5 (Source A). Durée estimée.
- 14: Source / hypothèse : DPGF SPK 3.5 (Systèmes d'essai).
- 15: Source / hypothèse : DPGF EIFFAGE 5.8.4 (m²) ; Limites de prestations Travaux local sprinkleur source A.
- 16: Source / hypothèse : Limites de prestations 4.
- 17: Source / hypothèse : Limites de prestations 4.
- 18: Source / hypothèse : DPGF SPK 3.4.1. / Durée recalée EXE (15 semaines) : renfort d'équipes / travail en parallèle.
- 19: Source / hypothèse : DPGF SPK 3.4.1 ; CCTP SPK 3.6.1. / Durée recalée EXE (15 semaines) : renfort d'équipes / travail en parallèle.
- 20: Source / hypothèse : DPGF SPK 3.4.1. / Durée recalée EXE (15 semaines) : renfort d'équipes / travail en parallèle.
- 21: Source / hypothèse : DPGF SPK 3.4.1. / Durée recalée EXE (15 semaines) : renfort d'équipes / travail en parallèle.
- 22: Source / hypothèse : DPGF SPK 3.4.1. / Durée recalée EXE (15 semaines) : renfort d'équipes / travail en parallèle.
- 23: Source / hypothèse : Ordre repris du calendrier prévisionnel (lot SPK) - n° 31 Travaux postes de contrôle (10 jours au total) ; DPGF SPK 3.6.1. Réseau en eau chaque fin de semaine.
- 24: Source / hypothèse : DPGF SPK 3.6.2.
- 25: Source / hypothèse : DPGF SPK 3.6.1.
- 26: Source / hypothèse : DPGF SPK 3.6.1 ; CCTP SPK 3.6.1.
- 27: Source / hypothèse : Calendrier prévisionnel n° 32 Mise en service et essai source A. Conditionne la consignation de la B2 (liaison avec la tâche de vidange). Les travaux du local et des postes de contrôle ne la conditionnent pas.

| ID | WBS | Task | Duration | Start | Finish | Predecessors | Total slack | Free slack | Constraint | Lot |
| --- | --- | --- | --- | --- | --- | --- | --- | --- | --- | --- |
| 28 | 3 | **3. PHASAGE - DÉVOIEMENTS ET MISE HORS SERVICE SOURCE B2** | 9d | 2026-11-04 | 2026-11-17 |  | 4d |  |  |  |
| 29 | 3.1 | [EIFFAGE] Piquetage/marquage et reconnaissance des réseaux existants dans l'emprise (DN100 AEP, DN150 incendie, EU/EV/EP/électricité/fibre) | 1d | 2026-11-04 | 2026-11-04 | 3 | 4d |  |  | EIFFAGE |
| 30 | 3.2 | [EIFFAGE] Tranchée commune / Dévoiement réseau incendie DN150 + alimentation AEP/arrosage DN100 hors emprise radier | 6d | 2026-11-05 | 2026-11-13 | 29 | 9d |  |  | EIFFAGE |
| 31 | 3.3 | [EIFFAGE] Dévoiement EU / EV / EP / électricité / fibre / arrosage si nécessaire (relevé NCA) | 2d | 2026-11-05 | 2026-11-06 | 29 | 4d |  |  | EIFFAGE |
| 32 | 3.5 | [ATSI] Consignation + VIDANGE cuve source B2 | 2d | 2026-11-16 | 2026-11-17 | 31, 27 |  |  |  | SPK |
| 33 | 4 | **4. DÉPOSES ET DÉMOLITIONS - SOURCE B2** | 11d | 2026-11-18 | 2026-12-02 |  |  |  |  |  |
| 34 | 4.1 | [EIFFAGE] Dépose brise-vue bois + charpente métallique support + grille d'accès/porte grillagée (évacuation) | 3d | 2026-11-18 | 2026-11-20 | 32 |  |  |  | EIFFAGE |
| 35 | 4.2 | [ATSI] Dépose et évacuation de la cuve B2 existante | 4d | 2026-11-23 | 2026-11-26 | 32, 34 |  |  |  | SPK |
| 36 | 4.3 | [ATSI] Dépose du GMPD B2 + tuyauteries SPK - avant dépose des pièces de scellement EIFFAGE | 2d | 2026-11-18 | 2026-11-19 | 32 | 20d |  |  | SPK |
| 37 | 4.4 | [ATSI] Dépose des réseaux existants local GE - avant démolition dalle EIFFAGE | 1d | 2026-11-18 | 2026-11-18 | 32 | 35d |  |  | SPK |
| 38 | 4.5 | [ATSI] Dépose de la source B1 (électropompe + équipements/canalisations, consignation électrique, câbles neutralisés) | 2d | 2026-11-20 | 2026-11-23 | 36 | 55d |  |  | SPK |
| 39 | 4.6 | [ATSI] Dépose de la nourrice pressostatique (anciennes jockey, A, B1) + câbles | 1d | 2026-11-24 | 2026-11-24 | 38 | 55d |  |  | SPK |
| 40 | 4.5 | [EIFFAGE] Dépose des réseaux existants cuve B2 → local B2 → local A/GE (terrassement, évacuation, remblaiement) | 3d | 2026-11-27 | 2026-12-01 | 35, 32 | 28d |  |  | EIFFAGE |
| 41 | 4.6 | [EIFFAGE] Démolition du radier existant + évacuation des gravats (PRÉVOIR ARROSSAGE POUR LIMITER LES POUSSIÈRES) | 4d | 2026-11-27 | 2026-12-02 | 35, 30 |  |  |  | EIFFAGE |
| 42 | 4.7 | [EIFFAGE] Étêtage des fondations existantes à -1,00 m du niveau plateforme + évacuation | 2d | 2026-11-30 | 2026-12-01 | 41SS+1d |  |  |  | EIFFAGE |
| 43 | 4.8 | [EIFFAGE] Relevé géomètre + plan de récolement des ouvrages enterrés, adaptation des fondations | 1d | 2026-12-02 | 2026-12-02 | 42 |  |  |  | EIFFAGE |
| 44 | 4.10 | [EIFFAGE] Dépose des pièces de scellement existantes local B2 + reprise des percements (DN300, DN200, DN150, échappement) | 2d | 2026-11-20 | 2026-11-23 | 36 | 34d |  |  | EIFFAGE |
| 45 | 4.11 | [EIFFAGE] Démolition dalle basse et soubassement local GE (sciage, mise à nu des armatures) | 2d | 2026-11-19 | 2026-11-20 | 37 | 35d |  |  | EIFFAGE |
| 46 | 4.12 | [EIFFAGE] Dépose pièce de scellement existante local GE + création du percement DN200 | 1d | 2026-11-23 | 2026-11-23 | 45 | 35d |  |  | EIFFAGE |
| 47 | 5 | **5. FONDATIONS ET RADIER - CUVE B2** | 32d | 2026-11-20 | 2027-01-06 |  | 9d |  |  |  |
| 48 | 5.1 | [EIFFAGE] Plateforme de travail pour pieux (portance EV2 > 50 Mpa) | 2d | 2026-12-03 | 2026-12-04 | 43 |  |  |  | EIFFAGE |
| 49 | 5.3 | [EIFFAGE] Pieux à tarière creuse (amenée/repli du matériel, forage, armatures, béton) | 5d | 2026-12-07 | 2026-12-11 | 48 |  |  |  | EIFFAGE |
| 50 | 5.4 | [EIFFAGE] Stockage sur polyane et évacuation des terres et boues de forage + nettoyage voies | 3d | 2026-12-08 | 2026-12-10 | 49SS+1d | 43d |  |  | EIFFAGE |
| 51 | 5.5 | [EIFFAGE] Essais et contrôle des pieux | 2d | 2026-12-14 | 2026-12-15 | 49 | 40d |  |  | EIFFAGE |
| 52 | 5.6 | [EIFFAGE] Recépage des pieux | 1d | 2026-12-14 | 2026-12-14 | 49 |  |  |  | EIFFAGE |
| 53 | 5.7 | [EIFFAGE] Terrassement fouille radier + substitution remblais de portance + fond de forme (débord 1 m) | 2d | 2026-12-15 | 2026-12-16 | 52 |  |  |  | EIFFAGE |
| 54 | 5.8 | [EIFFAGE] Puisard de trop-plein de la cuve (EMPLACEMENT À VALIDER PAR SPK) | 2d | 2026-12-17 | 2026-12-18 | 53 | 19d |  |  | EIFFAGE |
| 55 | 5.9 | [EIFFAGE] Béton de propreté | 1d | 2026-12-17 | 2026-12-17 | 53 |  |  |  | EIFFAGE |
| 56 | 5.10 | [EIFFAGE] Boucle de terre fond de fouille (câble nu 25 mm2, R <= 3 ohms) + attentes de terre cuve | 1d | 2026-12-18 | 2026-12-18 | 55 | 1d |  |  | EIFFAGE |
| 57 | 5.11 | [EIFFAGE] Pose massifs, platines et boîtes de réservation de pre-scellement (poteaux brise-vue) | 1d | 2026-12-18 | 2026-12-18 | 55 | 1d |  |  | EIFFAGE |
| 58 | 5.12 | [EIFFAGE] Couche de forme + sablon d'égalisation + film polyéthylène | 1d | 2026-12-18 | 2026-12-18 | 55 |  |  |  | EIFFAGE |
| 59 | 5.13 | [ATSI] Livraison sur site : pièces de scellement + tuyauterie d'aspiration DN300 (fournitures SPK pour EIFFAGE) | 1d | 2026-11-20 | 2026-11-20 | 36 | 20d | 1d |  | SPK |
| 60 | 5.14 | [EIFFAGE] Pose et incorporation de la tuyauterie d'aspiration DN300 sous radier (fournie par ATSI) + validation implantation ATSI | 1d | 2026-12-21 | 2026-12-21 | 58, 59 |  |  | start no earlier than 2026-11-05 | EIFFAGE + SPK |
| 61 | 5.16 | [EIFFAGE] Ferraillage radier, attentes pieux, réservations, fourreaux, coffrage de rives et bêches périphériques | 4d | 2026-12-22 | 2026-12-28 | 60, 57, 56 |  |  |  | EIFFAGE |
| 62 | 5.17 | [EIFFAGE] Coulage du radier | 1d | 2026-12-29 | 2026-12-29 | 61 |  |  |  | EIFFAGE |
| 63 | 5.18 | [EIFFAGE] Durcissement du radier avant chargement de la cuve (délai à valider BET / bureau de contrôle) | 5d | 2026-12-30 | 2027-01-06 | 62 |  |  | finish no earlier than 2027-01-03 | EIFFAGE |

Notes:
- 29: Source / hypothèse : CCTP EIFFAGE 5.6.2 ; Limites de prestations 1.
- 30: Source / hypothèse : DPGF EIFFAGE 5.6.2 ; Limites de prestations 1. Continuité du réseau incendie à maintenir (coupure ponctuelle validée MOA).
- 31: Source / hypothèse : Limites de prestations 1 (si nécessaire).
- 32: Source / hypothèse : Limites de prestations 1/2. Décalage 25 jours ouvrés = 5 semaines de préavis gardiennage.
- 34: Source / hypothèse : DPGF EIFFAGE 5.4.1 ; Limites de prestations 4 / Travaux réserves d'eau B2. Fait avant la vidange pour réduire l'indisponibilité.
- 35: Source / hypothèse : DPGF SPK 3.5 ; CCTP EIFFAGE 5.4.2 (par lot SPK). Durée estimée (cuve acier 405 m³).
- 36: Source / hypothèse : DPGF SPK 3.5 (Source B2 - GMPD).
- 37: Source / hypothèse : Limites de prestations Travaux local GE.
- 38: Source / hypothèse : Ordre repris du calendrier prévisionnel (lot SPK) - n° 36 Dépose source B1 (après n° 35 dépose source B2) ; DPGF SPK 3.5 (Source B1).
- 39: Source / hypothèse : DPGF SPK 3.5 (Nourrices pressostatiques).
- 40: Source / hypothèse : DPGF EIFFAGE 5.6.3 ; Limites de prestations 1 (dépose réseaux depuis cuve B2 jusqu'au local source A et B2 = EIFFAGE).
- 41: Source / hypothèse : DPGF EIFFAGE 5.4.3 (ens.). Durée estimée.
- 42: Source / hypothèse : Limites de prestations 4.
- 43: Source / hypothèse : Limites de prestations 4 ; CCTP EIFFAGE 5.4.4.
- 44: Source / hypothèse : DPGF EIFFAGE 5.8.2 ; Limites de prestations Travaux source B2.
- 45: Source / hypothèse : DPGF EIFFAGE 5.8.5 ; Limites de prestations Travaux local GE.
- 46: Source / hypothèse : Limites de prestations Travaux local GE.
- 48: Source / hypothèse : Limites de prestations 4 ; DPGF EIFFAGE 5.3.3.
- 49: Source / hypothèse : DPGF EIFFAGE 5.5.1 (u) ; CCTP EIFFAGE 5.5.1 ; G2PRO Fondasol. Hypothèse ~5 pieux/jour.
- 50: Source / hypothèse : DPGF EIFFAGE 5.5.2 / 5.3.8.
- 51: Source / hypothèse : CCTP EIFFAGE 5.5.1.
- 52: Source / hypothèse : CCTP EIFFAGE 5.5.1.
- 53: Source / hypothèse : DPGF EIFFAGE 5.3.5 / 5.3.6 (m³).
- 54: Source / hypothèse : DPGF EIFFAGE 5.6.6 ; CCTP EIFFAGE 5.6.6.
- 55: Source / hypothèse : DPGF EIFFAGE 5.5.3.
- 56: Source / hypothèse : DPGF EIFFAGE 5.3.9 ; Limites de prestations 3 (boucle de terre du radier = EIFFAGE).
- 57: Source / hypothèse : DPGF EIFFAGE 5.5.4.
- 58: Source / hypothèse : CCTP EIFFAGE 5.5.5.
- 59: Source / hypothèse : Limites de prestations 4 (source B2, local GE) : fourniture SPK.
- 60: Source / hypothèse : Limites de prestations 4 : EIFFAGE réalise, SPK accompagne (P) et valide l'implantation avant coulée.
- 61: Source / hypothèse : DPGF EIFFAGE 5.5.5 (m³). Durée estimée (radier ~ Ø 14 m).
- 62: Source / hypothèse : DPGF EIFFAGE 5.5.5 ; CCTP EIFFAGE 4.4.
- 63: Source / hypothèse : Hypothèse 9 jours ouvrés avant chargement de la cuve : à valider BET / bureau de contrôle (28 j si exigé).

| ID | WBS | Task | Duration | Start | Finish | Predecessors | Total slack | Free slack | Constraint | Lot |
| --- | --- | --- | --- | --- | --- | --- | --- | --- | --- | --- |
| 64 | 6 | **6. LOCAL B2, LOCAL GE ET LOCAL SPRINKLEUR - SCELLEMENTS** | 17d | 2026-11-24 | 2026-12-16 |  | 34d |  |  |  |
| 65 | 6.1 | [EIFFAGE] Pose nouvelles pièces de scellement local B2 (DN300, DN200, DN150, échappement), reprise mortier, étanchéité, calfeutrement | 2d | 2026-11-24 | 2026-11-25 | 44, 59 | 34d |  |  | EIFFAGE |
| 66 | 6.2 | [EIFFAGE] Pose nouvelle pièce de scellement refoulement DN200 local GE + calfeutrement | 1d | 2026-11-24 | 2026-11-24 | 46, 59 | 35d |  |  | EIFFAGE |
| 67 | 6.2 | [EIFFAGE] Reprise étanchéité / cuvelage soubassement | 1d | 2026-11-25 | 2026-11-25 | 66 | 35d | 7d |  | EIFFAGE |
| 68 | 6.3 | [ATSI] Pose du nouveau GMPD + tuyauteries DN300/DN200 dans le local B2 (après scellements EIFFAGE) | 6d | 2026-11-26 | 2026-12-03 | 65, 36 | 34d |  |  | SPK |
| 69 | 6.5 | [ATSI] Réservoir fuel double peau 500 L + pistolet de remplissage (local B2) | 1d | 2026-12-04 | 2026-12-04 | 68 | 47d |  |  | SPK |
| 70 | 6.6 | [ATSI] Armoire de commande/démarrage du GMPD + câblage + raccordement à l'armoire générale | 3d | 2026-12-04 | 2026-12-08 | 68 | 34d |  |  | SPK |
| 71 | 6.7 | [ATSI] Nourrice pressostatique source B2 + pressostats | 1d | 2026-12-04 | 2026-12-04 | 68 | 36d |  |  | SPK |
| 72 | 6.8 | [ATSI] Tuyauterie de la canne d'essai DN150 (refoulement GMPD → pièce de scellement) + étalonnage du débitmètre | 2d | 2026-12-04 | 2026-12-07 | 68 | 35d |  |  | SPK |
| 73 | 6.9 | [ATSI] Ventilation mécanique + clapet coupe-feu (sortie existante réutilisée) + calfeutrement coupe-feu des passages | 2d | 2026-11-26 | 2026-11-27 | 65 | 37d |  |  | SPK |
| 74 | 6.10 | [ATSI] Sonde de température + thermostat reportés en alarme, BAES, protection sprinkleur de l'entrée, affichages du local B2 | 2d | 2026-11-30 | 2026-12-01 | 73 | 37d |  |  | SPK |
| 75 | 6.4 | [EIFFAGE] Restauration couche de forme, dalle portée, soubassement et cuvelage local GE + durcisseur de dalle | 3d | 2026-12-14 | 2026-12-16 | 66, 83, 67 | 37d | 32d |  | EIFFAGE |
| 76 | 7 | **7. TRANCHÉES COMMUNES ET RÉSEAUX ENTERRÉS** | 35d | 2026-12-02 | 2027-01-21 |  | 15d |  |  |  |
| 77 | 7.1 | [EIFFAGE] Ouverture tranchée commune (~ 25 ml estimés) | 2d | 2026-12-30 | 2026-12-31 | 62, 40, 30 | 13d |  |  | EIFFAGE |
| 78 | 7.2 | [EIFFAGE] Fourreaux électriques 2 x Ø90 (local B2 / réserve d'eau) + chambre de tirage | 1d | 2027-01-04 | 2027-01-04 | 77 | 13d |  | start no earlier than 2026-12-28 | EIFFAGE |
| 79 | 7.3 | [ATSI] Pose aspiration DN300 + remplissage/retour essai DN150 + épreuves (tranchée 1) - avant remblaiement EIFFAGE | 4d | 2027-01-05 | 2027-01-08 | 78 | 13d |  | finish no earlier than 2026-12-29 | SPK |
| 80 | 7.4 | [EIFFAGE] Grillage avertisseur + remblaiement et compactage tranchée 1 | 2d | 2027-01-11 | 2027-01-12 | 79, 78 | 19d |  |  | EIFFAGE |
| 81 | 7.5 | [EIFFAGE] Ouverture tranchée commune (~ 60 ml estimés, sciage voirie lourde + espace vert) | 3d | 2026-12-02 | 2026-12-04 | 40, 30 | 28d |  |  | EIFFAGE |
| 82 | 7.6 | [EIFFAGE] Fourreaux électriques 2 x Ø90 (local GE / local B2) + chambre de tirage | 1d | 2026-12-07 | 2026-12-07 | 81 | 40d | 4d |  | EIFFAGE |
| 83 | 7.7 | [ATSI] Pose refoulement DN200 jusqu'au local GE + épreuves (tranchée 2) - avant remblaiement EIFFAGE | 5d | 2026-12-07 | 2026-12-11 | 81, 65, 66, 67 | 28d |  |  | SPK |
| 84 | 7.8 | [ATSI] Remplacement du réseau aérien DN200 de l'arrivée enterrée jusqu'à la nourrice des postes (local A) | 3d | 2026-12-14 | 2026-12-16 | 83 | 28d |  |  | SPK |
| 85 | 7.9 | [ATSI] Tirage des câbles TGBT → pénétration et reports d'alarme dans les fourreaux d'EIFFAGE | 3d | 2027-01-05 | 2027-01-07 | 78, 82 | 25d |  |  | SPK |
| 86 | 7.8 | [EIFFAGE] Grillage avertisseur + remblaiement et compactage tranchée 2 | 2d | 2026-12-14 | 2026-12-15 | 83, 82 | 36d |  |  | EIFFAGE |
| 87 | 7.9 | [EIFFAGE] Tranchée + réseau de collecte extérieur EU PVC DN200 (puisard/vidange → regard existant), regard 500x500 | 3d | 2026-12-21 | 2026-12-23 | 54 | 19d | 17d |  | EIFFAGE |
| 88 | 7.10 | [ATSI] Réseau EU àérien trop-plein/vidange, sortie à 1,00 m du nu cuve SPK - raccordé ensuite par EIFFAGE | 2d | 2027-01-18 | 2027-01-19 | 93 | 2d |  |  | SPK |
| 89 | 7.11 | [EIFFAGE] Raccordement sur réseau EU existant (branchement), boîte de branchement, reprise des sorties EU à 1,00 m | 1d | 2027-01-20 | 2027-01-20 | 87, 88 | 2d |  |  | EIFFAGE |
| 90 | 7.12 | [EIFFAGE] Remblaiement et compactage tranchée EU | 1d | 2027-01-21 | 2027-01-21 | 89 | 13d | 8d |  | EIFFAGE |

Notes:
- 65: Source / hypothèse : DPGF EIFFAGE 5.8.3 ; Limites de prestations Travaux source B2.
- 66: Source / hypothèse : Limites de prestations Travaux local GE.
- 67: Source / hypothèse : Limites de prestations Travaux local GE.
- 68: Source / hypothèse : DPGF SPK 3.5 (Source B2). Durée estimée.
- 69: Source / hypothèse : Ordre repris du calendrier prévisionnel (lot SPK) - n° 37 Travaux local source B2 (GMPD et équipements associés) ; DPGF SPK 3.5.
- 70: Source / hypothèse : DPGF SPK 3.17 ; CCTP SPK 3.5.4. Durée estimée.
- 71: Source / hypothèse : DPGF SPK 3.5 (Nourrices pressostatiques).
- 72: Source / hypothèse : DPGF SPK 3.5 (Systèmes d'essai).
- 73: Source / hypothèse : DPGF SPK 3.4.1 ; tableau de limites 4 (calfeutrement coupe-feu = SPK).
- 74: Source / hypothèse : DPGF SPK 3.4.1.
- 75: Source / hypothèse : DPGF EIFFAGE 5.8.5 ; Limites de prestations Travaux local GE.
- 77: Source / hypothèse : DPGF EIFFAGE 5.6.1 (ml) ; Limites de prestations 5. Longueur estimée : à relever sur plan.
- 78: Source / hypothèse : DPGF EIFFAGE 5.6.4 / 5.6.5 ; Limites de prestations 5 (Électricité).
- 79: Source / hypothèse : Limites de prestations 5 : tableau mentionne remplissage DN200 / retour essai DN150 (CCTP : DN150).
- 80: Source / hypothèse : Limites de prestations 5 : remblaiement EIFFAGE après pose SPK.
- 81: Source / hypothèse : DPGF EIFFAGE 5.6.1 / 5.3.2 ; Limites de prestations 5. Longueur estimée.
- 82: Source / hypothèse : DPGF EIFFAGE 5.6.4 / 5.6.5.
- 83: Source / hypothèse : Limites de prestations 5 (Liaison local B2 ↔ local GE).
- 84: Source / hypothèse : Ordre repris du calendrier prévisionnel (lot SPK) - n° 39 Pose réseaux enterrés SPK ; DPGF SPK 3.5 (Réseaux enterrés).
- 85: Source / hypothèse : Tableau de limites 5 (Électricité) ; DPGF SPK 3.17.
- 86: Source / hypothèse : Limites de prestations 5.
- 87: Source / hypothèse : DPGF EIFFAGE 5.6.7 (ml) ; Limites de prestations 5.
- 88: Source / hypothèse : Limites de prestations 5 (Vidange - Eaux usées).
- 89: Source / hypothèse : Limites de prestations 5.
- 90: Source / hypothèse : Limites de prestations 5.

| ID | WBS | Task | Type | Duration | Start | Finish | Predecessors | Total slack | Free slack | Constraint | Lot |
| --- | --- | --- | --- | --- | --- | --- | --- | --- | --- | --- | --- |
| 91 | 8 | **8. CUVE B2 620 m³ (SPK) - INTERFACES** |  | 23d | 2026-12-30 | 2027-02-01 |  |  |  |  |  |
| 92 | 8.1 | [ATSI] Livraison de la cuve sur site |  | 2d | 2026-12-30 | 2026-12-31 | 62 | 3d |  |  | SPK |
| 93 | 8.2 | [ATSI] Implantation et montage de la cuve boulonnée |  | 7d | 2027-01-07 | 2027-01-15 | 63, 92 |  |  | start no earlier than 2027-01-04 | SPK |
| 94 | 8.3 | [ATSI] Clapet anti-pollution type EA sur l'arrivée eau de ville DN65 + vers EU + vanne de contre-barrage |  | 1d | 2027-01-18 | 2027-01-18 | 93 | 4d |  |  | SPK |
| 95 | 8.3 | [ATSI] Poche PVC, toit autoportant, échelle, équipements de la cuve |  | 5d | 2027-01-18 | 2027-01-22 | 93 |  |  |  | SPK |
| 96 | 8.4 | [EIFFAGE] Joint ciment/Silicone périphérique autour de la cornière de fixation de la cuve |  | 1d | 2027-01-18 | 2027-01-18 | 93 | 4d |  |  | EIFFAGE |
| 97 | 8.5 | [ATSI] Remplissage de la cuve (<= 36 h) + test d'étanchéité |  | 3d | 2027-01-25 | 2027-01-27 | 95, 96, 89, 94 |  |  |  | SPK |
| 98 | 8.6 | [ATSI] Essais + REMISE EN SERVICE de la source B2 (fin de l'indisponibilité de la B2) |  | 3d | 2027-01-28 | 2027-02-01 | 97, 68, 79, 83, 70, 71, 72, 74, 84 |  |  |  | SPK |
| 99 | 9 | **9. BRISE-VUE : CHARPENTE, BARDAGE BOIS, PORTE** |  | 10d | 2027-01-28 | 2027-02-10 |  | 1d |  |  |  |
| 100 | 9.1 | [EIFFAGE] Montage charpente métallique brise-vue (poteaux, pannes, contreventement) |  | 4d | 2027-01-28 | 2027-02-02 | 97 | 1d |  |  | EIFFAGE |
| 101 | 9.2 | [EIFFAGE] Sous-construction du bardage (profils oméga acier galvanisé sur poteaux) |  | 3d | 2027-02-01 | 2027-02-03 | 100SS+2d | 1d |  |  | EIFFAGE |
| 102 | 9.3 | [EIFFAGE] Lames de bardage bois douglas |  | 6d | 2027-02-03 | 2027-02-10 | 101SS+2d | 1d |  |  | EIFFAGE |
| 103 | 9.4 | [EIFFAGE] Pose porte d'accès cuve B2 (ferme-porte, barre anti-panique, serrure compatible site) |  | 1d | 2027-02-04 | 2027-02-04 | 101 | 1d |  |  | EIFFAGE |
| 104 | 10 | **10. VOIRIES ET ESPACES VERTS - REMISE EN ÉTAT** |  | 39d | 2026-12-16 | 2027-02-10 |  | 1d |  |  |  |
| 105 | 10.1 | [EIFFAGE] Remise en place des bordures béton (joints résistants UV et hydrocarbures) |  | 1d | 2026-12-16 | 2026-12-16 | 86, 6 | 36d | 17d |  | EIFFAGE |
| 106 | 10.2 | [EIFFAGE] Réfection voie technique |  | 3d | 2027-01-13 | 2027-01-15 | 105, 80 | 19d | 18d |  | EIFFAGE |
| 107 | 10.3 | [EIFFAGE] Dépose des pistes d'accès chantier + évacuation + reprofilage |  | 1d | 2027-02-03 | 2027-02-03 | 100, 90, 75, 80 | 5d |  |  | EIFFAGE |
| 108 | 10.4 | [EIFFAGE] Mouvements de terres, nivellement espaces verts + apport terre végétale 0,30 m mini |  | 2d | 2027-02-05 | 2027-02-08 | 103 | 1d |  |  | EIFFAGE |
| 109 | 10.5 | [EIFFAGE] Préparation avant engazonnement |  | 1d | 2027-02-09 | 2027-02-09 | 108 | 1d |  |  | EIFFAGE |
| 110 | 10.6 | [EIFFAGE] Engazonnement |  | 1d | 2027-02-10 | 2027-02-10 | 109 | 1d |  |  | EIFFAGE |
| 111 | 10.7 | [EIFFAGE] Réfection des cheminements de chantier + nettoyage piste cyclable |  | 1d | 2027-02-04 | 2027-02-04 | 107 | 5d | 4d |  | EIFFAGE |
| 112 | 10.8 | [EIFFAGE] Curage + contrôle caméra des réseaux EU en fin de travaux |  | 1d | 2027-02-04 | 2027-02-04 | 90, 107 | 5d | 4d |  | EIFFAGE |
| 113 | 11.2 | [EIFFAGE] DOE | milestone | 0d | 2027-02-10 | 2027-02-10 | 110, 111, 106, 112, 102, 103 | 1d |  |  | EIFFAGE |
| 114 | 11.3 | FIN DES TRAVAUX EIFFAGE | milestone | 0d | 2027-02-10 | 2027-02-10 | 110 | 1d |  |  | EIFFAGE |

Notes:
- 92: Source / hypothèse : CCTP SPK 3.5.4 b.
- 93: Source / hypothèse : DPGF SPK 3.5 (Réserve d'eau). Durée estimée.
- 94: Source / hypothèse : DPGF SPK 3.5 (Systèmes d'essai). Nécessaire au remplissage de la cuve.
- 96: Source / hypothèse : DPGF EIFFAGE 5.8.1 (ml) ; Limites de prestations 4.
- 97: Source / hypothèse : CCTP SPK 3.5.4 b. (remplissage en 36 h maximum). Évacuation EU du trop-plein nécessaire.
- 98: Source / hypothèse : Jalon de fin d'indisponibilité de la source B2.
- 100: Source / hypothèse : DPGF EIFFAGE 5.7.1 ; Limites de prestations 4. CCTP EIFFAGE 1 : cuve et réseaux avant brise-vue.
- 101: Source / hypothèse : DPGF EIFFAGE 5.9.1 (m²). Durée estimée.
- 102: Source / hypothèse : DPGF EIFFAGE 5.9.2 (m²). Hypothèse ~40 m²/jour.
- 103: Source / hypothèse : DPGF EIFFAGE 5.9.3.
- 105: Source / hypothèse : DPGF EIFFAGE 5.10.3 (ml).
- 106: Source / hypothèse : DPGF EIFFAGE 5.10.4 (m²) ; Limites de prestations 6.
- 107: Source / hypothèse : CCTP EIFFAGE 5.3.3.
- 108: Source / hypothèse : Limites de prestations 6.
- 109: Source / hypothèse : DPGF EIFFAGE 5.10.1.
- 110: Source / hypothèse : DPGF EIFFAGE 5.10.2 (m²). Contrôle à 1 mois / tonte à 15 j hors planning.
- 111: Source / hypothèse : Limites de prestations 6.
- 112: Source / hypothèse : Limites de prestations 5.
- 113: Source / hypothèse : Limites : DOE chacun pour son lot ; CCTP EIFFAGE 2.3.7.

| ID | WBS | Task | Duration | Start | Finish | Predecessors | Total slack | Free slack | Lot |
| --- | --- | --- | --- | --- | --- | --- | --- | --- | --- |
| 115 | 12 | **11. ÉLECTRICITÉ, ALARMES, MISE À LA TERRE ET PEINTURE (ATSI)** | 55d | 2026-11-06 | 2027-01-26 |  | 12d |  |  |
| 116 | 12.1 | [ATSI] Armoire électrique du local source + câblage des équipements sprinkleurs + raccordement du tableau d'alarme | 5d | 2026-11-06 | 2026-11-13 | 18 | 45d | 8d | SPK |
| 117 | 12.2 | [ATSI] Tresses de mise à la terre des équipements + nourrice des postes (raccord à la boucle de terre du radier EIFFAGE) | 2d | 2027-01-25 | 2027-01-26 | 56, 95 | 12d |  | SPK |
| 118 | 12.3 | [ATSI] Report des alarmes créées + vérification de toutes les alarmes | 3d | 2026-12-02 | 2026-12-04 | 116, 74, 21 | 37d |  | SPK |
| 119 | 12.4 | [ATSI] Peinture des réseaux apparents (raccords mécaniques compris) | 3d | 2026-12-17 | 2026-12-21 | 13, 19, 84 | 28d |  | SPK |
| 120 | 13 | **12. ESSAIS, MISE EN SERVICE ET DOE (ATSI)** | 47d | 2026-12-07 | 2027-02-11 |  |  |  |  |
| 121 | 13.1 | [ATSI] Réglage des seuils de démarrage des sources (NF EN 12845) + essais des sources conservées | 2d | 2027-02-02 | 2027-02-03 | 98 |  |  | SPK |
| 122 | 13.2 | [ATSI] Identification du matériel et des réseaux (pochoir) + étiquetage | 2d | 2026-12-22 | 2026-12-23 | 119 | 28d |  | SPK |
| 123 | 13.3 | [ATSI] Vérifications, tests et contrôles des postes de contrôle, alarmes et points F | 3d | 2026-12-07 | 2026-12-09 | 26, 118 | 37d |  | SPK |
| 124 | 13.4 | [ATSI] Levée des remarques du dernier rapport semestriel Q1 (+ remarques complémentaires) | 3d | 2026-12-10 | 2026-12-14 | 123 | 37d |  | SPK |
| 125 | 13.5 | [ATSI] Mise en service, séance de formation et d'instruction + pièces de rechange | 2d | 2027-02-04 | 2027-02-05 | 121, 122, 123 |  |  | SPK |
| 126 | 13.6 | [ATSI] DOE du lot sprinklage (plans de récolement, notices, PV d'essais) | 4d | 2027-02-08 | 2027-02-11 | 124, 125 |  |  | SPK |
| 127 | 13.7 | [ATSI] Nettoyage + repli de la base vie et de la clôture ATSI | 2d | 2027-02-08 | 2027-02-09 | 125 | 2d |  | SPK |

Notes:
- 116: Source / hypothèse : DPGF SPK 3.17. Durée estimée.
- 117: Source / hypothèse : DPGF SPK 3.17 ; tableau de limites 3.
- 118: Source / hypothèse : DPGF SPK 3.16.
- 119: Source / hypothèse : DPGF SPK 3.18.
- 121: Source / hypothèse : Ordre repris du calendrier prévisionnel (lot SPK) - n° 40 Mise en service et essai source B2 ; DPGF SPK 3.5 et 3.22.
- 122: Source / hypothèse : DPGF SPK 3.22 ; CCTP SPK 3.19.
- 123: Source / hypothèse : DPGF SPK 3.22.
- 124: Source / hypothèse : DPGF SPK 3.11. Durée estimée.
- 125: Source / hypothèse : DPGF SPK 3.22.
- 126: Source / hypothèse : DPGF SPK 3.1.2 ; tableau de limites 3 (DOE chacun pour son lot).
- 127: Source / hypothèse : Tableau de limites 1 et 2.
