# 26_083 DECATHLON CAMPUS - Phase 1 - GO/VRD/CM/Bardage + SPRINKLAGE

Schedule from MS Project XML, 2026-11-02 to 2027-08-09, status date 2026-11-02.
Planning détaillé Phase 1 (2026) - Lot Gros Œuvre / VRD / CM / Bardage et Lot Sprinklage
Decathlon Campus - Villeneuve d'Ascq

## Calendars

- Standard (lun-ven, jours fériés FR): Mon-Fri 08:00-12:00, 13:00-17:00; Sat-Sun off. Exceptions (off unless hours are given): 2026-11-11 (Armistice 1918), 2026-12-25 (Noël), 2027-01-01 (Jour de l'an), 2027-03-29 (Lundi de Pâques), 2027-05-06 (Ascension), 2027-05-17 (Lundi de Pentecôte), 2027-07-14 (Fête nationale).

## Schedule

| ID | WBS | Task | Type | Duration | Start | Finish | Predecessors | Lot |
| --- | --- | --- | --- | --- | --- | --- | --- | --- |
| 1 | 1 | **1. JALONS** |  | 1d | 2026-11-02 | 2026-11-02 |  |  |
| 2 | 1.1 | DÉMARRAGE PHASE 1 (OS) - date modifiable via Informations sur le projet | milestone | 0d | 2026-11-02 | 2026-11-02 |  | MOA |
| 3 | 2 | **2. PRÉPARATION - ÉTUDES, VALIDATIONS, APPROVISIONNEMENTS** |  | 80d | 2026-11-02 | 2027-02-24 |  |  |
| 4 | 2.1 | **2.1 Administratif / MOA** |  | 10d | 2026-11-02 | 2026-11-16 |  |  |
| 5 | 2.1.1 | [MOA] Repérage des réseaux enterrés existants (détection non intrusive, relevé NCA) |  | 5d | 2026-11-02 | 2026-11-06 | 2 | MOA |
| 6 | 2.1.2 | [MOA] Fourniture des notes de calcul du TGBT existant |  | 5d | 2026-11-02 | 2026-11-06 | 2 | MOA |
| 7 | 2.1.3 | [MOA] Dossier GN 13 - avant lancement des interventions (SPK/GO/VRD participent) |  | 10d | 2026-11-02 | 2026-11-16 | 2 | MOA |
| 8 | 2.1.4 | [SPK] Transmission de la certification APSAD de l'entreprise |  | 2d | 2026-11-02 | 2026-11-03 | 2 | SPK |
| 9 | 2.1.5 | [SPK] Coordination SPS - établissement du plan de prévention |  | 3d | 2026-11-02 | 2026-11-04 | 2 | SPK |
| 10 | 2.1.6 | [GO] Constat d'huissier avant travaux (site, voiries, végétation) |  | 2d | 2026-11-02 | 2026-11-03 | 2 | GO |
| 11 | 2.2 | **2.2 Études et validations lot SPRINKLAGE** |  | 30d | 2026-11-02 | 2026-12-14 |  |  |
| 12 | 2.2.1 | [SPK] Relevé des installations existantes + plans à jour (AutoCAD) |  | 5d | 2026-11-02 | 2026-11-06 | 2 | SPK |
| 13 | 2.2.2 | [SPK] Analyse électrochimique de l'eau |  | 5d | 2026-11-02 | 2026-11-06 | 2 | SPK |
| 14 | 2.2.3 | [SPK] Études d'exécution, calculs hydrauliques (NPSH, volume utile réserve), reprise des plans |  | 15d | 2026-11-09 | 2026-11-30 | 12 | SPK |
| 15 | 2.2.4 | [SPK] Transmission au GO des fiches techniques cuve : charges, radier, joint cornière, pièces de scellement |  | 3d | 2026-12-01 | 2026-12-03 | 14 | SPK |
| 16 | 2.2.5 | [SPK] Schémas et notes électriques (armoires, alimentation pompes, GTB/alarmes) |  | 5d | 2026-12-01 | 2026-12-07 | 14, 6 | SPK |
| 17 | 2.2.6 | [SPK] Visa Bureau de contrôle + BET ABSIX des documents d'exécution |  | 10d | 2026-12-01 | 2026-12-14 | 14 | SPK |
| 18 | 2.2.7 | [SPK] Remise au MOA du planning prévisionnel de gardiennage (>= 5 semaines avant 1re coupure) |  | 1d | 2026-12-01 | 2026-12-01 | 14 | SPK |
| 19 | 2.3 | **2.3 Études et validations lot GROS ŒUVRE / VRD** |  | 53d | 2026-11-02 | 2027-01-18 |  |  |
| 20 | 2.3.1 | [GO] Plan d'installation de chantier + coordination avec SPK (base vie commune) |  | 3d | 2026-11-02 | 2026-11-04 | 2 | GO |
| 21 | 2.3.2 | [GO] Implantation par géomètre : PV d'implantation + niveaux NGF + traits de niveau |  | 3d | 2026-11-02 | 2026-11-04 | 2 | GO |
| 22 | 2.3.3 | [GO] Études d'exécution (PEO) : pieux, radier, charpente brise-vue, réseaux, descentes de charges, notes de calcul |  | 20d | 2026-12-04 | 2027-01-04 | 15 | GO |
| 23 | 2.3.4 | [GO] Mission G3 : validation fondations, étude de pompage/rabattement, contrôles |  | 10d | 2026-12-04 | 2026-12-17 | 15 | GO |
| 24 | 2.3.5 | [GO] Validation des PEO par Bureau de contrôle et MOE (G4) |  | 10d | 2027-01-05 | 2027-01-18 | 22, 23 | GO |
| 25 | 2.3.6 | [GO] Soumission pour approbation : grilles ventilation, bois bardage, porte (RAL), échantillons bordures |  | 5d | 2026-11-05 | 2026-11-12 | 20 | GO |

Notes:
- 2: Source / hypothèse : Modifier la date de début du projet : tout le planning se décalé automatiquement.
- 5: Source / hypothèse : Limites de prestations 1 ; CCTP SPK 3.5.4 : détection prévue par le MO avant travaux de réseaux enterrés. Durée estimée.
- 6: Source / hypothèse : Limites de prestations 3. Durée estimée.
- 7: Source / hypothèse : Limites de prestations 2 : MOA = X ; SPK/VRD/GO = P. Durée estimée.
- 8: Source / hypothèse : Limites de prestations 3.
- 9: Source / hypothèse : DPGF SPK - Frais de chantier.
- 10: Source / hypothèse : DPGF GO 5.1.1 ; CCTP GO 5.1.1 / 3.5.
- 12: Source / hypothèse : CCTP SPK 3.1.3. Durée estimée.
- 13: Source / hypothèse : DPGF SPK 3.1.3.
- 14: Source / hypothèse : DPGF SPK 3.1.2 ; CCTP SPK 1.17 (programme sous 8 jours). Durée estimée.
- 15: Source / hypothèse : Limites de prestations 4 (radier : SPK définit le principe, GO réalise) ; CCTP GO 4.7.4, 5.5.5, 5.8.1.
- 16: Source / hypothèse : Limites de prestations 3 ; DPGF SPK 3.17.
- 17: Source / hypothèse : CCTP SPK 1.x (visa 15 j max). Durée estimée.
- 18: Source / hypothèse : Limites de prestations 2 : demande minimum 5 semaines avant intervention.
- 20: Source / hypothèse : DPGF GO 5.1.2 ; CCTP GO 5.1.2.
- 21: Source / hypothèse : DPGF GO 5.2.2 / 5.2.3.
- 22: Source / hypothèse : DPGF GO 5.2.4 ; CCTP GO 3.2 / 5.2.4. Durée estimée.
- 23: Source / hypothèse : DPGF GO 5.2.5 ; CCTP GO 5.2.5. Durée estimée.
- 24: Source / hypothèse : CCTP GO 5.2.4 : travaux conditionnés à la validation des plans.
- 25: Source / hypothèse : CCTP GO 5.8.4, 5.9.2, 5.9.3, 5.10.3.

| ID | WBS | Task | Duration | Start | Finish | Predecessors | Lot |
| --- | --- | --- | --- | --- | --- | --- | --- |
| 26 | 2.4 | **2.4 Approvisionnements / fabrications** | 50d | 2026-12-15 | 2027-02-24 |  |  |
| 27 | 2.4.1 | [SPK] Commande + fabrication réserve aérienne boulonnée 620 m³ (cuve, poche PVC, toit, échelle) | 40d | 2026-12-15 | 2027-02-10 | 17 | SPK |
| 28 | 2.4.2 | [SPK] Commande + fabrication GMPD source B2 (360 m³/h - 90 mCE) | 50d | 2026-12-15 | 2027-02-24 | 17 | SPK |
| 29 | 2.4.3 | [SPK] Fourniture des pièces de scellement DN300 / DN200 / DN150 + échappement | 15d | 2026-12-15 | 2027-01-06 | 17 | SPK |
| 30 | 2.4.4 | [SPK] Approvisionnement canalisations fonte ductile DN300/DN200/DN150, vannes, accessoires, butées | 20d | 2026-12-15 | 2027-01-13 | 17 | SPK |
| 31 | 2.4.5 | [SPK] Approvisionnement électropompe source A, jockey, armoires, nourrices pressostatiques, clapet EA | 25d | 2026-12-15 | 2027-01-20 | 17 | SPK |
| 32 | 2.4.6 | [SPK] Approvisionnement grilles de ventilation haute et basse (local source A) | 10d | 2026-12-15 | 2026-12-29 | 17, 25 | SPK |
| 33 | 2.4.7 | [GO] Fourniture platines de pre-scellement et boîtes de réservation (poteaux brise-vue) | 10d | 2027-01-19 | 2027-02-01 | 24 | GO |
| 34 | 2.4.8 | [GO/CM] Fabrication charpente métallique brise-vue (profilés galvanisés, contreventement) | 25d | 2027-01-19 | 2027-02-22 | 24 | GO |
| 35 | 2.4.9 | [GO/Bardage] Approvisionnement bois douglas (séché 18 %), oméga galvanisés, quincaillerie inox | 15d | 2027-01-19 | 2027-02-08 | 24, 25 | GO |
| 36 | 2.4.10 | [GO] Fabrication porte d'accès cuve B2 (900 x 2100, 1 vantail) - serrure à commander via MOA | 20d | 2027-01-19 | 2027-02-15 | 24, 25 | GO |
| 37 | 3 | **3. INSTALLATION DE CHANTIER** | 8d | 2026-11-17 | 2026-11-26 |  |  |
| 38 | 3.1 | [SPK] Clôture de chantier, panneau de chantier, signalisation | 2d | 2026-11-17 | 2026-11-18 | 20, 7, 10, 9, 8 | SPK |
| 39 | 3.2 | [SPK] Base vie (25 pers., 2 bungalows réunion, ~100 m² stockage SPK) commune aux lots | 3d | 2026-11-19 | 2026-11-23 | 38 | SPK |
| 40 | 3.3 | [SPK] Raccordement fluides + évacuation de la base vie (eau, électricité, fosse toutes eaux) | 3d | 2026-11-24 | 2026-11-26 | 39 | SPK |
| 41 | 3.4 | [SPK] Armoire électrique de chantier + point d'eau près de la zone cuve | 2d | 2026-11-24 | 2026-11-25 | 39 | SPK |
| 42 | 3.5 | [SPK] Protection par bachage des équipements commerciaux et techniques existants | 1d | 2026-11-19 | 2026-11-19 | 38 | SPK |
| 43 | 3.6 | [GO] Pistes d'accès engins + plateforme de circulation sur géotextile classe 5 | 4d | 2026-11-19 | 2026-11-24 | 38, 21 | GO |
| 44 | 3.7 | [GO] Dépose et stockage des bordures béton (réemploi en fin de chantier) | 1d | 2026-11-19 | 2026-11-19 | 38, 21 | GO |
| 45 | 4 | **4. PHASAGE - DÉVOIEMENTS ET MISE HORS SERVICE SOURCE B2** | 136d | 2026-11-19 | 2027-06-03 |  |  |
| 46 | 4.1 | [GO] Piquetage/marquage et reconnaissance des réseaux existants dans l'emprise (DN100 AEP, DN150 incendie, EU/EV/EP/électricité/fibre) | 2d | 2026-11-19 | 2026-11-20 | 5, 38 | GO |
| 47 | 4.2 | [GO] Dévoiement réseau incendie DN150 + alimentation AEP/arrosage DN100 hors emprise radier (essais, DOE) | 8d | 2027-01-19 | 2027-01-28 | 46, 24, 7 | GO |
| 48 | 4.3 | [VRD] Dévoiement EU / EV / EP / électricité / fibre / arrosage si nécessaire (relevé NCA) | 3d | 2026-11-23 | 2026-11-25 | 46 | VRD |
| 49 | 4.4 | [SPK] Raccordements provisoires pour maintien de la protection sprinkleur de l'établissement | 4d | 2026-12-15 | 2026-12-18 | 17, 40 | SPK |
| 50 | 4.5 | [SPK] Consignation + vidange cuve source B2 et réseaux associés (mesures compensatoires actives) | 2d | 2027-01-29 | 2027-02-01 | 49, 47, 48, 18FS+25d, 24 | SPK |
| 51 | 4.6 | [SPK/MOA] Mesures compensatoires (renfort sécurité) + gardiennage pendant l'indisponibilité de la source B2 | 87d | 2027-01-29 | 2027-06-03 | 50SS, 170FF | SPK/MOA |

Notes:
- 27: Source / hypothèse : CCTP SPK 3.5.4 b. Délai de fabrication estimé à 8 semaines : À CONFIRMER avec le fournisseur (APRO/SFR).
- 28: Source / hypothèse : CCTP SPK 3.5.4 à. Délai estimé à 10 semaines : À CONFIRMER fournisseur.
- 29: Source / hypothèse : Limites de prestations 4 (source B2, local GE) : fourniture SPK.
- 30: Source / hypothèse : CCTP SPK 3.5.4 / 3.5.5.
- 31: Source / hypothèse : DPGF SPK 3.5.
- 32: Source / hypothèse : Limites de prestations 4 : fourniture et pose SPK.
- 33: Source / hypothèse : DPGF GO 5.5.4.
- 34: Source / hypothèse : DPGF GO 5.7.1 (kg). Durée estimée.
- 35: Source / hypothèse : DPGF GO 5.9.1 / 5.9.2.
- 36: Source / hypothèse : DPGF GO 5.9.3 ; CCTP GO 5.9.3.
- 38: Source / hypothèse : Limites de prestations 1 ; CCTP GO 5.1.3-5.1.5. Démarrage conditionné au dossier GN13.
- 39: Source / hypothèse : Limites de prestations 1 ; CCTP SPK 1.19.
- 40: Source / hypothèse : Limites de prestations 1 ; DPGF GO 5.1.6 (abonnements MOA).
- 41: Source / hypothèse : Limites de prestations 1.
- 42: Source / hypothèse : Limites de prestations 2 ; CCTP SPK 3.1.6.
- 43: Source / hypothèse : DPGF GO 5.3.3 ; Limites de prestations 1 (si nécessaire).
- 44: Source / hypothèse : DPGF GO 5.3.4.
- 46: Source / hypothèse : CCTP GO 5.6.2 ; Limites de prestations 1.
- 47: Source / hypothèse : DPGF GO 5.6.2 ; Limites de prestations 1. Continuité du réseau incendie à maintenir (coupure ponctuelle validée MOA).
- 48: Source / hypothèse : Limites de prestations 1 (si nécessaire).
- 49: Source / hypothèse : Limites de prestations 2 ; DPGF SPK 3.1.4 ; CCTP SPK 3.1.4. Durée estimée.
- 50: Source / hypothèse : Limites de prestations 1/2. Décalage 25 jours ouvrés = 5 semaines de préavis gardiennage.
- 51: Source / hypothèse : Limites de prestations 2 ; DPGF SPK 3.1.4 / 3.1.5. Hamac : durée = vidange → remise en service B2.

| ID | WBS | Task | Duration | Start | Finish | Predecessors | Lot |
| --- | --- | --- | --- | --- | --- | --- | --- |
| 52 | 5 | **5. DÉPOSES ET DÉMOLITIONS - SOURCE B2 / LOCAUX** | 28d | 2027-01-19 | 2027-02-25 |  |  |
| 53 | 5.1 | **5.1 Cuve B2 et enclos brise-vue** | 28d | 2027-01-19 | 2027-02-25 |  |  |
| 54 | 5.1.1 | [GO] Dépose brise-vue bois + charpente métallique support + grille d'accès/porte grillagée (évacuation) | 4d | 2027-01-19 | 2027-01-22 | 38, 43, 24, 7 | GO |
| 55 | 5.1.2 | [SPK] Dépose et évacuation de la réserve source B existante + équipements et réseaux associés | 6d | 2027-02-02 | 2027-02-09 | 50, 54 | SPK |
| 56 | 5.1.3 | [VRD] Dépose des réseaux existants cuve B2 → local B2 → local A/GE (terrassement, évacuation, remblaiement) | 5d | 2027-02-10 | 2027-02-16 | 55, 50 | VRD |
| 57 | 5.1.4 | [GO] Démolition du radier existant + évacuation des gravats (maîtrise poussières) | 4d | 2027-02-10 | 2027-02-15 | 55 | GO |
| 58 | 5.1.5 | [GO] Étêtage des fondations existantes à -1,00 m du niveau plateforme + évacuation | 3d | 2027-02-16 | 2027-02-18 | 57 | GO |
| 59 | 5.1.6 | [GO] Relevé géomètre + plan de récolement des ouvrages enterrés, adaptation des fondations | 2d | 2027-02-19 | 2027-02-22 | 58 | GO |
| 60 | 5.1.7 | [GO] (OPTION 5.4.4) Purge des fondations profondes existantes (-80 cm sous niveau final) + remblai sablo-graveleux | 3d | 2027-02-23 | 2027-02-25 | 59 | GO |
| 61 | 5.2 | **5.2 Local source B2 et local GE** | 7d | 2027-02-02 | 2027-02-10 |  |  |
| 62 | 5.2.1 | [SPK] Dépose GMPD source B2 + équipements, tuyauteries aspiration/refoulement (démontage et livraison du GMPD démonté) | 3d | 2027-02-02 | 2027-02-04 | 50 | SPK |
| 63 | 5.2.2 | [SPK] Dépose des réseaux existants local GE | 2d | 2027-02-02 | 2027-02-03 | 50 | SPK |
| 64 | 5.2.3 | [GO] Dépose des pièces de scellement existantes local B2 + reprise des percements (DN300, DN200, DN150, échappement) | 3d | 2027-02-05 | 2027-02-09 | 62 | GO |
| 65 | 5.2.4 | [GO] Démolition contrôlée réservation dalle basse et soubassement local GE (sciage, mise à nu des armatures) | 3d | 2027-02-04 | 2027-02-08 | 63 | GO |
| 66 | 5.2.5 | [GO] Dépose pièce de scellement existante local GE + création du percement DN200 | 2d | 2027-02-09 | 2027-02-10 | 65 | GO |
| 67 | 6 | **6. FONDATIONS ET RADIER - CUVE B2** | 34d | 2027-02-26 | 2027-04-15 |  |  |
| 68 | 6.1 | [GO] Plateforme de travail pour pieux (portance EV2 > 50 MPa, géotextile) | 3d | 2027-02-26 | 2027-03-02 | 59, 60 | GO |
| 69 | 6.2 | [GO] Épuisement des eaux / rabattement de nappe (nappe ~ 27,4 NGF) pendant les fondations | 24d | 2027-02-26 | 2027-04-01 | 68SS, 83FF | GO |
| 70 | 6.3 | [GO] Pieux à tarière creuse (amenée/repli du matériel, forage, armatures, béton) - ~20 à 25 u. à confirmer PEO | 5d | 2027-03-03 | 2027-03-09 | 68, 24, 59 | GO |
| 71 | 6.4 | [GO] Stockage sur polyane et évacuation des terres et boues de forage + nettoyage voies | 4d | 2027-03-04 | 2027-03-09 | 70SS+1d | GO |
| 72 | 6.5 | [GO] Essais et contrôle des pieux (DTU 13.2 / NF P94-262) | 2d | 2027-03-10 | 2027-03-11 | 70 | GO |
| 73 | 6.6 | [GO] Recépage des pieux | 2d | 2027-03-10 | 2027-03-11 | 70 | GO |
| 74 | 6.7 | [GO] Terrassement fouille radier + substitution remblais de portance + fond de forme (débord 1 m) | 3d | 2027-03-12 | 2027-03-16 | 73 | GO |
| 75 | 6.8 | [GO] Puisard de trop-plein de la cuve (terrassement, béton de propreté, grille circulable) | 3d | 2027-03-17 | 2027-03-19 | 74 | GO |
| 76 | 6.9 | [GO] Béton de propreté (e >= 5 cm) sous radier | 1d | 2027-03-17 | 2027-03-17 | 74 | GO |
| 77 | 6.10 | [GO] Boucle de terre fond de fouille (câble nu 25 mm2, R <= 3 ohms) + attentes de terre cuve | 2d | 2027-03-18 | 2027-03-19 | 76 | GO |
| 78 | 6.11 | [GO] Pose massifs, platines et boîtes de réservation de pre-scellement (poteaux brise-vue) | 2d | 2027-03-18 | 2027-03-19 | 76, 33 | GO |
| 79 | 6.12 | [GO] Couche de forme + sablon d'égalisation + film polyéthylène | 2d | 2027-03-18 | 2027-03-19 | 76 | GO |
| 80 | 6.13 | [GO] Pose et incorporation de la tuyauterie d'aspiration DN300 sous radier (fournie SPK) + validation implantation SPK/GO | 2d | 2027-03-22 | 2027-03-23 | 79, 29, 30 | GO/SPK |
| 81 | 6.14 | [GO] Drain périphérique / gestion des eaux autour du radier (si G2PRO l'impose) | 2d | 2027-03-22 | 2027-03-23 | 79 | GO |
| 82 | 6.15 | [GO] Ferraillage radier (TS + HA), attentes pieux, réservations, fourreaux, coffrage de rives et bêches périphériques | 5d | 2027-03-24 | 2027-03-31 | 80, 78, 77, 81 | GO |
| 83 | 6.16 | [GO] Coulage du radier béton C25/30 XC2 XF1 (parement soigné, circulations brossées antidérapantes) | 1d | 2027-04-01 | 2027-04-01 | 82 | GO |
| 84 | 6.17 | [GO] Durcissement du radier avant chargement de la cuve (délai à valider BET / bureau de contrôle) | 10d | 2027-04-02 | 2027-04-15 | 83 | GO |

Notes:
- 54: Source / hypothèse : DPGF GO 5.4.1 ; Limites de prestations 4 / Travaux réserves d'eau B2. Fait avant la vidange pour réduire l'indisponibilité.
- 55: Source / hypothèse : DPGF SPK 3.5 ; CCTP GO 5.4.2 (par lot SPK). Durée estimée (cuve acier 405 m³).
- 56: Source / hypothèse : DPGF GO 5.6.3 ; Limites de prestations 1 (dépose réseaux depuis cuve B2 jusqu'au local source A et B2 = VRD).
- 57: Source / hypothèse : DPGF GO 5.4.3 (ens.). Durée estimée.
- 58: Source / hypothèse : Limites de prestations 4.
- 59: Source / hypothèse : Limites de prestations 4 ; CCTP GO 5.4.4.
- 60: Source / hypothèse : DPGF GO 5.4.4 OPTIONNEL : mode de fondation existant inconnu. Mettre la durée à 0 si l'option n'est pas retenue.
- 62: Source / hypothèse : DPGF SPK 3.5 (Source B2 - GMPD).
- 63: Source / hypothèse : Limites de prestations Travaux local GE.
- 64: Source / hypothèse : DPGF GO 5.8.2 ; Limites de prestations Travaux source B2.
- 65: Source / hypothèse : DPGF GO 5.8.5 ; Limites de prestations Travaux local GE.
- 66: Source / hypothèse : Limites de prestations Travaux local GE.
- 68: Source / hypothèse : Limites de prestations 4 ; DPGF GO 5.3.3.
- 69: Source / hypothèse : DPGF GO 5.3.7 ; CCTP GO 4.7.2 ; Limites de prestations 3. Hamac plateforme → coulage radier.
- 70: Source / hypothèse : DPGF GO 5.5.1 (u) ; CCTP GO 5.5.1 ; G2PRO Fondasol. Hypothèse ~5 pieux/jour.
- 71: Source / hypothèse : DPGF GO 5.5.2 / 5.3.8.
- 72: Source / hypothèse : CCTP GO 5.5.1.
- 73: Source / hypothèse : CCTP GO 5.5.1.
- 74: Source / hypothèse : DPGF GO 5.3.5 / 5.3.6 (m³).
- 75: Source / hypothèse : DPGF GO 5.6.6 ; CCTP GO 5.6.6.
- 76: Source / hypothèse : DPGF GO 5.5.3.
- 77: Source / hypothèse : DPGF GO 5.3.9 ; Limites de prestations 3 (boucle de terre du radier = GO).
- 78: Source / hypothèse : DPGF GO 5.5.4.
- 79: Source / hypothèse : CCTP GO 5.5.5.
- 80: Source / hypothèse : Limites de prestations 4 : GO réalise, SPK accompagne (P) et valide l'implantation avant coulée.
- 81: Source / hypothèse : Limites de prestations 4 (conditionnel).
- 82: Source / hypothèse : DPGF GO 5.5.5 (m³). Durée estimée (radier ~ Ø 14 m).
- 83: Source / hypothèse : DPGF GO 5.5.5 ; CCTP GO 4.4.
- 84: Source / hypothèse : Hypothèse 10 jours ouvrés. Passer à 20 jours si résistance à 28 j exigée.

| ID | WBS | Task | Duration | Start | Finish | Predecessors | Lot |
| --- | --- | --- | --- | --- | --- | --- | --- |
| 85 | 7 | **7. RÉSERVE D'EAU AÉRIENNE B2 (620 m³)** | 71d | 2027-02-11 | 2027-05-25 |  |  |
| 86 | 7.1 | [SPK] Livraison cuve + équipements sur site, réception, stockage | 2d | 2027-02-11 | 2027-02-12 | 27, 39 | SPK |
| 87 | 7.2 | [SPK] Implantation cuve, pose cornière de fixation, contrôle planéité | 1d | 2027-04-16 | 2027-04-16 | 84, 86 | SPK |
| 88 | 7.3 | [SPK] Montage cuve boulonnée Ø 12,48 m x H 5,74 m | 10d | 2027-04-19 | 2027-04-30 | 87 | SPK |
| 89 | 7.4 | [SPK] Pose feutre géotextile + poche PVC (garantie décennale) | 3d | 2027-05-03 | 2027-05-05 | 88 | SPK |
| 90 | 7.5 | [SPK] Toit autoportant galvanisé, échelle à crinoline, plateforme, trappe cadenassable | 4d | 2027-05-07 | 2027-05-12 | 89 | SPK |
| 91 | 7.6 | [SPK] Équipements : trop-plein DN150, vidange DN80, remplissage/retour essai DN150 disconnecté, aspiration DN300 anti-vortex, jauge, épingle chauffante, chambre de disconnexion, alarmes | 5d | 2027-05-07 | 2027-05-13 | 89 | SPK |
| 92 | 7.7 | [GO] Joint ciment périphérique autour de la cornière de fixation de la cuve | 1d | 2027-05-07 | 2027-05-07 | 89 | GO |
| 93 | 7.8 | [SPK] Réseaux EU aériens : trop-plein et vidange (DN200), sorties à 1,00 m du nu cuve | 2d | 2027-05-14 | 2027-05-18 | 91 | SPK |
| 94 | 7.9 | [SPK] Clapet anti-pollution type EA sur arrivée eau de ville DN65 + vers EU + vanne de contre-barrage | 2d | 2027-05-07 | 2027-05-10 | 89, 31 | SPK |
| 95 | 7.10 | [SPK] Remplissage de la cuve (<= 36 h) + test d'étanchéité | 3d | 2027-05-21 | 2027-05-25 | 91, 90, 92, 94, 111 | SPK |
| 96 | 8 | **8. RÉSEAUX ENTERRÉS / TRANCHÉES COMMUNES** | 65d | 2027-02-17 | 2027-05-21 |  |  |
| 97 | 8.1 | **8.1 Tranchée 1 - cuve B2 ↔ local source B2** | 10d | 2027-04-02 | 2027-04-15 |  |  |
| 98 | 8.1.1 | [VRD] Ouverture tranchée commune (~ 25 ml estimés) | 3d | 2027-04-02 | 2027-04-06 | 83, 56, 47 | VRD |
| 99 | 8.1.2 | [VRD] Fourreaux électriques 2 x Ø90 (local B2 / réserve d'eau) + chambre de tirage | 2d | 2027-04-07 | 2027-04-08 | 98 | VRD |
| 100 | 8.1.3 | [SPK] Pose aspiration fonte DN300 + remplissage/retour essai DN150 (butées béton, tiges filetées) de la cuve à la pièce de scellement | 4d | 2027-04-07 | 2027-04-12 | 98, 30, 80, 116 | SPK |
| 101 | 8.1.4 | [SPK] Épreuves hydrauliques des réseaux enterrés tranchée 1 | 1d | 2027-04-13 | 2027-04-13 | 100 | SPK |
| 102 | 8.1.5 | [VRD] Grillage avertisseur + remblaiement et compactage tranchée 1 (95 % OPM) | 2d | 2027-04-14 | 2027-04-15 | 101, 99 | VRD |
| 103 | 8.2 | **8.2 Tranchée 2 - local source B2 ↔ local GE / source A** | 13d | 2027-02-17 | 2027-03-05 |  |  |
| 104 | 8.2.1 | [VRD] Ouverture tranchée commune (~ 60 ml estimés, sciage voirie lourde + espace vert) | 4d | 2027-02-17 | 2027-02-22 | 56, 47 | VRD |
| 105 | 8.2.2 | [VRD] Fourreaux électriques 2 x Ø90 (local GE / local B2) + chambre de tirage | 2d | 2027-02-23 | 2027-02-24 | 104 | VRD |
| 106 | 8.2.3 | [SPK] Pose refoulement fonte DN200 de la pièce de scellement B2 jusqu'au local GE (butées béton) | 5d | 2027-02-23 | 2027-03-01 | 104, 30, 116, 117 | SPK |
| 107 | 8.2.4 | [SPK] Épreuves hydrauliques du refoulement enterré tranchée 2 | 1d | 2027-03-02 | 2027-03-02 | 106 | SPK |
| 108 | 8.2.5 | [VRD] Grillage avertisseur + remblaiement et compactage tranchée 2 | 3d | 2027-03-03 | 2027-03-05 | 107, 105 | VRD |

Notes:
- 86: Source / hypothèse : CCTP SPK 3.5.4 b.
- 87: Source / hypothèse : CCTP SPK 3.5.4 b.
- 88: Source / hypothèse : DPGF SPK 3.5 (Réserve d'eau). Durée estimée.
- 89: Source / hypothèse : CCTP SPK 3.5.4 b.
- 90: Source / hypothèse : CCTP SPK 3.5.4 b.
- 91: Source / hypothèse : DPGF SPK 3.5 ; Limites de prestations 4 (réserve aérienne y c. équipements).
- 92: Source / hypothèse : DPGF GO 5.8.1 (ml) ; Limites de prestations 4.
- 93: Source / hypothèse : Limites de prestations 5 (Vidange - Eaux usées).
- 94: Source / hypothèse : DPGF SPK 3.5 (Systèmes d'essai).
- 95: Source / hypothèse : CCTP SPK 3.5.4 b. (remplissage en 36 h maximum). Évacuation EU du trop-plein nécessaire.
- 98: Source / hypothèse : DPGF GO 5.6.1 (ml) ; Limites de prestations 5. Longueur estimée : à relever sur plan.
- 99: Source / hypothèse : DPGF GO 5.6.4 / 5.6.5 ; Limites de prestations 5 (Électricité).
- 100: Source / hypothèse : Limites de prestations 5 : tableau mentionne remplissage DN200 / retour essai DN150 (CCTP : DN150).
- 101: Source / hypothèse : DPGF SPK 3.22.
- 102: Source / hypothèse : Limites de prestations 5 : remblaiement VRD après pose SPK.
- 104: Source / hypothèse : DPGF GO 5.6.1 / 5.3.2 ; Limites de prestations 5. Longueur estimée.
- 105: Source / hypothèse : DPGF GO 5.6.4 / 5.6.5.
- 106: Source / hypothèse : Limites de prestations 5 (Liaison local B2 ↔ local GE).
- 107: Source / hypothèse : DPGF SPK 3.22.
- 108: Source / hypothèse : Limites de prestations 5.

| ID | WBS | Task | Duration | Start | Finish | Predecessors | Lot |
| --- | --- | --- | --- | --- | --- | --- | --- |
| 109 | 8.3 | **8.3 Tranchée 3 - EU (puisard trop-plein → regard existant)** | 42d | 2027-03-22 | 2027-05-21 |  |  |
| 110 | 8.3.1 | [VRD] Tranchée + réseau de collecte extérieur EU PVC DN200 (puisard/vidange → regard existant), regard 500x500 | 4d | 2027-03-22 | 2027-03-25 | 75 | VRD |
| 111 | 8.3.2 | [VRD] Raccordement sur réseau EU existant (branchement), boîte de branchement, reprise des sorties EU à 1,00 m | 2d | 2027-05-19 | 2027-05-20 | 110, 93 | VRD |
| 112 | 8.3.3 | [VRD] Remblaiement et compactage tranchée EU | 1d | 2027-05-21 | 2027-05-21 | 111 | VRD |
| 113 | 8.4 | **8.4 Électricité - réseaux enterrés** | 4d | 2027-04-09 | 2027-04-14 |  |  |
| 114 | 8.4.1 | [SPK] Réseau aérien + sortie fourreau à 1 m du nu bâtiment, câble TGBT → pénétration, câbles reports d'alarme (tirage) | 4d | 2027-04-09 | 2027-04-14 | 99, 105, 16 | SPK |
| 115 | 9 | **9. LOCAL SOURCE B2 / LOCAL GE - SCELLEMENTS ET ÉQUIPEMENTS** | 24d | 2027-02-10 | 2027-03-15 |  |  |
| 116 | 9.1 | [GO] Pose nouvelles pièces de scellement local B2 (DN300, DN200, DN150, échappement), reprise mortier, étanchéité, calfeutrement | 3d | 2027-02-10 | 2027-02-12 | 64, 29 | GO |
| 117 | 9.2 | [GO] Pose nouvelle pièce de scellement refoulement DN200 local GE + calfeutrement | 2d | 2027-02-11 | 2027-02-12 | 66, 29 | GO |
| 118 | 9.3 | [SPK] Fourniture et installation du nouveau GMPD B2 (équipements, échappement/silencieux, réservoir fuel 500 L double peau) | 6d | 2027-02-25 | 2027-03-04 | 28, 116, 62 | SPK |
| 119 | 9.4 | [SPK] Tuyauteries DN300 aspiration / DN200 refoulement dans le local B2 + canne d'essai DN150 | 5d | 2027-03-05 | 2027-03-11 | 118, 116, 30 | SPK |
| 120 | 9.5 | [SPK] Remplacement nourrice pressostatique source B2 + pressostats | 2d | 2027-03-12 | 2027-03-15 | 119 | SPK |
| 121 | 9.6 | [SPK] Étalonnage du débitmètre électromagnétique source B2 (écart > 5 %) | 1d | 2027-03-12 | 2027-03-12 | 119 | SPK |
| 122 | 9.7 | [SPK] Armoire de commande/démarrage GMPD, câblage, raccordement armoire générale | 3d | 2027-03-05 | 2027-03-09 | 118, 16 | SPK |
| 123 | 9.8 | [SPK] Ventilation mécanique avec clapet coupe-feu (sortie existante réutilisée) + calfeutrement coupe-feu des passages | 3d | 2027-02-15 | 2027-02-17 | 116 | SPK |
| 124 | 9.9 | [SPK] Sonde de température + thermostat reportés en alarme, BAES, prolongation protection sprinkleur dans l'entrée | 3d | 2027-02-18 | 2027-02-22 | 123 | SPK |
| 125 | 9.10 | [SPK] Affichages d'exploitation et étiquetage local B2 | 1d | 2027-02-23 | 2027-02-23 | 124 | SPK |
| 126 | 9.11 | [GO] Restauration couche de forme, dalle portée, soubassement et cuvelage local GE + durcisseur de dalle | 4d | 2027-03-02 | 2027-03-05 | 117, 106 | GO |
| 127 | 10 | **10. LOCAL SPRINKLEUR SOURCE A + POSTES** | 27d | 2026-12-15 | 2027-01-22 |  |  |
| 128 | 10.1 | [GO] Percement des voiles béton façade Nord : ventilation haute et basse + redressement des tableaux | 3d | 2027-01-19 | 2027-01-21 | 38, 24, 25 | GO |
| 129 | 10.2 | [SPK] Fourniture et pose des grilles de ventilation haute et basse | 1d | 2027-01-22 | 2027-01-22 | 128, 32 | SPK |
| 130 | 10.3 | [SPK] Flocage de la toiture coupe-feu 1 h (local source A) | 3d | 2026-12-15 | 2026-12-17 | 38, 17 | SPK |
| 131 | 10.4 | [SPK] Remplacement protection sprinkleur local A + postes (PC5 : CPE + vanne d'isolement, indicateur de passage d'eau), extension local eau glacée, gaine technique | 5d | 2026-12-15 | 2026-12-21 | 17, 42 | SPK |
| 132 | 10.5 | [SPK] Sonde de température reportée en alarme + contacts anti-intrusion (portes local sprinkleur, atelier, TGBT) | 3d | 2026-12-22 | 2026-12-24 | 131 | SPK |
| 133 | 10.6 | [SPK] Armoire de répartition équipements annexes + disjoncteur depuis TGBT | 3d | 2026-12-15 | 2026-12-17 | 16, 17 | SPK |
| 134 | 10.7 | [SPK] Affichages d'exploitation, étiquetage, BAPI, reprise peinture des canalisations du local | 3d | 2026-12-22 | 2026-12-24 | 131 | SPK |

Notes:
- 110: Source / hypothèse : DPGF GO 5.6.7 (ml) ; Limites de prestations 5.
- 111: Source / hypothèse : Limites de prestations 5.
- 112: Source / hypothèse : Limites de prestations 5.
- 114: Source / hypothèse : Limites de prestations 5 (Électricité).
- 116: Source / hypothèse : DPGF GO 5.8.3 ; Limites de prestations Travaux source B2.
- 117: Source / hypothèse : Limites de prestations Travaux local GE.
- 118: Source / hypothèse : DPGF SPK 3.5 (Source B2). Durée estimée.
- 119: Source / hypothèse : DPGF SPK 3.5.
- 120: Source / hypothèse : DPGF SPK 3.5 (Nourrices).
- 121: Source / hypothèse : DPGF SPK 3.5 (Systèmes d'essai).
- 122: Source / hypothèse : DPGF SPK 3.17 ; CCTP SPK 3.5.4.
- 123: Source / hypothèse : Limites de prestations Travaux local B2 ; DPGF SPK 3.4.1.
- 124: Source / hypothèse : DPGF SPK 3.4.1.
- 125: Source / hypothèse : DPGF SPK 3.4.1.
- 126: Source / hypothèse : DPGF GO 5.8.5 ; Limites de prestations Travaux local GE.
- 128: Source / hypothèse : DPGF GO 5.8.4 (m²) ; Limites de prestations Travaux local sprinkleur source A.
- 129: Source / hypothèse : Limites de prestations 4.
- 130: Source / hypothèse : Limites de prestations 4 ; DPGF SPK 3.4.1 (m²). Durée estimée.
- 131: Source / hypothèse : DPGF SPK 3.4.1 ; CCTP SPK 3.6.1.
- 132: Source / hypothèse : DPGF SPK 3.4.1.
- 133: Source / hypothèse : DPGF SPK 3.4.1.
- 134: Source / hypothèse : DPGF SPK 3.4.1.

| ID | WBS | Task | Duration | Start | Finish | Predecessors | Lot |
| --- | --- | --- | --- | --- | --- | --- | --- |
| 135 | 11 | **11. SOURCES A / B1 / JOCKEY (après remise en service de la source B2)** | 128d | 2026-12-15 | 2027-06-17 |  |  |
| 136 | 11.1 | [SPK] Dépose électropompe source B1 + équipements et canalisations, consignation électricité, câbles neutralisés | 3d | 2026-12-15 | 2026-12-17 | 17, 42 | SPK |
| 137 | 11.2 | [SPK] Mise en place mesures compensatoires + raccordement provisoire pour coupure de la source A | 1d | 2027-06-04 | 2027-06-04 | 170 | SPK |
| 138 | 11.3 | [SPK] Remplacement électropompe source A (inclus nourrice pressostatique sources) | 3d | 2027-06-07 | 2027-06-09 | 137, 31 | SPK |
| 139 | 11.4 | [SPK] Remplacement pompe jockey + alimentation d'aspiration sur eau de ville | 2d | 2027-06-07 | 2027-06-08 | 137, 31 | SPK |
| 140 | 11.5 | [SPK] Reprise tuyauteries aspiration et refoulement source A + vannes reportées en alarme | 3d | 2027-06-10 | 2027-06-14 | 138 | SPK |
| 141 | 11.6 | [SPK] Remplacement armoire pompe jockey & source A + disjoncteur + câbles CR1 en amont coupure générale | 4d | 2027-06-07 | 2027-06-10 | 137, 16 | SPK |
| 142 | 11.7 | [SPK] Réserve 30 m³ : remplissage manuel, plaque descriptive, remplacement contact de niveau + report alarme + test | 2d | 2027-06-07 | 2027-06-08 | 137 | SPK |
| 143 | 11.8 | [SPK] Dépose nourrice pressostatique (anciennes jockey, A, B1) + câbles | 1d | 2027-06-10 | 2027-06-10 | 138, 136 | SPK |
| 144 | 11.9 | [SPK] Nouvelle canne d'essai source A (vannes reportées en alarme) | 2d | 2027-06-15 | 2027-06-16 | 140 | SPK |
| 145 | 11.10 | [SPK] Réglage des seuils de démarrage de chaque source (NF EN 12845) | 1d | 2027-06-10 | 2027-06-10 | 138, 120 | SPK |
| 146 | 11.11 | [SPK] Remise en service source A + levée des mesures compensatoires | 1d | 2027-06-17 | 2027-06-17 | 140, 141, 142, 144, 139, 143, 145 | SPK |
| 147 | 12 | **12. POSTES DE CONTRÔLE (après retour des sources)** | 23d | 2027-06-18 | 2027-07-21 |  |  |
| 148 | 12.1 | [SPK] Entretien triennal poste de contrôle PC1 (démontage, joints, clapet compensateur, essai réel point F) | 2d | 2027-06-18 | 2027-06-21 | 146 | SPK |
| 149 | 12.2 | [SPK] Entretien triennal poste de contrôle PC2 (démontage, joints, clapet compensateur, essai réel point F) | 2d | 2027-06-22 | 2027-06-23 | 148 | SPK |
| 150 | 12.3 | [SPK] Entretien triennal poste de contrôle PC3 (démontage, joints, clapet compensateur, essai réel point F) | 2d | 2027-06-24 | 2027-06-25 | 149 | SPK |
| 151 | 12.4 | [SPK] Entretien triennal poste de contrôle PC4 (démontage, joints, clapet compensateur, essai réel point F) | 2d | 2027-06-28 | 2027-06-29 | 150 | SPK |
| 152 | 12.5 | [SPK] Entretien triennal poste de contrôle PC5 (démontage, joints, clapet compensateur, essai réel point F) | 2d | 2027-06-30 | 2027-07-01 | 151 | SPK |
| 153 | 12.6 | [SPK] Entretien triennal poste de contrôle PC6 (démontage, joints, clapet compensateur, essai réel point F) | 2d | 2027-07-02 | 2027-07-05 | 152 | SPK |
| 154 | 12.7 | [SPK] Entretien triennal poste de contrôle PC7 (démontage, joints, clapet compensateur, essai réel point F) | 2d | 2027-07-06 | 2027-07-07 | 153 | SPK |
| 155 | 12.8 | [SPK] PC6 : dépose du vieux manomètre + remplacement du pressostat | 1d | 2027-07-06 | 2027-07-06 | 153 | SPK |
| 156 | 12.9 | [SPK] Contrôle visuel d'écoulement sur essai des PC + remplacement des gongs hydrauliques par une nourrice commune | 3d | 2027-07-08 | 2027-07-12 | 154 | SPK |
| 157 | 12.10 | [SPK] Bypass sur tous les postes de contrôle (7) avec vannes reportées en alarme | 7d | 2027-07-08 | 2027-07-19 | 154 | SPK |
| 158 | 12.11 | [SPK] Numérotation vannes barrage/test/vidange + schémas à jour sur colonnes montantes | 2d | 2027-07-20 | 2027-07-21 | 157, 156 | SPK |

Notes:
- 136: Source / hypothèse : DPGF SPK 3.5 (Source B1).
- 137: Source / hypothèse : Limites de prestations 2 : coupures de sources ; B2 doit être revenue en service.
- 138: Source / hypothèse : DPGF SPK 3.5 (Source A).
- 139: Source / hypothèse : DPGF SPK 3.5 (Pompe jockey).
- 140: Source / hypothèse : DPGF SPK 3.5.
- 141: Source / hypothèse : DPGF SPK 3.5.
- 142: Source / hypothèse : DPGF SPK 3.5.
- 143: Source / hypothèse : DPGF SPK 3.5 (Nourrices).
- 144: Source / hypothèse : DPGF SPK 3.5 (Systèmes d'essai).
- 145: Source / hypothèse : DPGF SPK 3.5 ; CCTP SPK 3.5.6.
- 146: Source / hypothèse : Limites de prestations 2.
- 148: Source / hypothèse : DPGF SPK 3.6.1. Un seul PC hors service à la fois ; réseau en eau chaque fin de semaine (CCTP 3.1.4). Durée estimée 2 j/PC.
- 149: Source / hypothèse : DPGF SPK 3.6.1. Un seul PC hors service à la fois ; réseau en eau chaque fin de semaine (CCTP 3.1.4). Durée estimée 2 j/PC.
- 150: Source / hypothèse : DPGF SPK 3.6.1. Un seul PC hors service à la fois ; réseau en eau chaque fin de semaine (CCTP 3.1.4). Durée estimée 2 j/PC.
- 151: Source / hypothèse : DPGF SPK 3.6.1. Un seul PC hors service à la fois ; réseau en eau chaque fin de semaine (CCTP 3.1.4). Durée estimée 2 j/PC.
- 152: Source / hypothèse : DPGF SPK 3.6.1. Un seul PC hors service à la fois ; réseau en eau chaque fin de semaine (CCTP 3.1.4). Durée estimée 2 j/PC.
- 153: Source / hypothèse : DPGF SPK 3.6.1. Un seul PC hors service à la fois ; réseau en eau chaque fin de semaine (CCTP 3.1.4). Durée estimée 2 j/PC.
- 154: Source / hypothèse : DPGF SPK 3.6.1. Un seul PC hors service à la fois ; réseau en eau chaque fin de semaine (CCTP 3.1.4). Durée estimée 2 j/PC.
- 155: Source / hypothèse : DPGF SPK 3.6.1.
- 156: Source / hypothèse : DPGF SPK 3.6.1.
- 157: Source / hypothèse : DPGF SPK 3.6.2. ~1 j/PC.
- 158: Source / hypothèse : DPGF SPK 3.6.1 (Remarque Q1) ; CCTP SPK 3.6.1.

| ID | WBS | Task | Duration | Start | Finish | Predecessors | Lot |
| --- | --- | --- | --- | --- | --- | --- | --- |
| 159 | 13 | **13. ÉLECTRICITÉ, ALARMES, MISE À LA TERRE, PEINTURE (SPK)** | 125d | 2026-12-18 | 2027-06-17 |  |  |
| 160 | 13.1 | [SPK] Armoire électrique locale équipements sprinkleurs (asservissement et protection) dans le local source | 4d | 2026-12-18 | 2026-12-23 | 16, 133 | SPK |
| 161 | 13.2 | [SPK] Fourniture, installation et câblage de tous les équipements sprinkleurs du local source | 5d | 2027-03-10 | 2027-03-16 | 160, 122 | SPK |
| 162 | 13.3 | [SPK] Raccordement des alimentations électriques du tableau d'alarme | 2d | 2027-03-17 | 2027-03-18 | 161 | SPK |
| 163 | 13.4 | [SPK] Tresses de mise à la terre des équipements sprinkleurs + nourrice des postes (raccord boucle de terre du radier) | 2d | 2027-06-15 | 2027-06-16 | 77, 91, 140 | SPK |
| 164 | 13.5 | [SPK] Report des alarmes créées (niveau réserve, vannes, températures, intrusion, CPE...) | 3d | 2027-04-15 | 2027-04-19 | 162, 114, 132, 124 | SPK |
| 165 | 13.6 | [SPK] Vérification de toutes les alarmes, existantes et créées | 2d | 2027-04-20 | 2027-04-21 | 164 | SPK |
| 166 | 13.7 | [SPK] Peinture des réseaux apparents (y compris raccords mécaniques) | 3d | 2027-06-15 | 2027-06-17 | 140, 119, 134 | SPK |
| 167 | 14 | **14. ESSAIS, MISE EN SERVICE ET REMISE EN SERVICE B2 (SPK)** | 51d | 2027-05-26 | 2027-08-05 |  |  |
| 168 | 14.1 | [SPK] Épreuves hydrauliques des réseaux (locaux B2, cuve, canne d'essai) | 3d | 2027-05-26 | 2027-05-28 | 119, 95 | SPK |
| 169 | 14.2 | [SPK] Essais source B2 : GMPD (démarrage, débit 360 m³/h, pression), seuils, débitmètre, canne d'essai | 3d | 2027-05-31 | 2027-06-02 | 122, 120, 121, 95, 168 | SPK |
| 170 | 14.3 | [SPK] REMISE EN SERVICE SOURCE B2 + levée des mesures compensatoires (retour à l'état de protection) | 1d | 2027-06-03 | 2027-06-03 | 169, 124, 165 | SPK |
| 171 | 14.4 | [SPK] Identification du matériel et des réseaux (pochoir) | 3d | 2027-06-18 | 2027-06-22 | 166 | SPK |
| 172 | 14.5 | [SPK] Vérifications, tests et contrôles des postes de contrôle, alarmes et points F | 3d | 2027-07-22 | 2027-07-26 | 158, 155, 165 | SPK |
| 173 | 14.6 | [SPK] Vérifications et essais des différentes sources conservées (A, jockey) | 2d | 2027-06-18 | 2027-06-21 | 146 | SPK |
| 174 | 14.7 | [SPK] Pièces de rechange protection automatique incendie | 1d | 2027-06-22 | 2027-06-22 | 173 | SPK |
| 175 | 14.8 | [SPK] Levée des remarques du dernier rapport semestriel Q1 (+ remarques complémentaires) | 3d | 2027-07-27 | 2027-07-29 | 172, 166, 134 | SPK |
| 176 | 14.9 | [SPK] Mise en service, séance de formation et d'instruction exploitant | 2d | 2027-07-27 | 2027-07-28 | 172, 173, 171, 174 | SPK |
| 177 | 14.10 | [SPK] DOE lot sprinklage (plans de récolement, notices, PV d'essais) | 5d | 2027-07-30 | 2027-08-05 | 176, 175 | SPK |
| 178 | 15 | **15. BRISE-VUE : CHARPENTE, BARDAGE BOIS, PORTE (après cuve et réseaux)** | 18d | 2027-05-14 | 2027-06-09 |  |  |
| 179 | 15.1 | [GO/CM] Montage charpente métallique brise-vue (poteaux, pannes, contreventement) + scellement définitif des ancrages | 6d | 2027-05-14 | 2027-05-24 | 90, 91, 34, 102 | GO |
| 180 | 15.2 | [GO/Bardage] Sous-construction du bardage (profils oméga acier galvanisé sur poteaux) | 4d | 2027-05-25 | 2027-05-28 | 179 | GO |
| 181 | 15.3 | [GO/Bardage] Lames de bardage bois douglas à claire-voie (espacement 20 mm), coupes à 45°, saturateur | 8d | 2027-05-31 | 2027-06-09 | 180, 35 | GO |
| 182 | 15.4 | [GO] Pose porte d'accès cuve B2 (ferme-porte, barre anti-panique, serrure compatible site) | 1d | 2027-05-31 | 2027-05-31 | 180, 36 | GO |

Notes:
- 160: Source / hypothèse : DPGF SPK 3.17.
- 161: Source / hypothèse : DPGF SPK 3.17.
- 162: Source / hypothèse : DPGF SPK 3.17.
- 163: Source / hypothèse : Limites de prestations 3.
- 164: Source / hypothèse : DPGF SPK 3.16.
- 165: Source / hypothèse : DPGF SPK 3.16.
- 166: Source / hypothèse : DPGF SPK 3.18.
- 168: Source / hypothèse : DPGF SPK 3.22 ; Limites de prestations 3 (essais hydrauliques = SPK).
- 169: Source / hypothèse : DPGF SPK 3.22.
- 170: Source / hypothèse : Jalon de fin d'indisponibilité de la source B2.
- 171: Source / hypothèse : DPGF SPK 3.22.
- 172: Source / hypothèse : DPGF SPK 3.22.
- 173: Source / hypothèse : DPGF SPK 3.22.
- 174: Source / hypothèse : DPGF SPK 3.22.
- 175: Source / hypothèse : DPGF SPK 3.11. Durée estimée (provision 3 %).
- 176: Source / hypothèse : DPGF SPK 3.22.
- 177: Source / hypothèse : DPGF SPK 3.1.2 ; Limites de prestations 3 (DOE chacun pour son lot).
- 179: Source / hypothèse : DPGF GO 5.7.1 ; Limites de prestations 4. CCTP GO 1 : cuve et réseaux avant brise-vue.
- 180: Source / hypothèse : DPGF GO 5.9.1 (m²). Durée estimée.
- 181: Source / hypothèse : DPGF GO 5.9.2 (m²). Hypothèse ~40 m²/jour.
- 182: Source / hypothèse : DPGF GO 5.9.3.

| ID | WBS | Task | Type | Duration | Start | Finish | Predecessors | Lot |
| --- | --- | --- | --- | --- | --- | --- | --- | --- |
| 183 | 16 | **16. VOIRIES ET ESPACES VERTS - REMISE EN ÉTAT (VRD)** |  | 74d | 2027-03-08 | 2027-06-22 |  |  |
| 184 | 16.1 | [VRD] Remise en place des bordures béton (joints résistants UV et hydrocarbures) |  | 1d | 2027-03-08 | 2027-03-08 | 108, 44 | VRD |
| 185 | 16.2 | [VRD] Réfection voie technique : reprofilage GNT 30 cm, géotextile cl.4, enrobé noir 5 cm au droit des réseaux |  | 4d | 2027-04-16 | 2027-04-21 | 184, 102 | VRD |
| 186 | 16.3 | [VRD] Dépose des pistes d'accès chantier + évacuation + reprofilage |  | 2d | 2027-06-10 | 2027-06-11 | 181, 182, 112, 126 | VRD |
| 187 | 16.4 | [VRD] Mouvements de terres, nivellement espaces verts + apport terre végétale 0,30 m mini |  | 3d | 2027-06-14 | 2027-06-16 | 186 | VRD |
| 188 | 16.5 | [VRD] Préparation avant engazonnement (nettoyage, rotavator 0,20 m, amendements, réglage) |  | 2d | 2027-06-17 | 2027-06-18 | 187 | VRD |
| 189 | 16.6 | [VRD] Engazonnement (semis 3 kg/are, roulage, ratissage) - plantations gazon |  | 2d | 2027-06-21 | 2027-06-22 | 188 | VRD |
| 190 | 16.7 | [VRD] Réfection des cheminements de chantier |  | 2d | 2027-06-14 | 2027-06-15 | 186 | VRD |
| 191 | 16.8 | [VRD] Curage + contrôle caméra des réseaux EU en fin de travaux |  | 1d | 2027-06-14 | 2027-06-14 | 112, 186 | VRD |
| 192 | 17 | **17. FIN DE CHANTIER, DOE, RÉCEPTION PHASE 1** |  | 33d | 2027-06-23 | 2027-08-09 |  |  |
| 193 | 17.1 | [GO] Constat d'huissier contradictoire de fin de travaux |  | 1d | 2027-06-23 | 2027-06-23 | 189, 190, 185, 191 | GO |
| 194 | 17.2 | [GO] DOE lot GO/VRD : récolement ouvrages enterrés, PV essais béton/pieux, fiches techniques |  | 5d | 2027-06-24 | 2027-06-30 | 193, 72 | GO |
| 195 | 17.3 | [SPK] Nettoyage + repli du chantier : base vie, clôture, armoire de chantier, raccordements |  | 3d | 2027-07-29 | 2027-08-02 | 176, 193, 186 | SPK |
| 196 | 17.4 | [MOA/MOE] Opérations préalables à la réception (OPR) Phase 1 |  | 2d | 2027-08-06 | 2027-08-09 | 177, 194, 195 | MOA |
| 197 | 17.5 | FIN PHASE 1 - Réception des travaux | milestone | 0d | 2027-08-09 | 2027-08-09 | 196 | MOA |
| 198 | 18 | **18. PRESTATIONS TRANSVERSES (hamacs - durées calées sur les tâches liées)** |  | 179d | 2026-11-17 | 2027-08-02 |  |  |
| 199 | 18.1 | [GO] Gestion des portails / accès de chantier (ouverture, fermeture, surveillance) |  | 152d | 2026-11-17 | 2027-06-23 | 38SS, 193FF | GO |
| 200 | 18.2 | [GO] Entretien et nettoyage des abords, accès et voies (permanent) |  | 152d | 2026-11-17 | 2027-06-23 | 38SS, 193FF | GO |
| 201 | 18.3 | [GO/VRD] Homme trafic (voie pompier, arrivées/départs camions) - phases démolition à remise en état |  | 101d | 2027-01-19 | 2027-06-11 | 54SS, 186FF | GO |
| 202 | 18.4 | [SPK] Homme trafic - livraisons cuve, GMPD, fonte, levage |  | 16d | 2027-02-11 | 2027-03-04 | 86SS, 118FF | SPK |
| 203 | 18.5 | [SPK] Encadrement de chantier + location nacelle / bungalow / container |  | 179d | 2026-11-17 | 2027-08-02 | 38SS, 195FF | SPK |
| 204 | 18.6 | [GO] Bennes de chantier + évacuation gravats (part du lot) |  | 101d | 2027-01-19 | 2027-06-11 | 54SS, 186FF | GO |

Notes:
- 184: Source / hypothèse : DPGF GO 5.10.3 (ml).
- 185: Source / hypothèse : DPGF GO 5.10.4 (m²) ; Limites de prestations 6.
- 186: Source / hypothèse : CCTP GO 5.3.3.
- 187: Source / hypothèse : Limites de prestations 6.
- 188: Source / hypothèse : DPGF GO 5.10.1.
- 189: Source / hypothèse : DPGF GO 5.10.2 (m²). Contrôle à 1 mois / tonte à 15 j hors planning.
- 190: Source / hypothèse : Limites de prestations 6.
- 191: Source / hypothèse : Limites de prestations 5.
- 193: Source / hypothèse : DPGF GO 5.1.1 ; CCTP GO 5.1.1.
- 194: Source / hypothèse : Limites : DOE chacun pour son lot ; CCTP GO 2.3.7.
- 195: Source / hypothèse : Limites de prestations 1 / 2.
- 196: Source / hypothèse : Durée estimée.
- 199: Source / hypothèse : Limites de prestations 1 : GO phase 1 ; CCTP GO 5.1.3.
- 200: Source / hypothèse : DPGF GO 5.1.11 ; CCTP GO 5.1.11.
- 201: Source / hypothèse : DPGF GO 5.1.12 ; Limites de prestations 2 (chacun pour son lot).
- 202: Source / hypothèse : Limites de prestations 2.
- 203: Source / hypothèse : DPGF SPK Frais de chantier / 3.1.2.
- 204: Source / hypothèse : DPGF GO 5.1.10.
